# Factories Low-process Unit Hafr Al Batin

Schedule from Primavera P6, 2025-11-27 to 2026-12-28, data date 2026-09-15, A marks actual dates.
Must finish by 2026-09-26

## Calendars

- HFR1-05-003-Factories Low-process Unit HAFR AL BATIN: Mon-Thu 07:00-16:59; Fri off; Sat-Sun 07:00-16:59. Exceptions (off unless hours are given): 2026-02-22, 2026-03-18 to 2026-03-19, 2026-03-21, 2026-05-26 to 2026-05-28, 2026-09-23.

## Resources

| Resource | Group | Rate |
| --- | --- | --- |
| Labor | labor |  |
| Skilled Labor | labor |  |
| Eq. Operator | labor |  |
| Carpenter | labor |  |
| Steel Fixer | labor |  |
| Mason | labor |  |
| Electrician | labor |  |
| Plumber | labor |  |
| Pipe-Laying Worker | labor |  |
| Excavator | nonlabor |  |
| Loader | nonlabor |  |
| Bulldozer | nonlabor |  |
| Water Tanker | nonlabor |  |
| Grider | nonlabor |  |
| Truck | nonlabor |  |
| Road Roller | nonlabor |  |
| Asphalt Paver | nonlabor |  |
| Draftsman | labor |  |
| Consultant Staff | labor |  |
| QA/QC Engineer | labor |  |
| Purchaser | labor |  |
| LABOR | labor |  |
| 200 mm Ø | material | 276 |
| Mobilization | labor |  |
| Carpenter | labor |  |
| Provide and cast 150 mm thk concrete floor slab on grade | material | 920 |
| Steel Fixer | labor |  |
| Lean concrete under foundation and grade beams. | material | 46 |
| CONCRETE MIixer | nonlabor |  |
| Metal Works tech | labor |  |
| install steel ladder with safety cage | material | 6480 |
| Size 400mm wide*4000mm long | material | 864 |
| Window W1 (size 1000*1300) | material | 1014 |
| at external walls (200mm thick insulated) | material | 106 |
| at electrical room (200mm thick, 2 hr fire rated) | material | 79 |
| Painter | labor |  |
| Supply and install GRC panels with the mechanical fixations and whatever needed to do a perfect work, as shown in the drawings and specification | material | 420 |
| Supply and install 300*300mm ceramic tiles with approved quality on 30 mm mortar including sand fill material as approved by the Client for toilets | material | 102 |
| Doors installer | labor |  |
| Supply and apply epoxy paint to concrete surface in the factory area as shown in the drawings and specifications | material | 60 |
| install (D6) 3000*3500mm galvanized steel heavy duty industrial isolated type roll up shutter door | material | 15660 |
| Supply and install aluminium cladding where material is approved by the Client, including sub-frames, all accessories and fittings, and whatever needed to do perfect work all as per drawing and specification. | material | 382 |
| Identification sign for toilets & prayer room | material | 780 |
| Supply and install 2 coats of acrylic paint at external walls and parapet including one coat of primer and two coats of putty to give smooth Surface as a base for paint including fiberglass tape to joints and all other accessories as per Modon specificati | material | 36 |
| ALHSA FACTORY | labor |  |
| FINSHING Techtion | labor |  |
| plumber | labor |  |
| Supply, installation , testing & commissioning of condensate drain piping, complete as per drawings, specifications and method of measurement. | material | 180 |
| 160 mm Pipe in trench not exceeding 2.00 m depth to invert | material | 480 |
| Supply, install, test and commission Flexible ducts (Low Pressure), for connection to square exhaust diffuser and as per drawings and specification. | material | 48 |
| electrical tection | labor |  |
| Wall mounted Addressable Fire Alarm Control Panel Complete | material | 53760 |
| Fire Pump system, Local code & UL/FM approved, meeting all NFPA requirements | material | 360000 |
| install fire rated 45 min. (D5) 1000*2200mm single leaf steel door with door construction type C | material | 2520 |
| AC tecntion | labor |  |
| Supply, install, test and commission indoor ductwork as per SMACNA Standards, complete, VD, duct tape, adhesive, duct sealant, hangers, supports and all other accessories, (Flanged TDC Type) and as per drawings and specification. | material | 36 |
| Provide and install grab bars, surface mounted, satin finish stainless steel as per approved sample including accessories to complete as shown in the drawings and specification | material | 120 |
| Tlles Fitter | labor |  |
| Supply and install layer of marble chips on external walls and grooves to conform with specification requirements to complete the works as per drawing. Color and material is subject for Client approval. | material | 48 |
| Supply, install, testing and commission Fire Alarm Check Valve (ACV) assembly with OS&Y gate valve 6" Ø, complete with accessories.as per drawing and specifications | material | 7200 |
| Supply, install, test and commission Gully Traps with heavy duty cover and all other accessories as per drawings and specification. | material | 660 |
| Exhaust fan 2351 CFM ex. Static 32 Pa for Factory area | material | 2400 |
| Flexiable duct | material | 142635 |
| Complete road crossing duct bank for street lighting cables including pipes | material | 264 |
| 63 mm Ø (2 1/2" Ø )Cold water | material | 120 |
| install steel bollards 1135mm height | material | 1020 |
| Wall mounted Duplex Socket | material | 368 |
| Grounding System for each block | material | 37892 |
| LP: Lighting Power Panel | material | 4320 |
| Solar Power Plant | material | 58800 |
| Perforated Cable Tray | material | 144 |
| Outdoor wall mounted LED lighting | material | 518 |
| Indoor Disconnect Switch for Exhaust Fans | material | 582 |
| subgrade | material | 69 |
| To walkway interlocking block pavers, 200*100*60mm | material | 65 |
| Loder | nonlabor |  |
| Truk | nonlabor |  |
| Backfilling | material | 33 |
| Roof Slab | material | 1155 |
| Grade beams | material | 1035 |
| Mason | labor |  |
| at internal walls (100mm thick) | material | 72 |
| Insulation Tection | labor |  |
| Polyisocynurate sandwich panel (100 mm) for external walls and roof and rock wool for internal wall fire rated for 1 Hour | material | 967140 |
| Supplying and fixing 3mm thk extruded aluminum flashing 40mm with sealent and 50*50mm cant strip. | material | 30 |
| install (D1) 1890*2800mm double leaf glass and aluminum door with CNC decorative stainless steel shapes | material | 6384 |
| mason plaster | labor |  |
| Supply and install internal plastering to walls and columns min. 15mm thick with cement mortar of specified grade including galvanized mesh, corner beads, angle beads, CE bonds to rough and smooth plaster complete the work as per drawing & specification. | material | 34 |
| Supply and install 300*300mm glazed ceramic wall tiles on cement mortar and including rough and smooth plaster, galvanized mesh, corner beads, angle beads, CE bonds (For Toilets) | material | 130 |
| Window W1 (size 1800*2800) | material | 4052 |
| Sewage tank with dimensions (8x4x3m) | material | 90000 |
| Complete concrete wall for KWHM for street lighting feeder pillar with foundations as per SEC latest standards & specifications | material | 3000 |
| POCLAIN | nonlabor |  |
| Bob Cat | nonlabor |  |
| Dump Truck 16 m3 | nonlabor |  |
| Dump Truck 26 m3 | nonlabor |  |
| Poclain Excavator | nonlabor |  |
| Bulldozr (D8) | nonlabor |  |
| Payloader | nonlabor |  |
| Excavation | material | 24 |
| Termite Controle tech | labor |  |
| Vibratory Roller | nonlabor |  |
| Gomaco Concrete | nonlabor |  |
| Bitumen Tanker | nonlabor |  |
| Isolated Footings | material | 906 |
| Labour | labor |  |
| Provide and apply 2 coats of bitumen waterproofing paint on concrete surface in contact with soil. | material | 22 |
| Supply and lay 250 micron thk polyethylene sheet under grade slab and footings | material | 5 |
| Supply and apply anti termite under all concrete in touch with earth for all buildings as per manufacture instructions, engineer approval | material | 6 |
| Tank Footing | material | 1080 |
| Tank Walls | material | 1320 |
| Tank Slab | material | 1284 |
| Grader | nonlabor |  |
| execute bituminous base course asphalt layer class (A) in two layers | material | 696 |
| base course layer | material | 75 |
| bituminous wearing course asphalt layer class (A) including tack coat (RC2) | material | 720 |
| Kerb type K1A | material | 58 |
| Retroreflective Thermoplastic White Traffic lines | material | 24000 |
| Traffic signs aluminum sheet, (breakaway) Single post I.P.E. | material |  |
| pipes for all electrical network at site | material | 101 |
| 20 mm Ø ( 3/4" Ø) Cold water | material | 48 |
| 50 mm Ø (2" Ø )Cold water | material | 108 |
| Supply, install, test and commission Floor drain (FD-1) with stainless steel 316 cover as per drawings and specification. | material | 180 |
| equpment | nonlabor |  |
| Complete Street Lighting Manhole with pipes | material | 1966 |
| Complete street lighting poles with LED lighting fixtures | material | 4380 |
| Supply and install carpet rolls to prayer room including all the accessories to complete the work with approved quality by the Client as shown in the drawings and specifications | material | 138 |
| Eng+Pro+Tc | material |  |
| install galvanized steel fence | material | 1620 |
| Demolition of the existing curbstone | material | 36 |
| Supply and install external plastering to external walls min. 15mm thick with cement mortar of specified grade including galvanized mesh, corner beads, angle beads, CE bonds to rough and smooth plaster complete the work as per drawing & specification. | material | 36 |
| Supply and install 2 coats of acrylic paint at internal walls and roof including one coat of primer and two coats of putty to give smooth Surface as a base for paint including fiberglass tape to joints and all other accessories as per Modon specification | material | 30 |
| Supply and install 12.5mm thk, gypsum board suspended ceiling including suspension system, paints as required specification and material as approved by the Client including frames supports, access openings and all other accessories to complete as shown i | material | 114 |
| Supply and install 12.5mm thk, moisture resistant gypsum board suspended ceiling including suspension system, paints as required specification and material as approved by the Client including frames supports, access openings and all other accessories to | material | 120 |
| liquid applied waterproofing membrane | material |  |
| Supply and install polyurethane waterpoof coating to internal surfaces of concrete trench | material | 72 |
| Supply and install 4mm thick APP modified bituminous membrane - single layer | material | 34 |
| Supply and install geotextile sheet | material | 10 |
| Supply and install 50mm thk rigid insulation (extruded polystyrene) | material | 48 |
| Supply and cast in place foam concrete screed 50mm thk minimum laid to fall and cross fall | material |  |
| Supply and install 50mm thk loose gravel toppings | material | 18 |
| Supply and install granite tiles including mortar and sand fill and all the required accessories to complete the works as per drawings and specifications with approved quality by the Client | material | 252 |
| Window W2 (size 1600*1200) | material | 1498 |
| Supply and install phenolic partitions with doors for toilets including accessories, fixations, fittings, and all the required works as shown in the drawings and specification with approved quality by the Client | material | 720 |
| Concrete Pad | material | 936 |
| Swing gate for fence with similar design with opening of 3m. | material | 5892 |
| 100 mm Ø | material | 180 |
| supply and installation of Cold formed steel secondary members | material | 62400 |
| Supply and install 300 micron polyethylene sheet | material | 4 |
| Complete Main Electrical Manhole with pipes | material | 11895 |
| Exhaust fan 425 CFM ex. Static 100 Pascal for toilets | material | 1200 |
| Swing gate for fence with similar deswign with opening of 1.5m. | material | 3246 |
| Complete Branch Electrical Manhole with pipes | material | 3552 |
| Pump room power panel complete with conduits, cables, circuit breakers,pipes, wires and busbars | material | 12000 |
| Motor Circuit Protector for pumps complete with conduits & cables | material | 1920 |
| Indoor Disconnect Switch for Package Units & AC Split Units | material | 582 |
| Skylight fixtures | material | 3600 |
| Grounding for all KWHM's | material | 1800 |
| Bobcat | nonlabor |  |
| Compactor | nonlabor |  |
| Eng+Pro+Tc | material | 7855 |
| PRO-SHORT-ROAD | material | 20149 |
| PRO-SHORT-POTABEL WA | material | 19550 |
| PRO-SHORT-CIVIL | material | 21400 |
| PRO-SHORT-elct & mec | material | 22085 |
| PRO-LONG-ELEC | material | 102807 |
| PRO-LONG-MECH | material | 102220 |
| PRO-LONG-CIVIL | material | 105330 |
| Testing and comissiong | material | 412421 |

## Schedule

| ID | WBS | Activity | Type | Duration | Start | Finish | Predecessors | Complete | Resources | Delay Activties | Old Activity ID-Alhasa | LOCATION |
| --- | --- | --- | --- | --- | --- | --- | --- | --- | --- | --- | --- | --- |
|  | 1 | **Project Milestones** |  |  | 2025-11-27 | 2026-12-28 |  |  |  |  |  |  |
|  | 2 | **Project milestones** |  |  | 2025-11-27 | 2026-12-28 |  |  |  |  |  |  |
| HFR1-05-2980 |  | Project Start | milestone | 0d | 2025-11-27 A | 2025-11-27 A |  | 100% |  | 0 | HAS3-1020 |  |
| HFR1-05-2985 |  | Project Finish | milestone | 0d | 2026-12-28 | 2026-12-28 | HFR1-05-4720 FF |  |  | 74 |  |  |
|  | 1 | **Contratual milestones** |  |  | 2025-12-28 | 2026-12-28 |  |  |  |  |  |  |
| HFR1-05-7890 |  | Baseline Schedule Approval | milestone | 0d | 2025-12-28 A | 2025-12-28 A | HFR1-05-7900 FF | 100% |  | -1 | HAS3-5930 | MLST |
| HFR1-05-8890 |  | Completion Mobilization | milestone | 0d | 2025-12-28 A | 2025-12-28 A | HFR1-05-6060, HFR1-05-6050, HFR1-05-6040, HFR1-05-6030, HFR1-05-7910, HFR1-05-6860, HFR1-05-7890, HFR1-05-3110, HFR1-05-5690, HFR1-05-3010, HFR1-05-6850, HFR1-05-3170, HFR1-05-3210, HFR1-05-2930, HFR1-05-2940, HFR1-05-6070, HFR1-05-7900 | 100% |  | -1 | HAS3-7320 | MLST |
| HFR1-05-2990 |  | Completion of Engneering and Material | milestone | 0d | 2026-09-15 | 2026-09-15 | HFR1-05-8850 FF, HFR1-05-8830 FF, HFR1-05-7530 FF, HFR1-05-8790 FF, HFR1-05-8810 FF, HFR1-05-8820 FF |  |  | 72 | HAS3-10230 | MLST |
| HFR1-05-4380 |  | Procurement Complete | milestone | 0d | 2026-09-15 | 2026-09-15 | HFR1-05-5760 FF |  |  | 42 | HAS3-15000 |  |
| HFR1-05-3390 |  | Main Buildings Structure Completed | milestone | 0d | 2026-09-20 | 2026-09-20 | HFR1-05-1370 FF, HFR1-05-1380 FF, HFR1-05-1390 FF, HFR1-05-1400 FF, HFR1-05-1410 FF, HFR1-05-1420 FF, HFR1-05-2540, HFR1-05-2480, HFR1-05-2460, HFR1-05-2500, HFR1-05-2490, HFR1-05-2450 |  |  | 69 | HAS3-13090 |  |
| HFR1-05-4620 |  | Main Buildings Architectural Completed | milestone | 0d | 2026-10-15 | 2026-10-15 | HFR1-05-2790, HFR1-05-3390, HFR1-05-4380, HFR1-05-2790 FF |  |  | 54 | HAS3-15540 |  |
| HFR1-05-4400 |  | Mosque Works Completed | milestone | 0d | 2026-11-14 | 2026-11-14 | HFR1-05-4360 FF, HFR1-05-9750, HFR1-05-9720, HFR1-05-4020, HFR1-05-3950, HFR1-05-4120, HFR1-05-4130, HFR1-05-3490, HFR1-05-3860, HFR1-05-4230, HFR1-05-4240, HFR1-05-4220, HFR1-05-3870, HFR1-05-3520, HFR1-05-4180, HFR1-05-3970, HFR1-05-4090, HFR1-05-4070, HFR1-05-4000, HFR1-05-4160, HFR1-05-4080, HFR1-05-3640, HFR1-05-3760, HFR1-05-3710, HFR1-05-4010, HFR1-05-3880, HFR1-05-3890, HFR1-05-3720, HFR1-05-3770, HFR1-05-4280, HFR1-05-4350, HFR1-05-4170, HFR1-05-4270, HFR1-05-4300, HFR1-05-4250, HFR1-05-4360, HFR1-05-4290, HFR1-05-4340, HFR1-05-3830, HFR1-05-3930, HFR1-05-2280, HFR1-05-2290, HFR1-05-2320, HFR1-05-2300, HFR1-05-2310, HFR1-05-9610, HFR1-05-9600, HFR1-05-9590, HFR1-05-3390, HFR1-05-4380, HFR1-05-9670 FF, HFR1-05-3370 FF |  |  | 56 | HAS3-15040 |  |
| HFR1-05-4650 |  | Main Buildings MEP Completed | milestone | 0d | 2026-12-02 | 2026-12-02 | HFR1-05-1800 FF, HFR1-05-2910 FF, HFR1-05-2100 FF, HFR1-05-3830, HFR1-05-3930, HFR1-05-3650, HFR1-05-4040, HFR1-05-4050, HFR1-05-4310, HFR1-05-3660, HFR1-05-3730, HFR1-05-3790, HFR1-05-3560, HFR1-05-3780, HFR1-05-3910, HFR1-05-3840, HFR1-05-4030, HFR1-05-3060, HFR1-05-3070, HFR1-05-3450, HFR1-05-3140, HFR1-05-3150, HFR1-05-3320, HFR1-05-3410, HFR1-05-3330, HFR1-05-3510, HFR1-05-3530, HFR1-05-3590, HFR1-05-3600, HFR1-05-3620, HFR1-05-3800, HFR1-05-4150, HFR1-05-3680, HFR1-05-3740, HFR1-05-3420, HFR1-05-3470, HFR1-05-4200, HFR1-05-3390, HFR1-05-4380 |  |  | 74 | HAS3-15640 |  |
| HFR1-05-4590 |  | Site Works & External Networks Completed | milestone | 0d | 2026-12-15 | 2026-12-15 | HFR1-05-4550 FF, HFR1-05-4550 SF, HFR1-05-4480 FF, HFR1-05-3780, HFR1-05-3390, HFR1-05-4480, HFR1-05-4570, HFR1-05-1910, HFR1-05-1900, HFR1-05-4380, HFR1-05-3060, HFR1-05-3070, HFR1-05-3450, HFR1-05-3140, HFR1-05-3150, HFR1-05-3320, HFR1-05-3410, HFR1-05-3330, HFR1-05-3510, HFR1-05-3530, HFR1-05-3590, HFR1-05-3600, HFR1-05-3620, HFR1-05-3800, HFR1-05-4150, HFR1-05-3680, HFR1-05-3740, HFR1-05-3420, HFR1-05-3470, HFR1-05-4200, HFR1-05-3820, HFR1-05-3940, HFR1-05-4110, HFR1-05-4190 |  |  | 62 | HAS3-15410 |  |
| HFR1-05-4660 |  | All Testing & Commissioning Completed | milestone | 0d | 2026-12-28 | 2026-12-28 | HFR1-05-4420 FF, HFR1-05-4430 FF, HFR1-05-4600 FF, HFR1-05-4630 FF, HFR1-05-9600, HFR1-05-4030, HFR1-05-4040, HFR1-05-4310, HFR1-05-4200, HFR1-05-4540, HFR1-05-3740, HFR1-05-4420, HFR1-05-4630, HFR1-05-3390, HFR1-05-4620, HFR1-05-4400 |  |  | 62 | HAS3-15650 |  |
| HFR1-05-4670 |  | Substantial Completion (Ready for Handing Over) | milestone | 0d | 2026-12-28 | 2026-12-28 | HFR1-05-4700 FF, HFR1-05-4690 FF, HFR1-05-4680 FF, HFR1-05-3830, HFR1-05-3930, HFR1-05-4540, HFR1-05-3140, HFR1-05-3150, HFR1-05-3410, HFR1-05-3450, HFR1-05-4150, HFR1-05-3740, HFR1-05-4420, HFR1-05-4630, HFR1-05-2990 |  |  | 70 | HAS3-15660 |  |
| HFR1-05-4720 |  | Completion Milestone | milestone | 0d | 2026-12-28 | 2026-12-28 | HFR1-05-4700 FF, HFR1-05-4690 FF, HFR1-05-4680 FF, HFR1-05-2500, HFR1-05-4540, HFR1-05-3740, HFR1-05-4420, HFR1-05-4630, HFR1-05-4670, HFR1-05-3390, HFR1-05-4590, HFR1-05-4650, HFR1-05-4620, HFR1-05-4660, HFR1-05-4400, HFR1-05-3050, HFR1-05-3270, HFR1-05-4570, HFR1-05-1250, HFR1-05-2990, HFR1-05-8890, HFR1-05-1950, HFR1-05-4700 |  |  | 74 | HAS3-15710 |  |
|  | 6 | **Mobilization** |  |  | 2025-11-27 | 2025-12-28 |  |  |  |  |  |  |
|  | 1 | **Site Facilities & Offices** |  |  | 2025-11-27 | 2025-12-28 |  |  |  |  |  |  |
| HFR1-05-3110 |  | Mobilzation Equpment and Manpower |  | 8d | 2025-11-27 A | 2025-12-06 A | HFR1-05-2980 SS | 100% | Mobilization [200 h] | -1 | HAS3-1070 |  |
| HFR1-05-5690 |  | Installation of Site Offices |  | 8d | 2025-12-07 A | 2025-12-15 A | HFR1-05-3110 | 100% | Mobilization [200 h] | -1 | HAS3-2930 |  |
| HFR1-05-7910 |  | Setup of Stores / Warehouses |  | 12d | 2025-12-15 A | 2025-12-28 A | HFR1-05-6070 | 100% | Mobilization [150 h] | -1 | HAS3-5960 |  |
| HFR1-05-6860 |  | Temporary Power Supply -Water Supply & Piping |  | 8d | 2025-12-16 A | 2025-12-24 A | HFR1-05-5690 | 100% | Mobilization [200 h] | -1 | HAS3-4560 |  |
|  | 2 | **Premilinary Submittals** |  |  | 2025-11-27 | 2025-12-21 |  |  |  |  |  |  |
| HFR1-05-2930 |  | Preparation & Submittal of Quality Control Plan |  | 9d | 2025-11-27 A | 2025-12-07 A | HFR1-05-2980 SS | 100% | Mobilization [150 h] | -1 | HAS3-1000 |  |
| HFR1-05-2940 |  | Preparation & Submittal of Master Layout / Site Layout |  | 9d | 2025-11-27 A | 2025-12-07 A | HFR1-05-2980 SS | 100% | Mobilization [318.15 h] | -1 | HAS3-1010 |  |
| HFR1-05-3010 |  | Preparation & Submittal of Staff Plan |  | 9d | 2025-11-27 A | 2025-12-07 A | HFR1-05-2980 SS | 100% | Mobilization [318.15 h] | -1 | HAS3-1040 |  |
| HFR1-05-3170 |  | Preparation & Submittal of Risk Plan |  | 9d | 2025-11-27 A | 2025-12-07 A | HFR1-05-2980 SS | 100% | Mobilization [318.15 h] | -1 | HAS3-1180 |  |
| HFR1-05-3210 |  | Preparation & Submittal of Project Execution Plan |  | 9d | 2025-11-27 A | 2025-12-07 A | HFR1-05-2980 SS | 100% | Mobilization [318.15 h] | -1 | HAS3-1190 |  |
| HFR1-05-6850 |  | Preparation & Submittal of Baseline Schedule |  | 12d | 2025-12-08 A | 2025-12-21 A | HFR1-05-2930, HFR1-05-2980 SS | 100% | Mobilization [318.15 h] | -1 | HAS3-4540 |  |

| ID | WBS | Activity | Duration | Start | Finish | Predecessors | Complete | Planned start | Planned finish | Resources | Delay Activties | Old Activity ID-Alhasa | Old Activity ID | Mapping Sheet Activity ID | Total Weight % | Weight 1 | USERTEXT |
| --- | --- | --- | --- | --- | --- | --- | --- | --- | --- | --- | --- | --- | --- | --- | --- | --- | --- |
|  | 3 | **Premilinary Approvals** |  | 2025-12-08 | 2025-12-28 |  |  |  |  |  |  |  |  |  |  |  |  |
| HFR1-05-6030 |  | Approval of Risk Plan | 6d | 2025-12-08 A | 2025-12-14 A | HFR1-05-3170 | 100% |  |  | Mobilization [318.15 h] | -1 | HAS3-3400 |  |  |  |  |  |
| HFR1-05-6040 |  | Approval of Project Execution Plan | 6d | 2025-12-08 A | 2025-12-14 A | HFR1-05-3210 | 100% |  |  | Mobilization [318.15 h] | -1 | HAS3-3410 |  |  |  |  |  |
| HFR1-05-6050 |  | Approval of Quality Control Plan | 6d | 2025-12-08 A | 2025-12-14 A | HFR1-05-2930 | 100% |  |  | Mobilization [318.15 h] | -1 | HAS3-3420 |  |  |  |  |  |
| HFR1-05-6060 |  | Approval of Master Layout / Site Layout | 6d | 2025-12-08 A | 2025-12-14 A | HFR1-05-2940 | 100% |  |  | Mobilization [318.15 h] | -1 | HAS3-3430 |  |  |  |  |  |
| HFR1-05-6070 |  | Approval of Staff Plan | 6d | 2025-12-08 A | 2025-12-14 A | HFR1-05-3010 | 100% |  |  | Mobilization [318.15 h] | -1 | HAS3-3440 |  |  |  |  |  |
| HFR1-05-7900 |  | Approval of Baseline schedule | 6d | 2025-12-22 A | 2025-12-28 A | HFR1-05-6850 | 100% |  |  | Mobilization [318.15 h] | -1 | HAS3-5940 |  |  |  |  |  |
|  | 4 | **Engineering** |  | 2025-12-07 | 2026-07-20 |  |  |  |  |  |  |  |  |  |  |  |  |
|  | 2 | **Shop Drawings** |  | 2025-12-07 | 2026-01-31 |  |  |  |  |  |  |  |  |  |  |  |  |
|  | 1 | **Shop Drawings Submittal** |  | 2025-12-07 | 2026-01-18 |  |  |  |  |  |  |  |  |  |  |  |  |
|  | 1 | **Shop Drawings Submittal for Road Works** |  | 2025-12-07 | 2025-12-17 |  |  |  |  |  |  |  |  |  |  |  |  |
| HFR1-05-3220 |  | Shop DWG Submittal for Topographic Survey | 10d | 2025-12-07 A | 2025-12-17 A | HFR1-05-3110, HFR1-05-2980 SS | 100% |  |  | Draftsman [20 h] | -1 | HAS3-1200 | CON-LEG101-EN-1300 | D1000 | 0 | 0 | MKH2-02-002-EN-1000 |
| HFR1-05-6080 |  | Shop DWG Submittal for Road Layout Plan | 10d | 2025-12-07 A | 2025-12-17 A | HFR1-05-2980 SS, HFR1-05-3110 | 100% | 2026-03-17 | 2026-03-31 | Draftsman [20 h] | -1 | HAS3-3470 | CON-LEG101-EN-1310 | D1010 | 0 | 0 | MKH2-02-002-EN-1010 |
| HFR1-05-6090 |  | Shop DWG Submittal for Typical Cross Section | 10d | 2025-12-07 A | 2025-12-17 A | HFR1-05-2980 SS, HFR1-05-3110 | 100% | 2026-03-17 | 2026-03-31 | Draftsman [20 h] | -1 | HAS3-3480 | CON-LEG101-EN-1320 | D1020 | 0 | 0 | MKH2-02-002-EN-1020 |
| HFR1-05-6100 |  | Shop DWG Submittal for Road Setting Out | 10d | 2025-12-07 A | 2025-12-17 A | HFR1-05-2980 SS, HFR1-05-3110 | 100% | 2026-03-17 | 2026-03-31 | Draftsman [20 h] | -1 | HAS3-3490 | CON-LEG101-EN-1330 | D1030 | 0 | 0 | MKH2-02-002-EN-1030 |
| HFR1-05-6110 |  | Shop DWG Submittal for Road Profiles | 10d | 2025-12-07 A | 2025-12-17 A | HFR1-05-2980 SS, HFR1-05-3110 | 100% | 2026-03-17 | 2026-03-31 | Draftsman [20 h] | -1 | HAS3-3500 | CON-LEG101-EN-1340 | D1040 | 0 | 0 | MKH2-02-002-EN-1040 |
| HFR1-05-6120 |  | Shop DWG Submittal for Grading Layout Plan | 10d | 2025-12-07 A | 2025-12-17 A | HFR1-05-2980 SS, HFR1-05-3110 | 100% | 2026-03-17 | 2026-03-31 | Draftsman [20 h] | -1 | HAS3-3510 | CON-LEG101-EN-1350 | D1050 | 0 | 0 | MKH2-02-002-EN-1050 |
| HFR1-05-6130 |  | Shop DWG Submittal for Curb Setting Out Points | 10d | 2025-12-07 A | 2025-12-17 A | HFR1-05-2980 SS, HFR1-05-3110 | 100% | 2026-03-17 | 2026-03-31 | Draftsman [20 h] | -1 | HAS3-3520 | CON-LEG101-EN-1360 | D1060 | 0 | 0 | MKH2-02-002-EN-1060 |
| HFR1-05-6140 |  | Shop DWG Submittal for Signing & Marking Layout Plan | 10d | 2025-12-07 A | 2025-12-17 A | HFR1-05-2980 SS, HFR1-05-3110 | 100% | 2026-03-17 | 2026-03-31 | Draftsman [20 h] | -1 | HAS3-3530 | CON-LEG101-EN-1370 | D1070 | 0 | 0 | MKH2-02-002-EN-1070 |
| HFR1-05-6150 |  | Shop DWG Submittal for Standards Details | 10d | 2025-12-07 A | 2025-12-17 A | HFR1-05-2980 SS, HFR1-05-3110 | 100% | 2026-03-17 | 2026-03-31 | Draftsman [20 h] | -1 | HAS3-3540 | CON-LEG101-EN-1380 | D1080 | 0 | 0 | MKH2-02-002-EN-1080 |
|  | 3 | **Shop Drawings Submittal for Potable Water Network** |  | 2025-12-10 | 2025-12-18 |  |  |  |  |  |  |  |  |  |  |  |  |
| HFR1-05-6210 |  | Shop DWG Submittal for Potable Water Plans | 10d | 2025-12-10 A | 2025-12-18 A | HFR1-05-3110 | 100% | 2026-03-17 | 2026-03-31 | Draftsman [40 h] | 0 | HAS3-3600 | CON-LEG101-EN-1390 | D1090 | 0 | 0 | MKH2-02-002-EN-1090 |
| HFR1-05-7830 |  | Shop DWG Submittal for Potable Water Profiles | 10d | 2025-12-10 A | 2025-12-18 A | HFR1-05-3110 | 100% | 2026-03-17 | 2026-03-31 | Draftsman [40 h] | 0 | HAS3-5850 | CON-LEG101-EN-1400 | D1100 | 0 | 0 | MKH2-02-002-EN-1100 |
| HFR1-05-7840 |  | Shop DWG Submittal for Potable Water Standard Details | 10d | 2025-12-10 A | 2025-12-18 A | HFR1-05-3110 | 100% | 2026-03-17 | 2026-03-31 | Draftsman [40 h] | 0 | HAS3-5860 | CON-LEG101-EN-1410 | D1110 | 0 | 0 | MKH2-02-002-EN-1110 |

| ID | WBS | Activity | Duration | Start | Finish | Predecessors | Complete | Planned start | Planned finish | Resources | Delay Activties | Old Activity ID-Alhasa | Old Activity ID | Mapping Sheet Activity ID | Total Weight % | Weight 1 | USERTEXT | Responsibilities | EV | Cost Varince( User Field) | Cost Varince( User Field) % |
| --- | --- | --- | --- | --- | --- | --- | --- | --- | --- | --- | --- | --- | --- | --- | --- | --- | --- | --- | --- | --- | --- |
|  | 7 | **Shop Drawings Submittal for Sewer Water Network** |  | 2025-12-09 | 2025-12-18 |  |  |  |  |  |  |  |  |  |  |  |  |  |  |  |  |
| HFR1-05-6220 |  | Shop DWG Submittal for Sewer Network Plans | 10d | 2025-12-09 A | 2025-12-18 A | HFR1-05-3110 | 100% | 2026-03-17 | 2026-03-31 | Draftsman [40 h] | 0 | HAS3-3610 | CON-LEG101-EN-1390 | D1090 | 0 | 0 | MKH2-02-002-EN-1090 |  |  |  |  |
| HFR1-05-7850 |  | Shop DWG Submittal for Sewer Network Profiles | 10d | 2025-12-09 A | 2025-12-18 A | HFR1-05-3110 | 100% | 2026-03-17 | 2026-03-31 | Draftsman [40 h] | 0 | HAS3-5870 | CON-LEG101-EN-1400 | D1100 | 0 | 0 | MKH2-02-002-EN-1100 |  |  |  |  |
| HFR1-05-7860 |  | Shop DWG Submittal for Sewer Network Standard Details | 10d | 2025-12-09 A | 2025-12-18 A | HFR1-05-3110 | 100% | 2026-03-17 | 2026-03-31 | Draftsman [40 h] | 0 | HAS3-5880 | CON-LEG101-EN-1410 | D1110 | 0 | 0 | MKH2-02-002-EN-1110 |  |  |  |  |
|  | 10 | **Shop Drawings Submittal for Earthing System** |  | 2025-12-07 | 2025-12-17 |  |  |  |  |  |  |  |  |  |  |  |  |  |  |  |  |
| HFR1-05-7620 |  | Shop DWG Submittal for Earthing System | 10d | 2025-12-07 A | 2025-12-17 A | HFR1-05-3110 | 100% | 2026-03-17 | 2026-03-31 | Draftsman [40 h] | -1 | HAS3-5640 | CON-LEG101-EN-3210 | D3960 | 0 | 0 | MKH2-02-002-EN-1320 |  |  |  |  |
|  | 11 | **Shop Drawings Submittal for Road Lighting** |  | 2025-12-08 | 2025-12-18 |  |  |  |  |  |  |  |  |  |  |  |  |  |  |  |  |
| HFR1-05-7630 |  | Shop DWG Submittal for Street Lighting General Arrangement | 10d | 2025-12-08 A | 2025-12-18 A | HFR1-05-3110 | 100% | 2026-03-17 | 2026-03-31 | Draftsman [40 h] | 0 | HAS3-5650 | CON-LEG101-EN-1260 | C03-E-SL-1560 |  |  |  | EN | 17102.23 | 0 | 0 |
| HFR1-05-7640 |  | Shop DWG Submittal for Street Lighting Network Layout | 10d | 2025-12-08 A | 2025-12-18 A | HFR1-05-3110 | 100% | 2026-03-17 | 2026-03-31 | Draftsman [40 h] | 0 | HAS3-5660 | CON-LEG101-EN-1270 | C03-E-SL-1570 |  |  |  | EN | 17102.23 | 0 | 0 |
| HFR1-05-7650 |  | Shop DWG Submittal for Street Lighting Details | 10d | 2025-12-08 A | 2025-12-18 A | HFR1-05-3110 | 100% | 2026-03-17 | 2026-03-31 | Draftsman [40 h] | 0 | HAS3-5670 | CON-LEG101-EN-1280 | C03-E-SL-1580 |  |  |  | EN | 17102.23 | 0 | 0 |
| HFR1-05-7660 |  | Shop DWG Submittal for Street Lighting Single Line Diagram | 10d | 2025-12-08 A | 2025-12-18 A | HFR1-05-3110 | 100% | 2026-03-17 | 2026-03-31 | Draftsman [40 h] | 0 | HAS3-5680 | CON-LEG101-EN-1290 | C03-E-SL-1590 |  |  |  | EN | 17102.23 | 0 | 0 |
|  | 12 | **Shop Drawings Submittal for Hungers** |  | 2025-12-21 | 2026-01-03 |  |  |  |  |  |  |  |  |  |  |  |  |  |  |  |  |
| HFR1-05-7790 |  | Shop DWG Submittal for the Hungers - Civil Works | 10d | 2025-12-21 A | 2025-12-29 A | HFR1-05-3110 | 100% | 2026-03-17 | 2026-03-31 | Draftsman [30 h] | 11 | HAS3-5810 | CON-LEG101-EN-1540 | D1270 | 0 | 0 | MKH2-02-002-EN-1320 |  |  |  |  |
| HFR1-05-7800 |  | Shop DWG Submittal for the Hungers - Mechanical Works | 10d | 2025-12-27 A | 2026-01-03 A | HFR1-05-3110 | 100% | 2026-03-17 | 2026-03-31 | Draftsman [30 h] | 16 | HAS3-5820 | CON-LEG101-EN-1550 | D1290 | 0 | 0 | MKH2-02-002-EN-1340 |  |  |  |  |
| HFR1-05-7810 |  | Shop DWG Submittal for the Hungers - Finishing Works | 10d | 2025-12-27 A | 2026-01-03 A | HFR1-05-3110 | 100% | 2026-03-17 | 2026-03-31 | Draftsman [30 h] | 16 | HAS3-5830 | CON-LEG101-EN-1560 | D1300 | 0 | 0 | MKH2-02-002-EN-1350 |  |  |  |  |
| HFR1-05-7820 |  | Shop DWG Submittal for the Hungers - Electrical Works | 10d | 2025-12-27 A | 2026-01-03 A | HFR1-05-3110 | 100% | 2026-03-17 | 2026-03-31 | Draftsman [30 h] | 16 | HAS3-5840 |  |  |  |  |  |  |  |  |  |
|  | 9 | **Shop Drawings Submittal for Prayer Room** |  | 2026-01-11 | 2026-01-18 |  |  |  |  |  |  |  |  |  |  |  |  |  |  |  |  |
| HFR1-05-7750 |  | Shop DWG Submittal for the Prayer Room - Civil Works | 10d | 2026-01-11 A | 2026-01-15 A | HFR1-05-3110 | 100% | 2025-12-07 | 2025-12-17 | Draftsman [40 h] | 30 | HAS3-5770 | CON-LEG101-EN-1540 | D1270 | 0 | 0 | MKH2-02-002-EN-1320 |  |  |  |  |
| HFR1-05-7760 |  | Shop DWG Submittal for the Prayer Room - Mechanical Works | 10d | 2026-01-13 A | 2026-01-18 A | HFR1-05-3110 | 100% | 2026-03-17 | 2026-03-31 | Draftsman [40 h] | 32 | HAS3-5780 | CON-LEG101-EN-1550 | D1290 | 0 | 0 | MKH2-02-002-EN-1340 |  |  |  |  |
| HFR1-05-7770 |  | Shop DWG Submittal for the Prayer Room - Finishing Works | 10d | 2026-01-13 A | 2026-01-18 A | HFR1-05-3110 | 100% | 2026-03-17 | 2026-03-31 | Draftsman [40 h] | 32 | HAS3-5790 | CON-LEG101-EN-1560 | D1300 | 0 | 0 | MKH2-02-002-EN-1350 |  |  |  |  |
| HFR1-05-7780 |  | Shop DWG Submittal for the Prayer Room - Electrical Works | 10d | 2026-01-13 A | 2026-01-18 A | HFR1-05-3110 | 100% | 2026-03-17 | 2026-03-31 | Draftsman [40 h] | 32 | HAS3-5800 |  |  |  |  |  |  |  |  |  |
|  | 6 | **Shop Drawings Submittal for Septic Tank** |  | 2026-01-01 | 2026-01-11 |  |  |  |  |  |  |  |  |  |  |  |  |  |  |  |  |
| HFR1-05-7710 |  | Shop DWG Submittal for the Septic Tank - Civil Works | 10d | 2026-01-01 A | 2026-01-06 A | HFR1-05-3110 | 100% | 2026-03-17 | 2026-03-31 | Draftsman [40 h] | 20 | HAS3-5730 | CON-LEG101-EN-1540 | D1270 | 0 | 0 | MKH2-02-002-EN-1320 |  |  |  |  |
| HFR1-05-7720 |  | Shop DWG Submittal for the Septic Tank - Mechanical Works | 10d | 2026-01-07 A | 2026-01-10 A | HFR1-05-3110 | 100% | 2026-03-17 | 2026-03-31 | Draftsman [40 h] | 24 | HAS3-5740 | CON-LEG101-EN-1550 | D1290 | 0 | 0 | MKH2-02-002-EN-1340 |  |  |  |  |
| HFR1-05-7740 |  | Shop DWG Submittal for the Septic Tank - Electrical Works | 10d | 2026-01-07 A | 2026-01-10 A | HFR1-05-3110 | 100% | 2026-03-17 | 2026-03-31 | Draftsman [40 h] | 24 | HAS3-5760 |  |  |  |  |  |  |  |  |  |
| HFR1-05-7730 |  | Shop DWG Submittal for the Septic Tank - Finishing Works | 10d | 2026-01-08 A | 2026-01-11 A | HFR1-05-3110 | 100% | 2026-03-17 | 2026-03-31 | Draftsman [40 h] | 25 | HAS3-5750 | CON-LEG101-EN-1560 | D1300 | 0 | 0 | MKH2-02-002-EN-1350 |  |  |  |  |

| ID | WBS | Activity | Duration | Start | Finish | Predecessors | Complete | Planned start | Planned finish | Resources | Delay Activties | Weight 1 | USERTEXT | Mapping Sheet Activity ID | Total Weight % | Old Activity ID | Old Activity ID-Alhasa |
| --- | --- | --- | --- | --- | --- | --- | --- | --- | --- | --- | --- | --- | --- | --- | --- | --- | --- |
|  | 5 | **Shop Drawings Submittal for GRB Tank** |  | 2026-01-01 | 2026-01-11 |  |  |  |  |  |  |  |  |  |  |  |  |
| HFR1-05-7670 |  | Shop DWG Submittal for the GRB - Civil Works | 10d | 2026-01-01 A | 2026-01-06 A | HFR1-05-3110 | 100% | 2026-03-17 | 2026-03-31 | Draftsman [40 h] | 20 | 0 | MKH2-02-002-EN-1320 | D1270 | 0 | CON-LEG101-EN-1540 | HAS3-5690 |
| HFR1-05-7680 |  | Shop DWG Submittal for the GRB - Mechanical Works | 10d | 2026-01-07 A | 2026-01-10 A | HFR1-05-3110 | 100% | 2026-03-17 | 2026-03-31 | Draftsman [40 h] | 24 | 0 | MKH2-02-002-EN-1340 | D1290 | 0 | CON-LEG101-EN-1550 | HAS3-5700 |
| HFR1-05-7700 |  | Shop DWG Submittal for the GRB - Electrical Works | 10d | 2026-01-07 A | 2026-01-10 A | HFR1-05-3110 | 100% | 2026-03-17 | 2026-03-31 | Draftsman [40 h] | 24 |  |  |  |  |  | HAS3-5720 |
| HFR1-05-7690 |  | Shop DWG Submittal for the GRB - Finishing Works | 10d | 2026-01-08 A | 2026-01-11 A | HFR1-05-3110 | 100% | 2026-03-17 | 2026-03-31 | Draftsman [40 h] | 25 | 0 | MKH2-02-002-EN-1350 | D1300 | 0 | CON-LEG101-EN-1560 | HAS3-5710 |
|  | 4 | **Shop Drawings Submittal for Pump Room** |  | 2026-01-03 | 2026-01-11 |  |  |  |  |  |  |  |  |  |  |  |  |
| HFR1-05-8580 |  | Shop DWG Submittal for the Pump - Civil Works | 8d | 2026-01-03 A | 2026-01-07 A | HFR1-05-3110 | 100% | 2025-12-07 | 2025-12-15 | Draftsman [40 h] | 24 | 0 | MKH2-02-002-EN-1320 | D1270 | 0 | CON-LEG101-EN-1540 | HAS3-6900 |
| HFR1-05-8590 |  | Shop DWG Submittal for the Pump - Mechanical Works | 8d | 2026-01-07 A | 2026-01-10 A | HFR1-05-3110 | 100% | 2026-03-17 | 2026-03-29 | Draftsman [40 h] | 26 | 0 | MKH2-02-002-EN-1340 | D1290 | 0 | CON-LEG101-EN-1550 | HAS3-6910 |
| HFR1-05-8610 |  | Shop DWG Submittal for the Pump - Electrical Works | 8d | 2026-01-07 A | 2026-01-10 A | HFR1-05-3110 | 100% | 2026-03-17 | 2026-03-29 | Draftsman [40 h] | 26 |  |  |  |  |  | HAS3-6930 |
| HFR1-05-8600 |  | Shop DWG Submittal for the Pump - Finishing Works | 8d | 2026-01-08 A | 2026-01-11 A | HFR1-05-3110 | 100% | 2026-03-17 | 2026-03-29 | Draftsman [40 h] | 28 | 0 | MKH2-02-002-EN-1350 | D1300 | 0 | CON-LEG101-EN-1560 | HAS3-6920 |
|  | 2 | **Shop Drawings Approval** |  | 2025-12-18 | 2026-01-31 |  |  |  |  |  |  |  |  |  |  |  |  |
|  | 1 | **Shop Drawings Approval for Road Works** |  | 2025-12-18 | 2026-01-03 |  |  |  |  |  |  |  |  |  |  |  |  |
| HFR1-05-6160 |  | Shop DWG Approval for Topographic Survey | 10d | 2025-12-18 A | 2025-12-29 A | HFR1-05-3220 | 100% |  |  | Consultant Staff [10.5 h] | -1 | 0.00114229524671769 | MKH2-02-002-EN-1370 | D1320 | 0.114229524671769 | CON-LEG101-EN-1570 | HAS3-3550 |
| HFR1-05-7540 |  | Shop DWG Approval for Road Layout Plan | 7d | 2025-12-20 A | 2025-12-27 A | HFR1-05-6080 | 100% | 2026-04-01 | 2026-04-08 | Consultant Staff [10.5 h] | 0 | 0.00114229524671769 | MKH2-02-002-EN-1380 | D1330 | 0.114229524671769 | CON-LEG101-EN-1580 | HAS3-5560 |
| HFR1-05-7550 |  | Shop DWG Approval for Typical Cross Section | 7d | 2025-12-20 A | 2025-12-27 A | HFR1-05-6090 | 100% | 2026-04-01 | 2026-04-08 | Consultant Staff [10.5 h] | 0 | 0.00114229524671769 | MKH2-02-002-EN-1390 | D1340 | 0.114229524671769 | CON-LEG101-EN-1590 | HAS3-5570 |
| HFR1-05-7560 |  | Shop DWG Approval for Road Setting Out | 7d | 2025-12-20 A | 2025-12-27 A | HFR1-05-6100 | 100% | 2026-04-01 | 2026-04-08 | Consultant Staff [10.5 h] | 0 | 0.00114229524671769 | MKH2-02-002-EN-1400 | D1350 | 0.114229524671769 | CON-LEG101-EN-1600 | HAS3-5580 |
| HFR1-05-7570 |  | Shop DWG Approval for Road Profiles | 7d | 2025-12-20 A | 2025-12-27 A | HFR1-05-6110 | 100% | 2026-04-01 | 2026-04-08 | Consultant Staff [10.5 h] | 0 | 0.00114229524671769 | MKH2-02-002-EN-1410 | D1360 | 0.114229524671769 | CON-LEG101-EN-1610 | HAS3-5590 |
| HFR1-05-7580 |  | Shop DWG Approval for Grading Layout Plan | 7d | 2025-12-20 A | 2025-12-27 A | HFR1-05-6120 | 100% | 2026-04-01 | 2026-04-08 | Consultant Staff [10.5 h] | 0 | 0.00114229524671769 | MKH2-02-002-EN-1420 | D1370 | 0.114229524671769 | CON-LEG101-EN-1620 | HAS3-5600 |
| HFR1-05-7590 |  | Shop DWG Approval for Curb Setting Out Points | 7d | 2025-12-28 A | 2026-01-03 A | HFR1-05-6130 | 100% | 2026-04-01 | 2026-04-08 | Consultant Staff [8 h] | 8 | 0.00114229524671769 | MKH2-02-002-EN-1430 | D1380 | 0.114229524671769 | CON-LEG101-EN-1630 | HAS3-5610 |
| HFR1-05-7600 |  | Shop DWG Approval for Signing & Marking Layout Plan | 7d | 2025-12-28 A | 2026-01-03 A | HFR1-05-6140 | 100% | 2026-04-01 | 2026-04-08 | Consultant Staff [10.5 h] | 8 | 0.00114229524671769 | MKH2-02-002-EN-1440 | D1390 | 0.114229524671769 | CON-LEG101-EN-1640 | HAS3-5620 |
| HFR1-05-7610 |  | Shop DWG Approval for Standards Details | 7d | 2025-12-28 A | 2026-01-03 A | HFR1-05-6150 | 100% | 2026-04-01 | 2026-04-08 | Consultant Staff [10.5 h] | 8 | 0.00114229524671769 | MKH2-02-002-EN-1450 | D1400 | 0.114229524671769 | CON-LEG101-EN-1650 | HAS3-5630 |
|  | 9 | **Shop Drawings Submittal for Potable Water Network** |  | 2025-12-28 | 2026-01-25 |  |  |  |  |  |  |  |  |  |  |  |  |
| HFR1-05-7870 |  | Shop DWG Approval for Potable Water Plans | 10d | 2025-12-28 A | 2026-01-04 A | HFR1-05-6210 | 100% | 2026-04-01 | 2026-04-12 | Draftsman [40 h] | 5 | 0 | MKH2-02-002-EN-1090 | D1090 | 0 | CON-LEG101-EN-1390 | HAS3-5890 |
| HFR1-05-8820 |  | Shop DWG Approval for Potable Water Profiles | 10d | 2025-12-29 A | 2026-01-05 A | HFR1-05-7830 | 100% | 2026-04-01 | 2026-04-12 | Draftsman [40 h] | 6 | 0 | MKH2-02-002-EN-1100 | D1100 | 0 | CON-LEG101-EN-1400 | HAS3-7140 |
| HFR1-05-8830 |  | Shop DWG Approval for Potable Water Standard Details | 10d | 2025-12-29 A | 2026-01-25 A | HFR1-05-7840 | 100% | 2026-04-01 | 2026-04-12 | Draftsman [40 h] | 28 | 0 | MKH2-02-002-EN-1110 | D1110 | 0 | CON-LEG101-EN-1410 | HAS3-7150 |

| ID | WBS | Activity | Duration | Start | Finish | Predecessors | Complete | Planned start | Planned finish | Resources | Delay Activties | USERTEXT | Weight 1 | Total Weight % | Mapping Sheet Activity ID | Old Activity ID | Old Activity ID-Alhasa |
| --- | --- | --- | --- | --- | --- | --- | --- | --- | --- | --- | --- | --- | --- | --- | --- | --- | --- |
|  | 12 | **Shop Drawings Submittal for Sewer Water Network** |  | 2025-12-28 | 2026-01-04 |  |  |  |  |  |  |  |  |  |  |  |  |
| HFR1-05-7880 |  | Shop DWG Approval for Sewer Network Plans | 10d | 2025-12-28 A | 2026-01-03 A | HFR1-05-6220 | 100% | 2026-04-01 | 2026-04-12 | Draftsman [40 h] | 4 | MKH2-02-002-EN-1090 | 0 | 0 | D1090 | CON-LEG101-EN-1390 | HAS3-5900 |
| HFR1-05-8840 |  | Shop DWG Approval for Sewer Network Profiles | 10d | 2025-12-28 A | 2026-01-03 A | HFR1-05-7850 | 100% | 2026-04-01 | 2026-04-12 | Draftsman [40 h] | 4 | MKH2-02-002-EN-1100 | 0 | 0 | D1100 | CON-LEG101-EN-1400 | HAS3-7160 |
| HFR1-05-8850 |  | Shop DWG Approval for Sewer Network Standard Details | 10d | 2025-12-28 A | 2026-01-04 A | HFR1-05-7860 | 100% | 2026-04-01 | 2026-04-12 | Draftsman [40 h] | 5 | MKH2-02-002-EN-1110 | 0 | 0 | D1110 | CON-LEG101-EN-1410 | HAS3-7170 |
|  | 10 | **Shop Drawings Approval for Earthing System** |  | 2025-12-29 | 2026-01-05 |  |  |  |  |  |  |  |  |  |  |  |  |
| HFR1-05-8490 |  | Shop DWG Approval for Earthing System By SEC | 7d | 2025-12-29 A | 2026-01-05 A | HFR1-05-7620 | 100% | 2026-04-01 | 2026-04-08 | Consultant Staff [10.5 h] | 10 | MKH2-02-002-EN-1460 | 0.00147340149191714 | 0.147340149191714 | D4180 | CON-LEG101-EN-3300 | HAS3-6810 |
|  | 11 | **Shop Drawings Approval for Road Lighting** |  | 2025-12-27 | 2026-01-04 |  |  |  |  |  |  |  |  |  |  |  |  |
| HFR1-05-8500 |  | Shop DWG Approval for Street Lighting General Arrangement By SEC | 7d | 2025-12-27 A | 2026-01-03 A | HFR1-05-7630 | 100% | 2026-04-01 | 2026-04-08 | Consultant Staff [10.5 h] | 8 | MKH2-02-002-EN-1460 | 0.00147340149191714 | 0.147340149191714 | D4210 | CON-LEG101-EN-3310 | HAS3-6820 |
| HFR1-05-8510 |  | Shop DWG Approval for Street Lighting Network Layout By SEC | 7d | 2025-12-27 A | 2026-01-03 A | HFR1-05-7640 | 100% | 2026-04-01 | 2026-04-08 | Consultant Staff [10.5 h] | 8 | MKH2-02-002-EN-1470 | 0.00147340149191714 | 0.147340149191714 | D4220 | CON-LEG101-EN-3320 | HAS3-6830 |
| HFR1-05-8520 |  | Shop DWG Approval for Street Lighting Details By SEC | 7d | 2025-12-28 A | 2026-01-04 A | HFR1-05-7650 | 100% | 2026-04-01 | 2026-04-08 | Consultant Staff [10.5 h] | 9 | MKH2-02-002-EN-1480 | 0.0014734013779999 | 0.14734013779999 | D4230 | CON-LEG101-EN-3330 | HAS3-6840 |
| HFR1-05-8530 |  | Shop DWG Approval for Street Lighting Single Line Diagram By SEC | 7d | 2025-12-28 A | 2026-01-04 A | HFR1-05-7660 | 100% | 2026-04-01 | 2026-04-08 | Consultant Staff [10.5 h] | 9 | MKH2-02-002-EN-1480 | 0.0014734013779999 | 0.14734013779999 | D4390 | CON-LEG101-EN-3360 | HAS3-6850 |
|  | 6 | **Shop Drawings Approval for Hungers** |  | 2026-01-01 | 2026-01-08 |  |  |  |  |  |  |  |  |  |  |  |  |
| HFR1-05-8700 |  | Shop DWG Approval for the Hungers - Civil Works | 7d | 2026-01-01 A | 2026-01-05 A | HFR1-05-7790 | 100% | 2026-04-01 | 2026-04-08 | Consultant Staff [5.25 h] | 10 | MKH2-02-002-EN-1320 | 0 | 0 | D4440 | CON-LEG101-EN-3410 | HAS3-7020 |
| HFR1-05-8710 |  | Shop DWG Approval for the Hungers - Mechanical Works | 7d | 2026-01-04 A | 2026-01-08 A | HFR1-05-7800 | 100% | 2026-04-01 | 2026-04-08 | Consultant Staff [5.25 h] | 14 | MKH2-02-002-EN-1340 | 0 | 0 | D4450 | CON-LEG101-EN-3420 | HAS3-7030 |
| HFR1-05-8720 |  | Shop DWG Approval for the Hungers - Finishing Works | 7d | 2026-01-04 A | 2026-01-08 A | HFR1-05-7810 | 100% | 2026-04-01 | 2026-04-08 | Consultant Staff [5.25 h] | 14 | MKH2-02-002-EN-1350 | 0 | 0 | D4460 | CON-LEG101-EN-3430 | HAS3-7040 |
| HFR1-05-8730 |  | Shop DWG Approval for the Hungers - Electrical Works | 7d | 2026-01-04 A | 2026-01-08 A | HFR1-05-7820 | 100% | 2026-04-01 | 2026-04-08 | Consultant Staff [40 h] | 14 |  |  |  |  |  | HAS3-7050 |
|  | 5 | **Shop Drawings Approval for Prayer Room** |  | 2026-01-22 | 2026-01-29 |  |  |  |  |  |  |  |  |  |  |  |  |
| HFR1-05-8670 |  | Shop DWG Approval for the Prayer Room - Mechanical Works | 7d | 2026-01-22 A | 2026-01-28 A | HFR1-05-7760 | 100% | 2026-04-01 | 2026-04-08 | Consultant Staff [5.25 h] | 35 | MKH2-02-002-EN-1340 | 0 | 0 | D4450 | CON-LEG101-EN-3420 | HAS3-6990 |
| HFR1-05-8680 |  | Shop DWG Approval for the Prayer Room - Finishing Works | 7d | 2026-01-22 A | 2026-01-29 A | HFR1-05-7770 | 100% | 2026-04-01 | 2026-04-08 | Consultant Staff [5.25 h] | 36 | MKH2-02-002-EN-1350 | 0 | 0 | D4460 | CON-LEG101-EN-3430 | HAS3-7000 |
| HFR1-05-8690 |  | Shop DWG Approval for the Prayer Room - Electrical Works | 7d | 2026-01-22 A | 2026-01-28 A | HFR1-05-7780 | 100% | 2026-04-01 | 2026-04-08 | Consultant Staff [40 h] | 35 |  |  |  |  |  | HAS3-7010 |
| HFR1-05-8660 |  | Shop DWG Approval for the Prayer Room - Civil Works | 7d | 2026-01-23 A | 2026-01-25 A | HFR1-05-7750 | 100% | 2025-12-18 | 2025-12-25 | Consultant Staff [5.25 h] | 31 | MKH2-02-002-EN-1320 | 0 | 0 | D4440 | CON-LEG101-EN-3410 | HAS3-6980 |
|  | 4 | **Shop Drawings Approval for Septic Tank** |  | 2026-01-15 | 2026-01-31 |  |  |  |  |  |  |  |  |  |  |  |  |
| HFR1-05-8620 |  | Shop DWG Approval for the Septic Tank - Civil Works | 7d | 2026-01-15 A | 2026-01-27 A | HFR1-05-7710 | 100% | 2025-12-18 | 2025-12-25 | Consultant Staff [5.25 h] | 34 | MKH2-02-002-EN-1320 | 0 | 0 | D4440 | CON-LEG101-EN-3410 | HAS3-6940 |
| HFR1-05-8630 |  | Shop DWG Approval for the Septic Tank - Mechanical Works | 7d | 2026-01-20 A | 2026-01-29 A | HFR1-05-7720 | 100% | 2026-04-01 | 2026-04-08 | Consultant Staff [5.25 h] | 36 | MKH2-02-002-EN-1340 | 0 | 0 | D4450 | CON-LEG101-EN-3420 | HAS3-6950 |
| HFR1-05-8640 |  | Shop DWG Approval for the Septic Tank - Finishing Works | 7d | 2026-01-20 A | 2026-01-31 A | HFR1-05-7730 | 100% | 2026-04-01 | 2026-04-08 | Consultant Staff [5.25 h] | 38 | MKH2-02-002-EN-1350 | 0 | 0 | D4460 | CON-LEG101-EN-3430 | HAS3-6960 |
| HFR1-05-8650 |  | Shop DWG Approval for the Septic Tank - Electrical Works | 7d | 2026-01-20 A | 2026-01-29 A | HFR1-05-7740 | 100% | 2026-04-01 | 2026-04-08 | Consultant Staff [40 h] | 36 |  |  |  |  |  | HAS3-6970 |

| ID | WBS | Activity | Duration | Start | Finish | Predecessors | Complete | Planned start | Planned finish | Resources | Delay Activties | Weight 1 | USERTEXT | Mapping Sheet Activity ID | Total Weight % | Old Activity ID | Old Activity ID-Alhasa |
| --- | --- | --- | --- | --- | --- | --- | --- | --- | --- | --- | --- | --- | --- | --- | --- | --- | --- |
|  | 7 | **Shop Drawings Approval for GRB Tank** |  | 2026-01-15 | 2026-01-31 |  |  |  |  |  |  |  |  |  |  |  |  |
| HFR1-05-8540 |  | Shop DWG Approval for the GRB - Civil Works | 7d | 2026-01-15 A | 2026-01-27 A | HFR1-05-7670 | 100% | 2026-04-01 | 2026-04-08 | Consultant Staff [5.25 h] | 34 | 0 | MKH2-02-002-EN-1320 | D4440 | 0 | CON-LEG101-EN-3410 | HAS3-6860 |
| HFR1-05-8550 |  | Shop DWG Approval for the GRB - Mechanical Works | 7d | 2026-01-20 A | 2026-01-29 A | HFR1-05-7680 | 100% | 2026-04-01 | 2026-04-08 | Consultant Staff [5.25 h] | 36 | 0 | MKH2-02-002-EN-1340 | D4450 | 0 | CON-LEG101-EN-3420 | HAS3-6870 |
| HFR1-05-8560 |  | Shop DWG Approval for the GRB - Finishing Works | 7d | 2026-01-20 A | 2026-01-31 A | HFR1-05-7690 | 100% | 2026-04-01 | 2026-04-08 | Consultant Staff [5.25 h] | 38 | 0 | MKH2-02-002-EN-1350 | D4460 | 0 | CON-LEG101-EN-3430 | HAS3-6880 |
| HFR1-05-8570 |  | Shop DWG Approval for the GRB - Electrical Works | 7d | 2026-01-20 A | 2026-01-29 A | HFR1-05-7700 | 100% | 2026-04-01 | 2026-04-08 | Consultant Staff [40 h] | 36 |  |  |  |  |  | HAS3-6890 |
|  | 3 | **Shop Drawings Approval for Pump Room** |  | 2026-01-08 | 2026-01-29 |  |  |  |  |  |  |  |  |  |  |  |  |
| HFR1-05-9020 |  | Shop DWG Approval for the Pump Room - Civil Works | 8d | 2026-01-08 A | 2026-01-26 A | HFR1-05-8580 | 100% | 2025-12-16 | 2025-12-24 | Consultant Staff [5.25 h] | 34 | 0 | MKH2-02-002-EN-1320 | D4440 | 0 | CON-LEG101-EN-3410 | HAS3-7930 |
| HFR1-05-9030 |  | Shop DWG Approval for the Pump Room - Mechanical Works | 8d | 2026-01-17 A | 2026-01-28 A | HFR1-05-8590 | 100% | 2026-03-30 | 2026-04-07 | Consultant Staff [5.25 h] | 36 | 0 | MKH2-02-002-EN-1340 | D4450 | 0 | CON-LEG101-EN-3420 | HAS3-7940 |
| HFR1-05-9050 |  | Shop DWG Approval for the Pump Room - Electrical Works | 8d | 2026-01-17 A | 2026-01-28 A | HFR1-05-8610 | 100% | 2026-03-30 | 2026-04-07 | Consultant Staff [40 h] | 36 |  |  |  |  |  | HAS3-7960 |
| HFR1-05-9040 |  | Shop DWG Approval for the Pump Room - Finishing Works | 8d | 2026-01-18 A | 2026-01-29 A | HFR1-05-8600 | 100% | 2026-03-30 | 2026-04-07 | Consultant Staff [5.25 h] | 38 | 0 | MKH2-02-002-EN-1350 | D4460 | 0 | CON-LEG101-EN-3430 | HAS3-7950 |
|  | 3 | **Method Statements** |  | 2025-12-25 | 2026-03-29 |  |  |  |  |  |  |  |  |  |  |  |  |
|  | 1 | **Method Statements Submittal** |  | 2025-12-25 | 2026-03-05 |  |  |  |  |  |  |  |  |  |  |  |  |
| HFR1-05-3230 |  | Preparation & Submission of Method Statement for Earthworks | 6d | 2025-12-25 A | 2025-12-31 A | HFR1-05-9020 | 100% |  |  | QA/QC Engineer [30 h] | -1 | 0 | MKH2-02-002-EN-1740 | D1640 | 0 | CON-LEG101-EN-1810 | HAS3-1210 |
| HFR1-05-3250 |  | Preparation & Submission of Method Statement for Concrete Works | 6d | 2025-12-25 A | 2025-12-31 A | HFR1-05-9020 | 100% |  |  | QA/QC Engineer [30 h] | -1 | 0 | MKH2-02-002-EN-1760 | D1650 | 0 | CON-LEG101-EN-1820 | HAS3-1220 |
| HFR1-05-3260 |  | Preparation & Submission of Method Statement for Waterproofing Works | 6d | 2025-12-25 A | 2025-12-31 A | HFR1-05-9020 | 100% |  |  | QA/QC Engineer [30 h] | -1 | 0 | MKH2-02-002-EN-1770 | D1660 | 0 | CON-LEG101-EN-1830 | HAS3-1230 |
| HFR1-05-3280 |  | Preparation & Submission of Method Statement for Asphalt | 6d | 2026-02-25 A | 2026-03-03 A | HFR1-05-9020 | 100% | 2026-04-29 | 2026-05-05 | QA/QC Engineer [30 h] | 86 | 0 | MKH2-02-002-EN-1870 | D1710 | 0 | CON-LEG101-EN-1840 | HAS3-1240 |
| HFR1-05-4970 |  | Preparation & Submission of Method Statement for Epoxy Coating | 6d | 2026-02-26 A | 2026-03-04 A | HFR1-05-9020 | 100% | 2026-04-29 | 2026-05-05 | QA/QC Engineer [30 h] | 86 | 0 | MKH2-02-002-EN-1740 | D1640 | 0 | CON-LEG101-EN-1810 | HAS3-1960 |
| HFR1-05-4980 |  | Preparation & Submission of Method Statement for Metals | 6d | 2026-02-26 A | 2026-03-04 A | HFR1-05-9020 | 100% | 2026-04-29 | 2026-05-05 | QA/QC Engineer [64 h] | 86 | 0 | MKH2-02-002-EN-1760 | D1650 | 0 | CON-LEG101-EN-1820 | HAS3-1970 |
| HFR1-05-4990 |  | Preparation & Submission of Method Statement for Doors & Windows | 6d | 2026-02-28 A | 2026-03-05 A | HFR1-05-9020, HFR1-05-8610, HFR1-05-7700, HFR1-05-7740, HFR1-05-7780, HFR1-05-7820, HFR1-05-7690 | 100% | 2026-04-29 | 2026-05-05 | QA/QC Engineer [32 h] | 86 | 0 | MKH2-02-002-EN-1770 | D1660 | 0 | CON-LEG101-EN-1830 | HAS3-1980 |
|  | 2 | **Method Statements Approval** |  | 2026-01-01 | 2026-03-15 |  |  |  |  |  |  |  |  |  |  |  |  |
| HFR1-05-6170 |  | Approval of Method Statement for Earthworks | 6d | 2026-01-01 A | 2026-01-07 A | HFR1-05-3230 | 100% |  |  | Consultant Staff [5.25 h] | -1 | 0 | MKH2-02-002-EN-1740 | D4530 | 0 | CON-LEG101-EN-3440 | HAS3-3560 |
| HFR1-05-6180 |  | Approval of Method Statement for Concrete Works | 6d | 2026-01-01 A | 2026-01-07 A | HFR1-05-3250 | 100% |  |  | Consultant Staff [5.25 h] | -1 | 0 | MKH2-02-002-EN-1760 | D4540 | 0 | CON-LEG101-EN-3450 | HAS3-3570 |
| HFR1-05-6190 |  | Approval of Method Statement for Waterproofing Works | 6d | 2026-01-01 A | 2026-01-07 A | HFR1-05-3260 | 100% |  |  | Consultant Staff [5.25 h] | -1 | 0 | MKH2-02-002-EN-1770 | D4550 | 0 | CON-LEG101-EN-3460 | HAS3-3580 |
| HFR1-05-6200 |  | Approval of Method Statement for Asphalt | 6d | 2026-03-04 A | 2026-03-11 A | HFR1-05-3280 | 100% | 2026-05-06 | 2026-05-12 | Consultant Staff [5.25 h] | 86 | 0 | MKH2-02-002-EN-1870 | D4600 | 0 | CON-LEG101-EN-3470 | HAS3-3590 |
| HFR1-05-6230 |  | Approval of Method Statement for Epoxy Coating | 6d | 2026-03-05 A | 2026-03-14 A | HFR1-05-4970 | 100% | 2026-05-06 | 2026-05-12 | Consultant Staff [5.25 h] | 86 | 0 | MKH2-02-002-EN-1740 | D4530 | 0 | CON-LEG101-EN-3440 | HAS3-3620 |
| HFR1-05-6240 |  | Approval of Method Statement for Metals | 6d | 2026-03-05 A | 2026-03-14 A | HFR1-05-4980 | 100% | 2026-05-06 | 2026-05-12 | Consultant Staff [5.25 h] | 86 | 0 | MKH2-02-002-EN-1760 | D4540 | 0 | CON-LEG101-EN-3450 | HAS3-3630 |
| HFR1-05-6250 |  | Approval of Method Statement for Doors & Windows | 6d | 2026-03-07 A | 2026-03-15 A | HFR1-05-4990 | 100% | 2026-05-06 | 2026-05-12 | Consultant Staff [5.25 h] | 86 | 0 | MKH2-02-002-EN-1770 | D4550 | 0 | CON-LEG101-EN-3460 | HAS3-3640 |

| ID | WBS | Activity | Duration | Start | Finish | Predecessors | Complete | Planned start | Planned finish | Resources | Delay Activties | Weight 1 | USERTEXT | Mapping Sheet Activity ID | Total Weight % | Old Activity ID | Old Activity ID-Alhasa |
| --- | --- | --- | --- | --- | --- | --- | --- | --- | --- | --- | --- | --- | --- | --- | --- | --- | --- |
|  | 3 | **Method Statements Staging Time** |  | 2026-01-08 | 2026-03-29 |  |  |  |  |  |  |  |  |  |  |  |  |
| HFR1-05-6920 |  | Staging Time of Method Statement for Earthworks | 3d | 2026-01-08 A | 2026-01-11 A | HFR1-05-6170 | 100% |  |  | Consultant Staff [5.25 h] | -1 | 0 | MKH2-02-002-EN-1740 | D4530 | 0 | CON-LEG101-EN-3520 | HAS3-4720 |
| HFR1-05-6930 |  | Staging Time of Method Statement for Concrete Works | 3d | 2026-01-08 A | 2026-01-11 A | HFR1-05-6180 | 100% |  |  | Consultant Staff [5.25 h] | -1 | 0 | MKH2-02-002-EN-1760 | D4540 | 0 | CON-LEG101-EN-3530 | HAS3-4730 |
| HFR1-05-6940 |  | Staging Time of Method Statement for Waterproofing Works | 3d | 2026-01-08 A | 2026-01-11 A | HFR1-05-6190 | 100% |  |  | Consultant Staff [5.25 h] | -1 | 0 | MKH2-02-002-EN-1770 | D4550 | 0 | CON-LEG101-EN-3540 | HAS3-4740 |
| HFR1-05-6950 |  | Staging Time of Method Statement for Asphalt | 3d | 2026-03-12 A | 2026-03-24 A | HFR1-05-6200 | 100% | 2026-05-13 | 2026-05-16 | Consultant Staff [5.25 h] | 86 | 0 | MKH2-02-002-EN-1870 | D4600 | 0 | CON-LEG101-EN-3550 | HAS3-4750 |
| HFR1-05-7510 |  | Staging Time of Method Statement for Epoxy Coating | 3d | 2026-03-15 A | 2026-03-28 A | HFR1-05-6230 | 100% | 2026-05-13 | 2026-05-16 | Consultant Staff [5.25 h] | 86 | 0 | MKH2-02-002-EN-1740 | D4530 | 0 | CON-LEG101-EN-3520 | HAS3-5310 |
| HFR1-05-7520 |  | Staging Time of Method Statement for Metals | 3d | 2026-03-15 A | 2026-03-28 A | HFR1-05-6240 | 100% | 2026-05-13 | 2026-05-16 | Consultant Staff [5.25 h] | 86 | 0 | MKH2-02-002-EN-1760 | D4540 | 0 | CON-LEG101-EN-3530 | HAS3-5320 |
| HFR1-05-7530 |  | Staging Time of Method Statement for Doors & Windows | 3d | 2026-03-16 A | 2026-03-29 A | HFR1-05-6250 | 100% | 2026-05-13 | 2026-05-16 | Consultant Staff [5.25 h] | 86 | 0 | MKH2-02-002-EN-1770 | D4550 | 0 | CON-LEG101-EN-3540 | HAS3-5330 |
|  | 4 | **Pre-qualification and Material** |  | 2025-12-25 | 2026-07-20 |  |  |  |  |  |  |  |  |  |  |  |  |
|  | 2 | **Pre-qualification** |  | 2025-12-25 | 2026-03-31 |  |  |  |  |  |  |  |  |  |  |  |  |
|  | 1 | **Road Works - Civil** |  | 2025-12-25 | 2026-01-31 |  |  |  |  |  |  |  |  |  |  |  |  |
|  | 1 | **Steel Reinforcement** |  | 2025-12-25 | 2026-01-07 |  |  |  |  |  |  |  |  |  |  |  |  |
| HFR1-05-3290 |  | Pre-Qualification Submittal for Steel Reinforcement | 6d | 2025-12-25 A | 2025-12-31 A | HFR1-05-9020 | 100% |  |  | QA/QC Engineer [32 h] | -1 | 0 | MKH2-02-002-SB-1120 | D6848 | 0 | CON-LEG101-SB-4200 | HAS3-1250 |
| HFR1-05-5040 |  | Pre-Qualification Approval for Steel Reinforcement | 6d | 2026-01-01 A | 2026-01-07 A | HFR1-05-3290 | 100% |  |  | Consultant Staff [7.35 h] | -1 | 0 | MKH2-02-002-SB-1130 | D6850 | 0 | CON-LEG101-SB-4210 | HAS3-2280 |
|  | 2 | **Ready Mixed Concrete** |  | 2026-01-01 | 2026-01-31 |  |  |  |  |  |  |  |  |  |  |  |  |
| HFR1-05-6270 |  | Pre-Qualification Approval for Ready Mixed Concrete | 6d | 2026-01-01 A | 2026-01-07 A | HFR1-05-5050 | 100% |  |  | Consultant Staff [7.35 h] | -1 | 0 | MKH2-02-002-SB-1130 | D6870 | 0 | CON-LEG101-SB-4230 | HAS3-3780 |
| HFR1-05-5050 |  | Pre-Qualification Submittal for Ready Mixed Concrete | 6d | 2026-01-25 A | 2026-01-31 A | HFR1-05-9020 | 100% | 2025-12-25 | 2025-12-31 | QA/QC Engineer [32 h] | 31 | 0 | MKH2-02-002-SB-1120 | D6868 | 0 | CON-LEG101-SB-4220 | HAS3-2290 |
|  | 3 | **Water Proofing** |  | 2025-12-25 | 2026-01-07 |  |  |  |  |  |  |  |  |  |  |  |  |
| HFR1-05-6280 |  | Pre-Qualification Submittal for Water Proofing | 6d | 2025-12-25 A | 2025-12-31 A | HFR1-05-9020 | 100% |  |  | QA/QC Engineer [32 h] | -1 | 0 | MKH2-02-002-SB-1120 | D6888 | 0 | CON-LEG101-SB-4240 | HAS3-3790 |
| HFR1-05-6910 |  | Pre-Qualification Approval for Water Proofing | 6d | 2026-01-01 A | 2026-01-07 A | HFR1-05-6280 | 100% |  |  | Consultant Staff [7.35 h] | -1 | 0 | MKH2-02-002-SB-1130 | D6890 | 0 | CON-LEG101-SB-4250 | HAS3-4710 |
|  | 4 | **Aggregate Base Course** |  | 2025-12-25 | 2026-01-07 |  |  |  |  |  |  |  |  |  |  |  |  |
| HFR1-05-6260 |  | Pre-Qualification Submittal for Aggregate Base Cource | 6d | 2025-12-25 A | 2025-12-31 A | HFR1-05-9020 | 100% | 2026-03-17 | 2026-03-26 | QA/QC Engineer [32 h] | -1 | 0 | MKH2-02-002-SB-1120 | D2000 | 0 | CON-LEG101-SB-1000 | HAS3-3770 |
| HFR1-05-6870 |  | Pre-Qualification Approval for Aggregate Base Cource | 6d | 2026-01-01 A | 2026-01-07 A | HFR1-05-6260 | 100% | 2026-03-28 | 2026-04-02 | Consultant Staff [7.35 h] | -1 | 0 | MKH2-02-002-SB-1130 | D2010 | 0 | CON-LEG101-SB-1010 | HAS3-4670 |
|  | 5 | **Bituminous Base & Wearing Course** |  | 2025-12-25 | 2026-01-07 |  |  |  |  |  |  |  |  |  |  |  |  |
| HFR1-05-6880 |  | Pre-Qualification Submittal for Bituminous Base & Wearing Cource | 6d | 2025-12-25 A | 2025-12-31 A | HFR1-05-9020 | 100% | 2026-03-17 | 2026-03-26 | QA/QC Engineer [32 h] | -1 | 0 | MKH2-02-002-SB-1160 | D2040 | 0 | CON-LEG101-SB-1040 | HAS3-4680 |
| HFR1-05-7920 |  | Pre-Qualification Approval for Bituminous & Wearing Cource | 6d | 2026-01-01 A | 2026-01-07 A | HFR1-05-6880 | 100% | 2026-03-28 | 2026-04-02 | Consultant Staff [7.35 h] | -1 | 0 | MKH2-02-002-SB-1170 | D2050 | 0 | CON-LEG101-SB-1050 | HAS3-6050 |

| ID | WBS | Activity | Duration | Start | Finish | Predecessors | Complete | Planned start | Planned finish | Resources | Delay Activties | USERTEXT | Weight 1 | Total Weight % | Mapping Sheet Activity ID | Old Activity ID | Old Activity ID-Alhasa |
| --- | --- | --- | --- | --- | --- | --- | --- | --- | --- | --- | --- | --- | --- | --- | --- | --- | --- |
|  | 7 | **Precast Concrete Kerb** |  | 2025-12-25 | 2026-01-31 |  |  |  |  |  |  |  |  |  |  |  |  |
| HFR1-05-6890 |  | Pre-Qualification Submittal for Precast Concrete Kerb | 6d | 2025-12-25 A | 2026-01-31 A | HFR1-05-9020 | 100% | 2026-03-17 | 2026-03-26 | QA/QC Engineer [32 h] | 31 | MKH2-02-002-SB-1240 | 0 | 0 | D2120 | CON-LEG101-SB-1080 | HAS3-4690 |
| HFR1-05-7930 |  | Pre-Qualification Approval for Precast Concrete Kerb | 6d | 2026-01-01 A | 2026-01-07 A | HFR1-05-6890 | 100% | 2026-03-28 | 2026-04-02 | Consultant Staff [7.35 h] | -1 | MKH2-02-002-SB-1250 | 0 | 0 | D2130 | CON-LEG101-SB-1090 | HAS3-6060 |
|  | 8 | **Interlocking Block Pavers** |  | 2025-12-25 | 2026-01-07 |  |  |  |  |  |  |  |  |  |  |  |  |
| HFR1-05-6900 |  | Pre-Qualification Submittal for Interlocking Block Pavers | 6d | 2025-12-25 A | 2025-12-31 A | HFR1-05-9020 | 100% | 2026-03-17 | 2026-03-26 | QA/QC Engineer [32 h] | -1 | MKH2-02-002-SB-1280 | 0 | 0 | D2160 | CON-LEG101-SB-1120 | HAS3-4700 |
| HFR1-05-7940 |  | Pre-Qualification Approval for Interlocking Block Pavers | 6d | 2026-01-01 A | 2026-01-07 A | HFR1-05-6900 | 100% | 2026-03-28 | 2026-04-02 | Consultant Staff [7.35 h] | -1 | MKH2-02-002-SB-1290 | 0 | 0 | D2170 | CON-LEG101-SB-1130 | HAS3-6070 |
|  | 9 | **Pavement Markings** |  | 2025-12-25 | 2026-01-31 |  |  |  |  |  |  |  |  |  |  |  |  |
| HFR1-05-7950 |  | Pre-Qualification Submittal for Pavement Markings | 6d | 2025-12-25 A | 2026-01-31 A | HFR1-05-9020 | 100% | 2026-03-17 | 2026-03-26 | QA/QC Engineer [32 h] | 31 | MKH2-02-002-SB-1320 | 0 | 0 | D2200 | CON-LEG101-SB-1160 | HAS3-6080 |
| HFR1-05-8470 |  | Pre-Qualification Approval for Pavement Markings | 6d | 2026-01-08 A | 2026-01-14 A | HFR1-05-7950, HFR1-05-6870 | 100% | 2026-04-04 | 2026-04-09 | Consultant Staff [7.35 h] | -1 | MKH2-02-002-SB-1330 | 0 | 0 | D2210 | CON-LEG101-SB-1170 | HAS3-6790 |
|  | 10 | **Traffic Signs** |  | 2025-12-25 | 2026-01-07 |  |  |  |  |  |  |  |  |  |  |  |  |
| HFR1-05-8480 |  | Pre-Qualification Submittal for Traffic Signs | 6d | 2025-12-25 A | 2025-12-31 A | HFR1-05-9020 | 100% | 2026-03-17 | 2026-03-26 | QA/QC Engineer [32 h] | -1 | MKH2-02-002-SB-1360 | 0 | 0 | D2240 | CON-LEG101-SB-1200 | HAS3-6800 |
| HFR1-05-8920 |  | Pre-Qualification Approval for Traffic Signs | 6d | 2026-01-01 A | 2026-01-07 A | HFR1-05-8480 | 100% | 2026-03-28 | 2026-04-02 | Consultant Staff [7.35 h] | -1 | MKH2-02-002-SB-1370 | 0 | 0 | D2250 | CON-LEG101-SB-1210 | HAS3-7440 |
|  | 2 | **Potable Water Network** |  | 2025-12-25 | 2026-01-07 |  |  |  |  |  |  |  |  |  |  |  |  |
|  | 1 | **HDPE Pipes** |  | 2025-12-25 | 2026-01-07 |  |  |  |  |  |  |  |  |  |  |  |  |
| HFR1-05-4910 |  | Pre-Qualification Submittal for HDPE Pipes | 6d | 2025-12-25 A | 2025-12-31 A | HFR1-05-9020 | 100% |  |  | QA/QC Engineer [32 h] | -1 | MKH2-02-002-SB-1120 | 0 | 0 | D6848 | CON-LEG101-SB-4200 | HAS3-1900 |
| HFR1-05-5600 |  | Pre-Qualification Approval for HDPE Pipes | 6d | 2026-01-01 A | 2026-01-07 A | HFR1-05-4910 | 100% |  |  | Consultant Staff [7.35 h] | -1 | MKH2-02-002-SB-1130 | 0 | 0 | D6850 | CON-LEG101-SB-4210 | HAS3-2840 |
|  | 2 | **Valves** |  | 2025-12-25 | 2026-01-07 |  |  |  |  |  |  |  |  |  |  |  |  |
| HFR1-05-5610 |  | Pre-Qualification Submittal for Valves | 6d | 2025-12-25 A | 2025-12-31 A | HFR1-05-9020 | 100% |  |  | QA/QC Engineer [32 h] | -1 | MKH2-02-002-SB-1120 | 0 | 0 | D6868 | CON-LEG101-SB-4220 | HAS3-2850 |
| HFR1-05-6800 |  | Pre-Qualification Approval for Valves | 6d | 2026-01-01 A | 2026-01-07 A | HFR1-05-5610 | 100% |  |  | Consultant Staff [7.35 h] | -1 | MKH2-02-002-SB-1130 | 0 | 0 | D6870 | CON-LEG101-SB-4230 | HAS3-4310 |
|  | 3 | **Sewer Water Network** |  | 2025-12-25 | 2026-01-31 |  |  |  |  |  |  |  |  |  |  |  |  |
|  | 1 | **GRP Pipes** |  | 2025-12-25 | 2026-01-31 |  |  |  |  |  |  |  |  |  |  |  |  |
| HFR1-05-4920 |  | Pre-Qualification Submittal for GRP Pipes | 6d | 2025-12-25 A | 2026-01-31 A | HFR1-05-9020 | 100% | 2025-12-25 | 2025-12-31 | QA/QC Engineer [32 h] | 31 | MKH2-02-002-SB-1120 | 0 | 0 | D6848 | CON-LEG101-SB-4200 | HAS3-1910 |
| HFR1-05-5620 |  | Pre-Qualification Approval for GRP Pipes | 6d | 2026-01-01 A | 2026-01-07 A | HFR1-05-4920 | 100% |  |  | Consultant Staff [7.35 h] | -1 | MKH2-02-002-SB-1130 | 0 | 0 | D6850 | CON-LEG101-SB-4210 | HAS3-2860 |
|  | 2 | **Manholes** |  | 2025-12-25 | 2026-01-07 |  |  |  |  |  |  |  |  |  |  |  |  |
| HFR1-05-5630 |  | Pre-Qualification Submittal for Manholes | 6d | 2025-12-25 A | 2025-12-31 A | HFR1-05-9020 | 100% |  |  | QA/QC Engineer [32 h] | -1 | MKH2-02-002-SB-1120 | 0 | 0 | D6868 | CON-LEG101-SB-4220 | HAS3-2870 |
| HFR1-05-6810 |  | Pre-Qualification Approval for Manholes | 6d | 2026-01-01 A | 2026-01-07 A | HFR1-05-5630 | 100% |  |  | Consultant Staff [7.35 h] | -1 | MKH2-02-002-SB-1130 | 0 | 0 | D6870 | CON-LEG101-SB-4230 | HAS3-4320 |

| ID | WBS | Activity | Duration | Start | Finish | Predecessors | Complete | Planned start | Planned finish | Resources | Delay Activties | Weight 1 | USERTEXT | Old Activity ID | Old Activity ID-Alhasa | Mapping Sheet Activity ID | Total Weight % |
| --- | --- | --- | --- | --- | --- | --- | --- | --- | --- | --- | --- | --- | --- | --- | --- | --- | --- |
|  | 7 | **Civil Works - Buildings** |  | 2025-12-25 | 2026-03-31 |  |  |  |  |  |  |  |  |  |  |  |  |
|  | 2 | **Steel Reinforcement** |  | 2025-12-25 | 2026-01-07 |  |  |  |  |  |  |  |  |  |  |  |  |
| HFR1-05-3340 |  | Pre-Qualification Submittal for Steel Reinforcement | 6d | 2025-12-25 A | 2025-12-31 A | HFR1-05-9020 | 100% |  |  | QA/QC Engineer [32 h] | -1 | 0 | MKH2-02-002-SB-3040 | CON-LEG101-SB-2280 | HAS3-1280 | D3820 | 0 |
| HFR1-05-5370 |  | Pre-Qualification Approval for Steel Reinforcement | 6d | 2026-01-01 A | 2026-01-07 A | HFR1-05-3340 | 100% |  |  | Consultant Staff [7.35 h] | -1 | 0 | MKH2-02-002-SB-3050 | CON-LEG101-SB-2320 | HAS3-2610 | D3860 | 0 |
|  | 1 | **Ready Mix Concrete** |  | 2025-12-25 | 2026-01-07 |  |  |  |  |  |  |  |  |  |  |  |  |
| HFR1-05-5360 |  | Pre-Qualification Submittal for Ready Mix Concrete | 6d | 2025-12-25 A | 2025-12-31 A | HFR1-05-9020 | 100% |  |  | QA/QC Engineer [32 h] | -1 | 0 | MKH2-02-002-SB-3040 | CON-LEG101-SB-2260 | HAS3-2600 | D3800 | 0 |
| HFR1-05-6600 |  | Pre-Qualification Approval for Ready Mix Concrete | 6d | 2026-01-01 A | 2026-01-07 A | HFR1-05-5360 | 100% |  |  | Consultant Staff [7.35 h] | -1 | 0 | MKH2-02-002-SB-3050 | CON-LEG101-SB-2300 | HAS3-4110 | D3840 | 0 |
|  | 3 | **Masonry** |  | 2025-12-25 | 2026-01-07 |  |  |  |  |  |  |  |  |  |  |  |  |
| HFR1-05-5380 |  | Pre-Qualification Submittal for Masonry | 6d | 2025-12-25 A | 2025-12-31 A | HFR1-05-9020 | 100% |  |  | QA/QC Engineer [32 h] | -1 | 0 | MKH2-02-002-SB-3040 | CON-LEG101-SB-3240 | HAS3-2620 | D5778 | 0 |
| HFR1-05-6610 |  | Pre-Qualification Approval for Masonry | 6d | 2026-01-01 A | 2026-01-07 A | HFR1-05-5380 | 100% |  |  | Consultant Staff [7.35 h] | -1 | 0 | MKH2-02-002-SB-3050 | CON-LEG101-SB-3250 | HAS3-4120 | D5788 | 0 |
|  | 4 | **Steel Structure** |  | 2025-12-25 | 2026-01-07 |  |  |  |  |  |  |  |  |  |  |  |  |
| HFR1-05-5390 |  | Pre-Qualification Submittal for Steel Structure | 6d | 2025-12-25 A | 2025-12-31 A | HFR1-05-9020 | 100% |  |  | QA/QC Engineer [32 h] | -1 | 0 | MKH2-02-002-SB-3040 | CON-LEG101-SB-4350 | HAS3-2630 | D3800 | 0 |
| HFR1-05-6620 |  | Pre-Qualification Approval for Steel Structure | 6d | 2026-01-01 A | 2026-01-07 A | HFR1-05-5390 | 100% |  |  | Consultant Staff [7.35 h] | -1 | 0 | MKH2-02-002-SB-3050 | CON-LEG101-SB-4370 | HAS3-4130 | D3840 | 0 |
|  | 5 | **Thermal & Moisture Protection** |  | 2025-12-25 | 2026-01-07 |  |  |  |  |  |  |  |  |  |  |  |  |
| HFR1-05-5400 |  | Pre-Qualification Submittal for Thermal & Moisture Protection | 6d | 2025-12-25 A | 2025-12-31 A | HFR1-05-9020 | 100% |  |  | QA/QC Engineer [32 h] | -1 | 0 | MKH2-02-002-SB-3040 | CON-LEG101-SB-4360 | HAS3-2640 | D3820 | 0 |
| HFR1-05-6630 |  | Pre-Qualification Approval for Thermal & Moisture Protection | 6d | 2026-01-01 A | 2026-01-07 A | HFR1-05-5400 | 100% |  |  | Consultant Staff [7.35 h] | -1 | 0 | MKH2-02-002-SB-3050 | CON-LEG101-SB-4380 | HAS3-4140 | D3860 | 0 |
|  | 6 | **Water Proofing System** |  | 2025-12-25 | 2026-01-07 |  |  |  |  |  |  |  |  |  |  |  |  |
| HFR1-05-5410 |  | Pre-Qualification Submittal for Water Proofing System | 6d | 2025-12-25 A | 2025-12-31 A | HFR1-05-9020 | 100% |  |  | QA/QC Engineer [32 h] | -1 | 0 | MKH2-02-002-SB-3040 | CON-LEG101-SB-4390 | HAS3-2650 | D5778 | 0 |
| HFR1-05-6640 |  | Pre-Qualification Approval for Water Proofing System | 6d | 2026-01-01 A | 2026-01-07 A | HFR1-05-5410 | 100% |  |  | Consultant Staff [7.35 h] | -1 | 0 | MKH2-02-002-SB-3050 | CON-LEG101-SB-4400 | HAS3-4150 | D5788 | 0 |
|  | 7 | **Doors & Windows** |  | 2025-12-25 | 2026-03-31 |  |  |  |  |  |  |  |  |  |  |  |  |
| HFR1-05-5450 |  | Pre-Qualification Submittal for Doors & Windows | 6d | 2025-12-25 A | 2026-03-31 A | HFR1-05-9020 | 100% | 2025-12-25 | 2025-12-31 | QA/QC Engineer [32 h] | 79 | 0 | MKH2-02-002-SB-3040 | CON-LEG101-SB-4470 | HAS3-2690 | D3800 | 0 |
| HFR1-05-6680 |  | Pre-Qualification Approval for Doors & Windows | 6d | 2026-01-01 A | 2026-01-07 A | HFR1-05-5450 | 100% |  |  | Consultant Staff [7.35 h] | 71 | 0 | MKH2-02-002-SB-3050 | CON-LEG101-SB-4490 | HAS3-4190 | D3840 | 0 |
|  | 8 | **Floor Finishes** |  | 2025-12-27 | 2026-03-08 |  |  |  |  |  |  |  |  |  |  |  |  |
| HFR1-05-5420 |  | Pre-Qualification Submittal for Floor Finishes | 6d | 2025-12-27 A | 2026-01-01 A | HFR1-05-9020 | 100% | 2026-03-22 | 2026-03-28 | QA/QC Engineer [32 h] | 86 | 0 | MKH2-02-002-SB-3040 | CON-LEG101-SB-4410 | HAS3-2660 | D3800 | 0 |
| HFR1-05-6650 |  | Pre-Qualification Approval for Floor Finishes | 6d | 2026-01-03 A | 2026-03-08 A | HFR1-05-5420 | 100% | 2026-03-29 | 2026-04-04 | Consultant Staff [7.35 h] | 86 | 0 | MKH2-02-002-SB-3050 | CON-LEG101-SB-4430 | HAS3-4160 | D3840 | 0 |

| ID | WBS | Activity | Duration | Start | Finish | Predecessors | Complete | Planned start | Planned finish | Resources | Delay Activties | Weight 1 | USERTEXT | Old Activity ID | Old Activity ID-Alhasa | Mapping Sheet Activity ID | Total Weight % |
| --- | --- | --- | --- | --- | --- | --- | --- | --- | --- | --- | --- | --- | --- | --- | --- | --- | --- |
|  | 9 | **Wall Finishes** |  | 2025-12-27 | 2026-01-08 |  |  |  |  |  |  |  |  |  |  |  |  |
| HFR1-05-5460 |  | Pre-Qualification Submittal for Wall Finishes | 6d | 2025-12-27 A | 2026-01-01 A | HFR1-05-9020 | 100% | 2026-03-22 | 2026-03-28 | QA/QC Engineer [32 h] | 86 | 0 | MKH2-02-002-SB-3040 | CON-LEG101-SB-4480 | HAS3-2700 | D3820 | 0 |
| HFR1-05-6690 |  | Pre-Qualification Approval for Wall Finishes | 6d | 2026-01-03 A | 2026-01-08 A | HFR1-05-5460 | 100% | 2026-03-29 | 2026-04-04 | Consultant Staff [7.35 h] | 86 | 0 | MKH2-02-002-SB-3050 | CON-LEG101-SB-4500 | HAS3-4200 | D3860 | 0 |
|  | 10 | **Ceiling Finishes** |  | 2026-01-01 | 2026-01-14 |  |  |  |  |  |  |  |  |  |  |  |  |
| HFR1-05-5470 |  | Pre-Qualification Submittal for Ceiling Finishes | 6d | 2026-01-01 A | 2026-01-07 A | HFR1-05-5460 | 100% | 2026-03-29 | 2026-04-04 | QA/QC Engineer [32 h] | 86 | 0 | MKH2-02-002-SB-3040 | CON-LEG101-SB-4510 | HAS3-2710 | D5778 | 0 |
| HFR1-05-6700 |  | Pre-Qualification Approval for Ceiling Finishes | 6d | 2026-01-08 A | 2026-01-14 A | HFR1-05-5470 | 100% | 2026-04-05 | 2026-04-11 | Consultant Staff [7.35 h] | 86 | 0 | MKH2-02-002-SB-3050 | CON-LEG101-SB-4520 | HAS3-4210 | D5788 | 0 |
|  | 11 | **Fittings** |  | 2026-01-01 | 2026-01-14 |  |  |  |  |  |  |  |  |  |  |  |  |
| HFR1-05-5430 |  | Pre-Qualification Submittal for Fittings | 6d | 2026-01-01 A | 2026-01-07 A | HFR1-05-5460 | 100% | 2026-03-29 | 2026-04-04 | QA/QC Engineer [32 h] | 86 | 0 | MKH2-02-002-SB-3040 | CON-LEG101-SB-4420 | HAS3-2670 | D3820 | 0 |
| HFR1-05-6660 |  | Pre-Qualification Approval for Fittings | 6d | 2026-01-08 A | 2026-01-14 A | HFR1-05-5430 | 100% | 2026-04-05 | 2026-04-11 | Consultant Staff [7.35 h] | 86 | 0 | MKH2-02-002-SB-3050 | CON-LEG101-SB-4440 | HAS3-4170 | D3860 | 0 |
|  | 12 | **Signages** |  | 2026-01-01 | 2026-01-14 |  |  |  |  |  |  |  |  |  |  |  |  |
| HFR1-05-5440 |  | Pre-Qualification Submittal for Signages | 6d | 2026-01-01 A | 2026-01-07 A | HFR1-05-5460 | 100% | 2026-03-29 | 2026-04-04 | QA/QC Engineer [32 h] | 86 | 0 | MKH2-02-002-SB-3040 | CON-LEG101-SB-4450 | HAS3-2680 | D5778 | 0 |
| HFR1-05-6670 |  | Pre-Qualification Approval for Signages | 6d | 2026-01-08 A | 2026-01-14 A | HFR1-05-5440 | 100% | 2026-04-05 | 2026-04-11 | Consultant Staff [7.35 h] | 86 | 0 | MKH2-02-002-SB-3050 | CON-LEG101-SB-4460 | HAS3-4180 | D5788 | 0 |
|  | 13 | **Logo** |  | 2026-01-01 | 2026-01-14 |  |  |  |  |  |  |  |  |  |  |  |  |
| HFR1-05-5510 |  | Pre-Qualification Submittal for Logo | 6d | 2026-01-01 A | 2026-01-07 A | HFR1-05-5460 | 100% | 2026-03-29 | 2026-04-04 | QA/QC Engineer [32 h] | 86 | 0 | MKH2-02-002-SB-3040 | CON-LEG101-SB-4590 | HAS3-2750 | D3800 | 0 |
| HFR1-05-6740 |  | Pre-Qualification Approval for Logo | 6d | 2026-01-08 A | 2026-01-14 A | HFR1-05-5510 | 100% | 2026-04-05 | 2026-04-11 | Consultant Staff [7.35 h] | 86 | 0 | MKH2-02-002-SB-3050 | CON-LEG101-SB-4600 | HAS3-4250 | D3840 | 0 |
|  | 14 | **Pre Engineered Structures** |  | 2026-01-01 | 2026-01-14 |  |  |  |  |  |  |  |  |  |  |  |  |
| HFR1-05-5480 |  | Pre-Qualification Submittal for Pre Engineered Structure | 6d | 2026-01-01 A | 2026-01-07 A | HFR1-05-5460 | 100% | 2026-03-29 | 2026-04-04 | QA/QC Engineer [32 h] | 86 | 0 | MKH2-02-002-SB-3040 | CON-LEG101-SB-4530 | HAS3-2720 | D3800 | 0 |
| HFR1-05-6710 |  | Pre-Qualification Approval for Pre Engineered Structure | 6d | 2026-01-08 A | 2026-01-14 A | HFR1-05-5480 | 100% | 2026-04-05 | 2026-04-11 | Consultant Staff [7.35 h] | 86 | 0 | MKH2-02-002-SB-3050 | CON-LEG101-SB-4540 | HAS3-4220 | D3840 | 0 |
|  | 15 | **Steel Fence** |  | 2026-01-01 | 2026-01-14 |  |  |  |  |  |  |  |  |  |  |  |  |
| HFR1-05-5490 |  | Pre-Qualification Submittal for Steel Fences | 6d | 2026-01-01 A | 2026-01-07 A | HFR1-05-5460 | 100% | 2026-03-29 | 2026-04-04 | QA/QC Engineer [32 h] | 86 | 0 | MKH2-02-002-SB-3040 | CON-LEG101-SB-4550 | HAS3-2730 | D3820 | 0 |
| HFR1-05-6720 |  | Pre-Qualification Approval for Steel Fences | 6d | 2026-01-08 A | 2026-01-14 A | HFR1-05-5490 | 100% | 2026-04-05 | 2026-04-11 | Consultant Staff [7.35 h] | 86 | 0 | MKH2-02-002-SB-3050 | CON-LEG101-SB-4560 | HAS3-4230 | D3860 | 0 |
|  | 16 | **Gates** |  | 2026-01-01 | 2026-01-14 |  |  |  |  |  |  |  |  |  |  |  |  |
| HFR1-05-5500 |  | Pre-Qualification Submittal for Gates | 6d | 2026-01-01 A | 2026-01-07 A | HFR1-05-5460 | 100% | 2026-03-29 | 2026-04-04 | QA/QC Engineer [32 h] | 86 | 0 | MKH2-02-002-SB-3040 | CON-LEG101-SB-4570 | HAS3-2740 | D3800 | 0 |
| HFR1-05-6730 |  | Pre-Qualification Approval for Gates | 6d | 2026-01-08 A | 2026-01-14 A | HFR1-05-5500 | 100% | 2026-04-05 | 2026-04-11 | Consultant Staff [7.35 h] | 86 | 0 | MKH2-02-002-SB-3050 | CON-LEG101-SB-4580 | HAS3-4240 | D3840 | 0 |

| ID | WBS | Activity | Duration | Start | Finish | Predecessors | Complete | Planned start | Planned finish | Resources | Delay Activties | USERTEXT | Weight 1 | Old Activity ID-Alhasa | Old Activity ID | Total Weight % | Mapping Sheet Activity ID |
| --- | --- | --- | --- | --- | --- | --- | --- | --- | --- | --- | --- | --- | --- | --- | --- | --- | --- |
|  | 17 | **Pump Shed** |  | 2026-01-01 | 2026-01-14 |  |  |  |  |  |  |  |  |  |  |  |  |
| HFR1-05-5520 |  | Pre-Qualification Submittal for Pump Shed | 6d | 2026-01-01 A | 2026-01-07 A | HFR1-05-5460 | 100% | 2026-03-29 | 2026-04-04 | QA/QC Engineer [32 h] | 86 | MKH2-02-002-SB-3040 | 0 | HAS3-2760 | CON-LEG101-SB-4730 | 0 | D3800 |
| HFR1-05-6750 |  | Pre-Qualification Approval for Pump Shed | 6d | 2026-01-08 A | 2026-01-14 A | HFR1-05-5520 | 100% | 2026-04-05 | 2026-04-11 | Consultant Staff [7.35 h] | 86 | MKH2-02-002-SB-3050 | 0 | HAS3-4260 | CON-LEG101-SB-4740 | 0 | D3840 |
|  | 5 | **Mechanical - Buildings** |  | 2026-01-01 | 2026-01-14 |  |  |  |  |  |  |  |  |  |  |  |  |
|  | 2 | **Fire Fighting System** |  | 2026-01-01 | 2026-01-14 |  |  |  |  |  |  |  |  |  |  |  |  |
| HFR1-05-3300 |  | Pre-Qualification Submittal for Fire Fighting System | 6d | 2026-01-01 A | 2026-01-07 A | HFR1-05-5460 | 100% | 2026-03-29 | 2026-04-04 | QA/QC Engineer [32 h] | 86 | MKH2-02-002-SB-3040 | 0 | HAS3-1260 | CON-LEG101-SB-2280 | 0 | D3820 |
| HFR1-05-5070 |  | Pre-Qualification Approval for Fire Fighting System | 6d | 2026-01-08 A | 2026-01-14 A | HFR1-05-3300 | 100% | 2026-04-05 | 2026-04-11 | Consultant Staff [7.35 h] | 86 | MKH2-02-002-SB-3050 | 0 | HAS3-2310 | CON-LEG101-SB-2320 | 0 | D3860 |
|  | 1 | **HDPE Pipes** |  | 2026-01-01 | 2026-01-14 |  |  |  |  |  |  |  |  |  |  |  |  |
| HFR1-05-5060 |  | Pre-Qualification Submittal for HDPE Pipes | 6d | 2026-01-01 A | 2026-01-07 A | HFR1-05-5460 | 100% | 2026-03-23 | 2026-03-29 | QA/QC Engineer [32 h] | 86 | MKH2-02-002-SB-3040 | 0 | HAS3-2300 | CON-LEG101-SB-2260 | 0 | D3800 |
| HFR1-05-6290 |  | Pre-Qualification Approval for HDPE Pipes | 6d | 2026-01-08 A | 2026-01-14 A | HFR1-05-5060 | 100% | 2026-03-30 | 2026-04-05 | Consultant Staff [7.35 h] | 86 | MKH2-02-002-SB-3050 | 0 | HAS3-3800 | CON-LEG101-SB-2300 | 0 | D3840 |
|  | 3 | **Valves** |  | 2026-01-01 | 2026-01-14 |  |  |  |  |  |  |  |  |  |  |  |  |
| HFR1-05-5080 |  | Pre-Qualification Submittal for Valves | 6d | 2026-01-01 A | 2026-01-07 A | HFR1-05-5460 | 100% | 2026-03-23 | 2026-03-29 | QA/QC Engineer [32 h] | 86 | MKH2-02-002-SB-3040 | 0 | HAS3-2320 | CON-LEG101-SB-3240 | 0 | D5778 |
| HFR1-05-6300 |  | Pre-Qualification Approval for Valves | 6d | 2026-01-08 A | 2026-01-14 A | HFR1-05-5080 | 100% | 2026-03-30 | 2026-04-05 | Consultant Staff [7.35 h] | 86 | MKH2-02-002-SB-3050 | 0 | HAS3-3810 | CON-LEG101-SB-3250 | 0 | D5788 |
|  | 4 | **GRP pipes** |  | 2026-01-01 | 2026-01-14 |  |  |  |  |  |  |  |  |  |  |  |  |
| HFR1-05-5090 |  | Pre-Qualification Submittal for GRP Pipes | 6d | 2026-01-01 A | 2026-01-07 A | HFR1-05-5460 | 100% | 2026-03-23 | 2026-03-29 | QA/QC Engineer [32 h] | 86 | MKH2-02-002-SB-3040 | 0 | HAS3-2330 | CON-LEG101-SB-4350 | 0 | D3800 |
| HFR1-05-6310 |  | Pre-Qualification Approval for GRP Pipes | 6d | 2026-01-08 A | 2026-01-14 A | HFR1-05-5090 | 100% | 2026-03-30 | 2026-04-05 | Consultant Staff [7.35 h] | 86 | MKH2-02-002-SB-3050 | 0 | HAS3-3820 | CON-LEG101-SB-4370 | 0 | D3840 |
|  | 5 | **Manholes** |  | 2026-01-01 | 2026-01-14 |  |  |  |  |  |  |  |  |  |  |  |  |
| HFR1-05-5100 |  | Pre-Qualification Submittal for Manholes | 6d | 2026-01-01 A | 2026-01-07 A | HFR1-05-5460 | 100% | 2026-03-23 | 2026-03-29 | QA/QC Engineer [32 h] | 86 | MKH2-02-002-SB-3040 | 0 | HAS3-2340 | CON-LEG101-SB-4360 | 0 | D3820 |
| HFR1-05-6320 |  | Pre-Qualification Approval for Manholes | 6d | 2026-01-08 A | 2026-01-14 A | HFR1-05-5100 | 100% | 2026-03-30 | 2026-04-05 | Consultant Staff [7.35 h] | 86 | MKH2-02-002-SB-3050 | 0 | HAS3-3830 | CON-LEG101-SB-4380 | 0 | D3860 |
|  | 6 | **Fire Protectional System** |  | 2026-01-01 | 2026-01-14 |  |  |  |  |  |  |  |  |  |  |  |  |
| HFR1-05-5110 |  | Pre-Qualification Submittal for Fire Protection System | 6d | 2026-01-01 A | 2026-01-07 A | HFR1-05-5460 | 100% | 2026-03-23 | 2026-03-29 | QA/QC Engineer [32 h] | 86 | MKH2-02-002-SB-3040 | 0 | HAS3-2350 | CON-LEG101-SB-4390 | 0 | D5778 |
| HFR1-05-6330 |  | Pre-Qualification Approval for Fire Protection System | 6d | 2026-01-08 A | 2026-01-14 A | HFR1-05-5110 | 100% | 2026-03-30 | 2026-04-05 | Consultant Staff [7.35 h] | 86 | MKH2-02-002-SB-3050 | 0 | HAS3-3840 | CON-LEG101-SB-4400 | 0 | D5788 |
|  | 7 | **Water Supply System** |  | 2026-01-01 | 2026-01-14 |  |  |  |  |  |  |  |  |  |  |  |  |
| HFR1-05-5150 |  | Pre-Qualification Submittal for Water Supply System | 6d | 2026-01-01 A | 2026-01-07 A | HFR1-05-5460 | 100% | 2026-03-23 | 2026-03-29 | QA/QC Engineer [32 h] | 86 | MKH2-02-002-SB-3040 | 0 | HAS3-2390 | CON-LEG101-SB-4470 | 0 | D3800 |
| HFR1-05-6370 |  | Pre-Qualification Approval for Water Supply System | 6d | 2026-01-08 A | 2026-01-14 A | HFR1-05-5150 | 100% | 2026-03-30 | 2026-04-05 | Consultant Staff [7.35 h] | 86 | MKH2-02-002-SB-3050 | 0 | HAS3-3880 | CON-LEG101-SB-4490 | 0 | D3840 |

| ID | WBS | Activity | Duration | Start | Finish | Predecessors | Complete | Planned start | Planned finish | Resources | Delay Activties | Weight 1 | USERTEXT | Mapping Sheet Activity ID | Total Weight % | Old Activity ID-Alhasa | Old Activity ID |
| --- | --- | --- | --- | --- | --- | --- | --- | --- | --- | --- | --- | --- | --- | --- | --- | --- | --- |
|  | 8 | **Upvc Pipes** |  | 2026-01-01 | 2026-01-14 |  |  |  |  |  |  |  |  |  |  |  |  |
| HFR1-05-5120 |  | Pre-Qualification Submittal for UPVC Pipes | 6d | 2026-01-01 A | 2026-01-07 A | HFR1-05-5460 | 100% | 2026-03-23 | 2026-03-29 | QA/QC Engineer [32 h] | 86 | 0 | MKH2-02-002-SB-3040 | D3800 | 0 | HAS3-2360 | CON-LEG101-SB-4410 |
| HFR1-05-6340 |  | Pre-Qualification Approval for UPVC Pipes | 6d | 2026-01-08 A | 2026-01-14 A | HFR1-05-5120 | 100% | 2026-03-30 | 2026-04-05 | Consultant Staff [7.35 h] | 86 | 0 | MKH2-02-002-SB-3050 | D3840 | 0 | HAS3-3850 | CON-LEG101-SB-4430 |
|  | 9 | **Roof Vent Caps** |  | 2026-01-01 | 2026-01-14 |  |  |  |  |  |  |  |  |  |  |  |  |
| HFR1-05-5160 |  | Pre-Qualification Submittal for Roof Vent Caps | 6d | 2026-01-01 A | 2026-01-07 A | HFR1-05-5460 | 100% | 2026-03-23 | 2026-03-29 | QA/QC Engineer [32 h] | 86 | 0 | MKH2-02-002-SB-3040 | D3820 | 0 | HAS3-2400 | CON-LEG101-SB-4480 |
| HFR1-05-6380 |  | Pre-Qualification Approval for Roof Vent Caps | 6d | 2026-01-08 A | 2026-01-14 A | HFR1-05-5160 | 100% | 2026-03-30 | 2026-04-05 | Consultant Staff [7.35 h] | 86 | 0 | MKH2-02-002-SB-3050 | D3860 | 0 | HAS3-3890 | CON-LEG101-SB-4500 |
|  | 10 | **Floor Drains** |  | 2026-01-01 | 2026-01-14 |  |  |  |  |  |  |  |  |  |  |  |  |
| HFR1-05-5170 |  | Pre-Qualification Submittal for Floor Drains | 6d | 2026-01-01 A | 2026-01-07 A | HFR1-05-5460 | 100% | 2026-03-23 | 2026-03-29 | QA/QC Engineer [32 h] | 86 | 0 | MKH2-02-002-SB-3040 | D5778 | 0 | HAS3-2410 | CON-LEG101-SB-4510 |
| HFR1-05-6390 |  | Pre-Qualification Approval for Floor Drains | 6d | 2026-01-08 A | 2026-01-14 A | HFR1-05-5170 | 100% | 2026-03-30 | 2026-04-05 | Consultant Staff [7.35 h] | 86 | 0 | MKH2-02-002-SB-3050 | D5788 | 0 | HAS3-3900 | CON-LEG101-SB-4520 |
|  | 11 | **Electric Water Heater** |  | 2026-01-01 | 2026-01-14 |  |  |  |  |  |  |  |  |  |  |  |  |
| HFR1-05-5130 |  | Pre-Qualification Submittal for Electric Water Heater | 6d | 2026-01-01 A | 2026-01-07 A | HFR1-05-5460 | 100% | 2026-03-23 | 2026-03-29 | QA/QC Engineer [32 h] | 86 | 0 | MKH2-02-002-SB-3040 | D3820 | 0 | HAS3-2370 | CON-LEG101-SB-4420 |
| HFR1-05-6350 |  | Pre-Qualification Approval for Electric Water Heater | 6d | 2026-01-08 A | 2026-01-14 A | HFR1-05-5130 | 100% | 2026-03-30 | 2026-04-05 | Consultant Staff [7.35 h] | 86 | 0 | MKH2-02-002-SB-3050 | D3860 | 0 | HAS3-3860 | CON-LEG101-SB-4440 |
|  | 12 | **Heating,Ventilation & Air Conditioning** |  | 2026-01-01 | 2026-01-14 |  |  |  |  |  |  |  |  |  |  |  |  |
| HFR1-05-5140 |  | Pre-Qualification Submittal for Heating,Ventilation & Air Conditioning | 6d | 2026-01-01 A | 2026-01-07 A | HFR1-05-5460 | 100% | 2026-03-23 | 2026-03-29 | QA/QC Engineer [32 h] | 86 | 0 | MKH2-02-002-SB-3040 | D5778 | 0 | HAS3-2380 | CON-LEG101-SB-4450 |
| HFR1-05-6360 |  | Pre-Qualification Approval for Heating,Ventilation & Air Conditioning | 6d | 2026-01-08 A | 2026-01-14 A | HFR1-05-5140 | 100% | 2026-03-30 | 2026-04-05 | Consultant Staff [7.35 h] | 86 | 0 | MKH2-02-002-SB-3050 | D5788 | 0 | HAS3-3870 | CON-LEG101-SB-4460 |
|  | 6 | **Electrical - Buildings** |  | 2026-01-01 | 2026-01-14 |  |  |  |  |  |  |  |  |  |  |  |  |
|  | 2 | **Telecome Manholes & Handholes** |  | 2026-01-01 | 2026-01-14 |  |  |  |  |  |  |  |  |  |  |  |  |
| HFR1-05-3310 |  | Pre-Qualification Submittal for Telecome Manholes & handholes | 6d | 2026-01-01 A | 2026-01-07 A | HFR1-05-5460 | 100% | 2026-03-29 | 2026-04-04 | QA/QC Engineer [32 h] | 86 | 0 | MKH2-02-002-SB-3040 | D3820 | 0 | HAS3-1270 | CON-LEG101-SB-2280 |
| HFR1-05-5190 |  | Pre-Qualification Approval for Telecome Manholes & handholes | 6d | 2026-01-08 A | 2026-01-14 A | HFR1-05-3310 | 100% | 2026-04-05 | 2026-04-11 | Consultant Staff [7.35 h] | 86 | 0 | MKH2-02-002-SB-3050 | D3860 | 0 | HAS3-2430 | CON-LEG101-SB-2320 |
|  | 1 | **Electrical manholes** |  | 2026-01-01 | 2026-01-14 |  |  |  |  |  |  |  |  |  |  |  |  |
| HFR1-05-5180 |  | Pre-Qualification Submittal for Manholes | 6d | 2026-01-01 A | 2026-01-07 A | HFR1-05-5460 | 100% | 2026-03-29 | 2026-04-04 | QA/QC Engineer [32 h] | 86 | 0 | MKH2-02-002-SB-3040 | D3800 | 0 | HAS3-2420 | CON-LEG101-SB-2260 |
| HFR1-05-6400 |  | Pre-Qualification Approval for Manholes | 6d | 2026-01-08 A | 2026-01-14 A | HFR1-05-5180 | 100% | 2026-04-05 | 2026-04-11 | Consultant Staff [7.35 h] | 86 | 0 | MKH2-02-002-SB-3050 | D3840 | 0 | HAS3-3910 | CON-LEG101-SB-2300 |
|  | 3 | **Street Lighting Manholes** |  | 2026-01-01 | 2026-01-14 |  |  |  |  |  |  |  |  |  |  |  |  |
| HFR1-05-5200 |  | Pre-Qualification Submittal for Street Lighting Manholes | 6d | 2026-01-01 A | 2026-01-08 A | HFR1-05-5460 | 100% | 2026-03-29 | 2026-04-04 | QA/QC Engineer [32 h] | 86 | 0 | MKH2-02-002-SB-3040 | D5778 | 0 | HAS3-2440 | CON-LEG101-SB-3240 |
| HFR1-05-6410 |  | Pre-Qualification Approval for Street Lighting Manholes | 6d | 2026-01-08 A | 2026-01-14 A | HFR1-05-5200 | 100% | 2026-04-05 | 2026-04-11 | Consultant Staff [7.35 h] | 86 | 0 | MKH2-02-002-SB-3050 | D5788 | 0 | HAS3-3920 | CON-LEG101-SB-3250 |

| ID | WBS | Activity | Duration | Start | Finish | Predecessors | Complete | Planned start | Planned finish | Resources | Delay Activties | Weight 1 | USERTEXT | Mapping Sheet Activity ID | Total Weight % | Old Activity ID-Alhasa | Old Activity ID |
| --- | --- | --- | --- | --- | --- | --- | --- | --- | --- | --- | --- | --- | --- | --- | --- | --- | --- |
|  | 4 | **Duct Banks** |  | 2026-01-01 | 2026-01-14 |  |  |  |  |  |  |  |  |  |  |  |  |
| HFR1-05-5210 |  | Pre-Qualification Submittal for Duct Bank | 6d | 2026-01-01 A | 2026-01-08 A | HFR1-05-5460 | 100% | 2026-03-29 | 2026-04-04 | QA/QC Engineer [32 h] | 86 | 0 | MKH2-02-002-SB-3040 | D3800 | 0 | HAS3-2450 | CON-LEG101-SB-4350 |
| HFR1-05-6420 |  | Pre-Qualification Approval for Duct Bank | 6d | 2026-01-08 A | 2026-01-14 A | HFR1-05-5210 | 100% | 2026-04-05 | 2026-04-11 | Consultant Staff [7.35 h] | 86 | 0 | MKH2-02-002-SB-3050 | D3840 | 0 | HAS3-3930 | CON-LEG101-SB-4370 |
|  | 5 | **Feeder Pillers** |  | 2026-01-01 | 2026-01-14 |  |  |  |  |  |  |  |  |  |  |  |  |
| HFR1-05-5220 |  | Pre-Qualification Submittal for Feeder Pillers | 6d | 2026-01-01 A | 2026-01-08 A | HFR1-05-5460 | 100% | 2026-03-29 | 2026-04-04 | QA/QC Engineer [32 h] | 86 | 0 | MKH2-02-002-SB-3040 | D3820 | 0 | HAS3-2460 | CON-LEG101-SB-4360 |
| HFR1-05-6430 |  | Pre-Qualification Approval for Feeder Pillers | 6d | 2026-01-08 A | 2026-01-14 A | HFR1-05-5220 | 100% | 2026-04-05 | 2026-04-11 | Consultant Staff [7.35 h] | 86 | 0 | MKH2-02-002-SB-3050 | D3860 | 0 | HAS3-3940 | CON-LEG101-SB-4380 |
|  | 6 | **Street Lighting Poles** |  | 2026-01-01 | 2026-01-14 |  |  |  |  |  |  |  |  |  |  |  |  |
| HFR1-05-5230 |  | Pre-Qualification Submittal for Street Lighting Poles | 6d | 2026-01-01 A | 2026-01-07 A | HFR1-05-5460 | 100% | 2026-03-29 | 2026-04-04 | QA/QC Engineer [32 h] | 86 | 0 | MKH2-02-002-SB-3040 | D5778 | 0 | HAS3-2470 | CON-LEG101-SB-4390 |
| HFR1-05-6440 |  | Pre-Qualification Approval for Street Lighting Poles | 6d | 2026-01-08 A | 2026-01-14 A | HFR1-05-5230 | 100% | 2026-04-05 | 2026-04-11 | Consultant Staff [7.35 h] | 86 | 0 | MKH2-02-002-SB-3050 | D5788 | 0 | HAS3-3950 | CON-LEG101-SB-4400 |
|  | 7 | **Street Lighting Luminaires** |  | 2026-01-01 | 2026-01-14 |  |  |  |  |  |  |  |  |  |  |  |  |
| HFR1-05-5270 |  | Pre-Qualification Submittal for Street Lighting Luminaires | 6d | 2026-01-01 A | 2026-01-07 A | HFR1-05-5460 | 100% | 2026-03-29 | 2026-04-04 | QA/QC Engineer [32 h] | 86 | 0 | MKH2-02-002-SB-3040 | D3800 | 0 | HAS3-2510 | CON-LEG101-SB-4470 |
| HFR1-05-6480 |  | Pre-Qualification Approval for Street Lighting Luminaires | 6d | 2026-01-08 A | 2026-01-14 A | HFR1-05-5270 | 100% | 2026-04-05 | 2026-04-11 | Consultant Staff [7.35 h] | 86 | 0 | MKH2-02-002-SB-3050 | D3840 | 0 | HAS3-3990 | CON-LEG101-SB-4490 |
|  | 8 | **Low Voltage Cables** |  | 2026-01-01 | 2026-01-14 |  |  |  |  |  |  |  |  |  |  |  |  |
| HFR1-05-5240 |  | Pre-Qualification Submittal for Low Voltage Cables | 6d | 2026-01-01 A | 2026-01-07 A | HFR1-05-5460 | 100% | 2026-03-23 | 2026-03-29 | QA/QC Engineer [32 h] | 86 | 0 | MKH2-02-002-SB-3040 | D3800 | 0 | HAS3-2480 | CON-LEG101-SB-4410 |
| HFR1-05-6450 |  | Pre-Qualification Approval for Low Voltage Cables | 6d | 2026-01-08 A | 2026-01-14 A | HFR1-05-5240 | 100% | 2026-03-30 | 2026-04-05 | Consultant Staff [7.35 h] | 86 | 0 | MKH2-02-002-SB-3050 | D3840 | 0 | HAS3-3960 | CON-LEG101-SB-4430 |
|  | 9 | **LED Lighting Fixtures** |  | 2026-01-01 | 2026-01-14 |  |  |  |  |  |  |  |  |  |  |  |  |
| HFR1-05-5280 |  | Pre-Qualification Submittal for LED Lighting Fixtures | 6d | 2026-01-01 A | 2026-01-07 A | HFR1-05-5460 | 100% | 2026-03-23 | 2026-03-29 | QA/QC Engineer [32 h] | 86 | 0 | MKH2-02-002-SB-3040 | D3820 | 0 | HAS3-2520 | CON-LEG101-SB-4480 |
| HFR1-05-6490 |  | Pre-Qualification Approval for LED Lighting Fixtures | 6d | 2026-01-08 A | 2026-01-14 A | HFR1-05-5280 | 100% | 2026-03-30 | 2026-04-05 | Consultant Staff [7.35 h] | 86 | 0 | MKH2-02-002-SB-3050 | D3860 | 0 | HAS3-4000 | CON-LEG101-SB-4500 |
|  | 10 | **Power Panel** |  | 2026-01-01 | 2026-01-14 |  |  |  |  |  |  |  |  |  |  |  |  |
| HFR1-05-5290 |  | Pre-Qualification Submittal for Power Panel | 6d | 2026-01-01 A | 2026-01-07 A | HFR1-05-5460 | 100% | 2026-03-23 | 2026-03-29 | QA/QC Engineer [32 h] | 86 | 0 | MKH2-02-002-SB-3040 | D5778 | 0 | HAS3-2530 | CON-LEG101-SB-4510 |
| HFR1-05-6500 |  | Pre-Qualification Approval for Power Panel | 6d | 2026-01-08 A | 2026-01-14 A | HFR1-05-5290 | 100% | 2026-03-30 | 2026-04-05 | Consultant Staff [7.35 h] | 86 | 0 | MKH2-02-002-SB-3050 | D5788 | 0 | HAS3-4010 | CON-LEG101-SB-4520 |
|  | 11 | **Control Panels** |  | 2026-01-01 | 2026-01-14 |  |  |  |  |  |  |  |  |  |  |  |  |
| HFR1-05-5250 |  | Pre-Qualification Submittal for Control Panels | 6d | 2026-01-01 A | 2026-01-07 A | HFR1-05-5460 | 100% | 2026-03-23 | 2026-03-29 | QA/QC Engineer [32 h] | 86 | 0 | MKH2-02-002-SB-3040 | D3820 | 0 | HAS3-2490 | CON-LEG101-SB-4420 |
| HFR1-05-6460 |  | Pre-Qualification Approval for Control Panels | 6d | 2026-01-08 A | 2026-01-14 A | HFR1-05-5250 | 100% | 2026-03-30 | 2026-04-05 | Consultant Staff [7.35 h] | 86 | 0 | MKH2-02-002-SB-3050 | D3860 | 0 | HAS3-3970 | CON-LEG101-SB-4440 |

| ID | WBS | Activity | Duration | Start | Finish | Predecessors | Complete | Planned start | Planned finish | Resources | Delay Activties | USERTEXT | Weight 1 | Old Activity ID | Old Activity ID-Alhasa | Total Weight % | Mapping Sheet Activity ID |
| --- | --- | --- | --- | --- | --- | --- | --- | --- | --- | --- | --- | --- | --- | --- | --- | --- | --- |
|  | 12 | **Isolator & Disconnecting Switches** |  | 2026-01-01 | 2026-01-14 |  |  |  |  |  |  |  |  |  |  |  |  |
| HFR1-05-5260 |  | Pre-Qualification Submittal for Isolator & Disconnecting Switches | 6d | 2026-01-01 A | 2026-01-07 A | HFR1-05-5460 | 100% | 2026-03-23 | 2026-03-29 | QA/QC Engineer [32 h] | 86 | MKH2-02-002-SB-3040 | 0 | CON-LEG101-SB-4450 | HAS3-2500 | 0 | D5778 |
| HFR1-05-6470 |  | Pre-Qualification Approval for Isolator & Disconnecting Switches | 6d | 2026-01-08 A | 2026-01-14 A | HFR1-05-5260 | 100% | 2026-03-30 | 2026-04-05 | Consultant Staff [7.35 h] | 86 | MKH2-02-002-SB-3050 | 0 | CON-LEG101-SB-4460 | HAS3-3980 | 0 | D5788 |
|  | 13 | **Cable Trays** |  | 2026-01-01 | 2026-01-14 |  |  |  |  |  |  |  |  |  |  |  |  |
| HFR1-05-5330 |  | Pre-Qualification Submittal for Cable Trays | 6d | 2026-01-01 A | 2026-01-07 A | HFR1-05-5460 | 100% | 2026-03-23 | 2026-03-29 | QA/QC Engineer [32 h] | 86 | MKH2-02-002-SB-3040 | 0 | CON-LEG101-SB-4590 | HAS3-2570 | 0 | D3800 |
| HFR1-05-6540 |  | Pre-Qualification Approval for Cable Trays | 6d | 2026-01-08 A | 2026-01-14 A | HFR1-05-5330 | 100% | 2026-03-30 | 2026-04-05 | Consultant Staff [7.35 h] | 86 | MKH2-02-002-SB-3050 | 0 | CON-LEG101-SB-4600 | HAS3-4050 | 0 | D3840 |
|  | 14 | **KWHM** |  | 2026-01-01 | 2026-01-14 |  |  |  |  |  |  |  |  |  |  |  |  |
| HFR1-05-5300 |  | Pre-Qualification Submittal for KWHM | 6d | 2026-01-01 A | 2026-01-07 A | HFR1-05-5460 | 100% | 2026-03-23 | 2026-03-29 | QA/QC Engineer [32 h] | 86 | MKH2-02-002-SB-3040 | 0 | CON-LEG101-SB-4530 | HAS3-2540 | 0 | D3800 |
| HFR1-05-6510 |  | Pre-Qualification Approval for KWHM | 6d | 2026-01-08 A | 2026-01-14 A | HFR1-05-5300 | 100% | 2026-03-30 | 2026-04-05 | Consultant Staff [7.35 h] | 86 | MKH2-02-002-SB-3050 | 0 | CON-LEG101-SB-4540 | HAS3-4020 | 0 | D3840 |
|  | 15 | **Safety Disconnect Switches** |  | 2026-01-01 | 2026-01-14 |  |  |  |  |  |  |  |  |  |  |  |  |
| HFR1-05-5310 |  | Pre-Qualification Submittal for Safety Disconnects Switches | 6d | 2026-01-01 A | 2026-01-07 A | HFR1-05-5460 | 100% | 2026-03-23 | 2026-03-29 | QA/QC Engineer [32 h] | 86 | MKH2-02-002-SB-3040 | 0 | CON-LEG101-SB-4550 | HAS3-2550 | 0 | D3820 |
| HFR1-05-6520 |  | Pre-Qualification Approval for Safety Disconnects Switches | 6d | 2026-01-08 A | 2026-01-14 A | HFR1-05-5310 | 100% | 2026-03-30 | 2026-04-05 | Consultant Staff [7.35 h] | 86 | MKH2-02-002-SB-3050 | 0 | CON-LEG101-SB-4560 | HAS3-4030 | 0 | D3860 |
|  | 16 | **Telecom & Data System** |  | 2026-01-01 | 2026-01-14 |  |  |  |  |  |  |  |  |  |  |  |  |
| HFR1-05-5320 |  | Pre-Qualification Submittal for Telecome & Data System | 6d | 2026-01-01 A | 2026-01-07 A | HFR1-05-5460 | 100% | 2026-03-23 | 2026-03-29 | QA/QC Engineer [32 h] | 86 | MKH2-02-002-SB-3040 | 0 | CON-LEG101-SB-4570 | HAS3-2560 | 0 | D3800 |
| HFR1-05-6530 |  | Pre-Qualification Approval for Telecome & Data System | 6d | 2026-01-08 A | 2026-01-14 A | HFR1-05-5320 | 100% | 2026-03-30 | 2026-04-05 | Consultant Staff [7.35 h] | 86 | MKH2-02-002-SB-3050 | 0 | CON-LEG101-SB-4580 | HAS3-4040 | 0 | D3840 |
|  | 17 | **Grounding System** |  | 2026-01-01 | 2026-01-14 |  |  |  |  |  |  |  |  |  |  |  |  |
| HFR1-05-5350 |  | Pre-Qualification Submittal for Grounding System | 6d | 2026-01-01 A | 2026-01-07 A | HFR1-05-5460 | 100% | 2026-03-23 | 2026-03-29 | QA/QC Engineer [32 h] | 86 | MKH2-02-002-SB-3040 | 0 | CON-LEG101-SB-4730 | HAS3-2590 | 0 | D3800 |
| HFR1-05-6590 |  | Pre-Qualification Approval for Grounding System | 6d | 2026-01-08 A | 2026-01-14 A | HFR1-05-5350 | 100% | 2026-03-30 | 2026-04-05 | Consultant Staff [7.35 h] | 86 | MKH2-02-002-SB-3050 | 0 | CON-LEG101-SB-4740 | HAS3-4100 | 0 | D3840 |
|  | 18 | **Lightning Protection System** |  | 2026-01-01 | 2026-01-14 |  |  |  |  |  |  |  |  |  |  |  |  |
| HFR1-05-5340 |  | Pre-Qualification Submittal for Lightning Protection System | 6d | 2026-01-01 A | 2026-01-07 A | HFR1-05-5460 | 100% | 2026-03-23 | 2026-03-29 | QA/QC Engineer [32 h] | 86 | MKH2-02-002-SB-3040 | 0 | CON-LEG101-SB-4710 | HAS3-2580 | 0 | D3800 |
| HFR1-05-6580 |  | Pre-Qualification Approval for Lightning Protection System | 6d | 2026-01-08 A | 2026-01-14 A | HFR1-05-5340 | 100% | 2026-03-30 | 2026-04-05 | Consultant Staff [7.35 h] | 86 | MKH2-02-002-SB-3050 | 0 | CON-LEG101-SB-4720 | HAS3-4090 | 0 | D3840 |
|  | 19 | **Fire Alarm System** |  | 2026-01-01 | 2026-01-14 |  |  |  |  |  |  |  |  |  |  |  |  |
| HFR1-05-6560 |  | Pre-Qualification Submittal for Fire Alarm System | 6d | 2026-01-01 A | 2026-01-07 A | HFR1-05-5460 | 100% | 2026-03-23 | 2026-03-29 | QA/QC Engineer [32 h] | 86 | MKH2-02-002-SB-3040 | 0 | CON-LEG101-SB-4670 | HAS3-4070 | 0 | D3820 |
| HFR1-05-6970 |  | Pre-Qualification Approval for Fire Alarm System | 6d | 2026-01-08 A | 2026-01-14 A | HFR1-05-6560 | 100% | 2026-03-30 | 2026-04-05 | Consultant Staff [7.35 h] | 86 | MKH2-02-002-SB-3050 | 0 | CON-LEG101-SB-4680 | HAS3-4770 | 0 | D3860 |

| ID | WBS | Activity | Duration | Start | Finish | Predecessors | Complete | Planned start | Planned finish | Resources | Cost | Actual cost | Delay Activties | USERTEXT | Weight 1 | Old Activity ID | Old Activity ID-Alhasa | Total Weight % | Mapping Sheet Activity ID |
| --- | --- | --- | --- | --- | --- | --- | --- | --- | --- | --- | --- | --- | --- | --- | --- | --- | --- | --- | --- |
|  | 20 | **Solar Power Plant** |  | 2026-01-01 | 2026-01-14 |  |  |  |  |  |  |  |  |  |  |  |  |  |  |
| HFR1-05-6570 |  | Pre-Qualification Submittal for Solar Power Plant | 6d | 2026-01-01 A | 2026-01-07 A | HFR1-05-5460 | 100% | 2026-03-23 | 2026-03-29 | QA/QC Engineer [32 h] |  |  | 86 | MKH2-02-002-SB-3040 | 0 | CON-LEG101-SB-4690 | HAS3-4080 | 0 | D5778 |
| HFR1-05-6980 |  | Pre-Qualification Approval for Solar Power Plant | 6d | 2026-01-08 A | 2026-01-14 A | HFR1-05-6570 | 100% | 2026-03-30 | 2026-04-05 | Consultant Staff [7.35 h] |  |  | 86 | MKH2-02-002-SB-3050 | 0 | CON-LEG101-SB-4700 | HAS3-4780 | 0 | D5788 |
|  | 21 | **Skylight Fixtures** |  | 2026-01-01 | 2026-01-14 |  |  |  |  |  |  |  |  |  |  |  |  |  |  |
| HFR1-05-6550 |  | Pre-Qualification Submittal for Skylight Fixtures | 6d | 2026-01-01 A | 2026-01-07 A | HFR1-05-5460 | 100% | 2026-03-23 | 2026-03-29 | QA/QC Engineer [32 h] |  |  | 86 | MKH2-02-002-SB-3040 | 0 | CON-LEG101-SB-4650 | HAS3-4060 | 0 | D3800 |
| HFR1-05-6960 |  | Pre-Qualification Approval for Skylight Fixtures | 6d | 2026-01-08 A | 2026-01-14 A | HFR1-05-6550 | 100% | 2026-03-30 | 2026-04-05 | Consultant Staff [7.35 h] |  |  | 86 | MKH2-02-002-SB-3050 | 0 | CON-LEG101-SB-4660 | HAS3-4760 | 0 | D3840 |
|  | 3 | **Material Submittal** |  | 2026-01-08 | 2026-07-20 |  |  |  |  |  |  |  |  |  |  |  |  |  |  |
|  | 1 | **Road Works - Civil** |  | 2026-01-08 | 2026-07-20 |  |  |  |  |  |  |  |  |  |  |  |  |  |  |
|  | 1 | **Steel Reinforcement** |  | 2026-01-08 | 2026-01-21 |  |  |  |  |  |  |  |  |  |  |  |  |  |  |
| HFR1-05-6760 |  | Material Submittal for Steel Reinforcement | 6d | 2026-01-08 A | 2026-01-14 A | HFR1-05-5040 | 100% |  |  | QA/QC Engineer [32 h] |  |  | -1 | MKH2-02-002-SB-1120 | 0 | CON-LEG101-SB-4200 | HAS3-4270 | 0 | D6848 |
| HFR1-05-6990 |  | Material Approval for Steel Reinforcement | 6d | 2026-01-15 A | 2026-01-21 A | HFR1-05-6760, HFR1-05-6810 | 100% |  |  | Consultant Staff [7.35 h]; Eng+Pro+Tc [1] | 7,855 | 7,855 | -1 | MKH2-02-002-SB-1130 | 0 | CON-LEG101-SB-4210 | HAS3-4790 | 0 | D6850 |
|  | 2 | **Ready Mixed Concrete** |  | 2026-01-08 | 2026-01-21 |  |  |  |  |  |  |  |  |  |  |  |  |  |  |
| HFR1-05-7000 |  | Material Submittal for Ready Mixed Concrete | 6d | 2026-01-08 A | 2026-01-14 A | HFR1-05-6270 | 100% |  |  | QA/QC Engineer [32 h] |  |  | -1 | MKH2-02-002-SB-1120 | 0 | CON-LEG101-SB-4220 | HAS3-4800 | 0 | D6868 |
| HFR1-05-7970 |  | Material Approval for Ready Mixed Concrete | 6d | 2026-01-15 A | 2026-01-21 A | HFR1-05-7000 | 100% |  |  | Consultant Staff [7.35 h]; Eng+Pro+Tc [1] | 7,855 | 7,855 | -1 | MKH2-02-002-SB-1130 | 0 | CON-LEG101-SB-4230 | HAS3-6100 | 0 | D6870 |
|  | 3 | **Water Proofing** |  | 2026-01-08 | 2026-01-21 |  |  |  |  |  |  |  |  |  |  |  |  |  |  |
| HFR1-05-7980 |  | Material Submittal for Water Proofing | 6d | 2026-01-08 A | 2026-01-14 A | HFR1-05-6910 | 100% |  |  | QA/QC Engineer [32 h] |  |  | -1 | MKH2-02-002-SB-1120 | 0 | CON-LEG101-SB-4240 | HAS3-6110 | 0 | D6888 |
| HFR1-05-8780 |  | Material Approval for Water Proofing | 6d | 2026-01-15 A | 2026-01-21 A | HFR1-05-7980 | 100% |  |  | Consultant Staff [7.35 h]; Eng+Pro+Tc [1] | 7,855 | 7,855 | -1 | MKH2-02-002-SB-1130 | 0 | CON-LEG101-SB-4250 | HAS3-7100 | 0 | D6890 |
|  | 4 | **Aggregate Base Course** |  | 2026-04-02 | 2026-07-02 |  |  |  |  |  |  |  |  |  |  |  |  |  |  |
| HFR1-05-7960 |  | Material Submittal for Aggregate Base Cource | 6d | 2026-04-02 A | 2026-05-19 A | HFR1-05-6870 | 100% | 2026-01-08 | 2026-01-14 | QA/QC Engineer [32 h] |  |  | -1 | MKH2-02-002-SB-1120 | 0 | CON-LEG101-SB-1000 | HAS3-6090 | 0 | D2000 |
| HFR1-05-8740 |  | Material Approval for Aggregate Base Cource | 6d | 2026-05-24 A | 2026-07-02 A | HFR1-05-7960 | 100% | 2026-01-15 | 2026-01-21 | Consultant Staff [7.35 h]; Eng+Pro+Tc [1] | 7,855 |  | -1 | MKH2-02-002-SB-1130 | 0 | CON-LEG101-SB-1010 | HAS3-7060 | 0 | D2010 |
|  | 5 | **Bituminous Base & Wearing Course** |  | 2026-01-17 | 2026-07-20 |  |  |  |  |  |  |  |  |  |  |  |  |  |  |
| HFR1-05-8930 |  | Material Approval for Bituminous & Wearing Cource | 6d | 2026-01-17 A | 2026-07-20 A | HFR1-05-8750 | 100% | 2026-01-15 | 2026-01-21 | Consultant Staff [7.35 h]; Eng+Pro+Tc [1] | 7,855 |  | -1 | MKH2-02-002-SB-1170 | 0 | CON-LEG101-SB-1050 | HAS3-7450 | 0 | D2050 |
| HFR1-05-8750 |  | Material Submittal for Bituminous Base & Wearing Cource | 6d | 2026-06-30 A | 2026-07-14 A | HFR1-05-7920 | 100% | 2026-01-08 | 2026-01-14 | QA/QC Engineer [32 h] |  |  | -1 | MKH2-02-002-SB-1160 | 0 | CON-LEG101-SB-1040 | HAS3-7070 | 0 | D2040 |
|  | 7 | **Precast Concrete Kerb** |  | 2026-01-08 | 2026-01-21 |  |  |  |  |  |  |  |  |  |  |  |  |  |  |
| HFR1-05-8760 |  | Material Submittal for Precast Concrete Kerb | 6d | 2026-01-08 A | 2026-01-15 A | HFR1-05-7930 | 100% | 2026-01-08 | 2026-01-14 | QA/QC Engineer [32 h] |  |  | -1 | MKH2-02-002-SB-1240 | 0 | CON-LEG101-SB-1080 | HAS3-7080 | 0 | D2120 |
| HFR1-05-8940 |  | Material Approval for Precast Concrete Kerb | 6d | 2026-01-15 A | 2026-01-21 A | HFR1-05-8760 | 100% |  |  | Consultant Staff [7.35 h]; Eng+Pro+Tc [1] | 7,855 | 7,855 | -1 | MKH2-02-002-SB-1250 | 0 | CON-LEG101-SB-1090 | HAS3-7460 | 0 | D2130 |

| ID | WBS | Activity | Duration | Start | Finish | Predecessors | Complete | Planned start | Planned finish | Resources | Cost | Actual cost | Delay Activties | USERTEXT | Weight 1 | Old Activity ID-Alhasa | Old Activity ID | Total Weight % | Mapping Sheet Activity ID |
| --- | --- | --- | --- | --- | --- | --- | --- | --- | --- | --- | --- | --- | --- | --- | --- | --- | --- | --- | --- |
|  | 8 | **Interlocking Block Pavers** |  | 2026-01-08 | 2026-01-21 |  |  |  |  |  |  |  |  |  |  |  |  |  |  |
| HFR1-05-8770 |  | Material Submittal for Interlocking Block Pavers | 6d | 2026-01-08 A | 2026-01-14 A | HFR1-05-7940 | 100% |  |  | QA/QC Engineer [32 h] |  |  | -1 | MKH2-02-002-SB-1280 | 0 | HAS3-7090 | CON-LEG101-SB-1120 | 0 | D2160 |
| HFR1-05-8950 |  | Material Approval for Interlocking Block Pavers | 6d | 2026-01-15 A | 2026-01-21 A | HFR1-05-8770 | 100% |  |  | Consultant Staff [7.35 h]; Eng+Pro+Tc [1] | 7,855 | 7,855 | -1 | MKH2-02-002-SB-1290 | 0 | HAS3-7470 | CON-LEG101-SB-1130 | 0 | D2170 |
|  | 9 | **Pavement Markings** |  | 2026-03-23 | 2026-05-02 |  |  |  |  |  |  |  |  |  |  |  |  |  |  |
| HFR1-05-8960 |  | Material Submittal for Pavement Markings | 5d | 2026-03-23 A | 2026-04-02 A | HFR1-05-8470 | 100% | 2026-01-15 | 2026-01-20 | QA/QC Engineer [32 h] |  |  | -1 | MKH2-02-002-SB-1320 | 0 | HAS3-7480 | CON-LEG101-SB-1160 | 0 | D2200 |
| HFR1-05-9070 |  | Material Approval for Pavement Markings | 6d | 2026-04-08 A | 2026-05-02 A | HFR1-05-8960 | 100% | 2026-01-21 | 2026-01-27 | Consultant Staff [7.35 h]; Eng+Pro+Tc [1] | 7,855 | 7,855 | -1 | MKH2-02-002-SB-1330 | 0 | HAS3-8030 | CON-LEG101-SB-1170 | 0 | D2210 |
|  | 10 | **Traffic Signs** |  | 2026-03-02 | 2026-04-15 |  |  |  |  |  |  |  |  |  |  |  |  |  |  |
| HFR1-05-9080 |  | Material Submittal for Traffic Signs | 5d | 2026-03-02 A | 2026-03-24 A | HFR1-05-8920 | 100% | 2026-01-08 | 2026-01-13 | QA/QC Engineer [32 h] |  |  | -1 | MKH2-02-002-SB-1360 | 0 | HAS3-8040 | CON-LEG101-SB-1200 | 0 | D2240 |
| HFR1-05-9180 |  | Material Approval for Traffic Signs | 6d | 2026-03-30 A | 2026-04-15 A | HFR1-05-9080 | 100% | 2026-01-14 | 2026-01-20 | Consultant Staff [7.35 h]; Eng+Pro+Tc [1] | 7,855 | 7,855 | -1 | MKH2-02-002-SB-1370 | 0 | HAS3-8630 | CON-LEG101-SB-1210 | 0 | D2250 |
|  | 2 | **Potable Water Network** |  | 2026-01-08 | 2026-01-28 |  |  |  |  |  |  |  |  |  |  |  |  |  |  |
|  | 1 | **HDPE Pipes** |  | 2026-01-08 | 2026-01-21 |  |  |  |  |  |  |  |  |  |  |  |  |  |  |
| HFR1-05-5640 |  | Material Submittal for HDPE Pipes | 6d | 2026-01-08 A | 2026-01-14 A | HFR1-05-5600, HFR1-05-4910 | 100% |  |  | QA/QC Engineer [32 h] |  |  | -1 | MKH2-02-002-SB-1120 | 0 | HAS3-2880 | CON-LEG101-SB-4200 | 0 | D6848 |
| HFR1-05-6820 |  | Material Approval for HDPE Pipes | 6d | 2026-01-15 A | 2026-01-21 A | HFR1-05-5640 | 100% |  |  | Consultant Staff [7.35 h]; Eng+Pro+Tc [1] | 7,855 | 7,855 | -1 | MKH2-02-002-SB-1130 | 0 | HAS3-4330 | CON-LEG101-SB-4210 | 0 | D6850 |
|  | 2 | **Valves** |  | 2026-01-15 | 2026-01-28 |  |  |  |  |  |  |  |  |  |  |  |  |  |  |
| HFR1-05-6830 |  | Material Submittal for Valves | 6d | 2026-01-15 A | 2026-01-21 A | HFR1-05-6800, HFR1-05-5640, HFR1-05-5610 | 100% |  |  | QA/QC Engineer [32 h] |  |  | -1 | MKH2-02-002-SB-1120 | 0 | HAS3-4340 | CON-LEG101-SB-4220 | 0 | D6868 |
| HFR1-05-7480 |  | Material Approval for Valves | 6d | 2026-01-22 A | 2026-01-28 A | HFR1-05-6830 | 100% |  |  | Consultant Staff [7.35 h]; Eng+Pro+Tc [1] | 7,855 | 7,855 | -1 | MKH2-02-002-SB-1130 | 0 | HAS3-5280 | CON-LEG101-SB-4230 | 0 | D6870 |
|  | 3 | **Sewer Water Network** |  | 2026-01-08 | 2026-01-27 |  |  |  |  |  |  |  |  |  |  |  |  |  |  |
|  | 1 | **GRP Pipes** |  | 2026-01-08 | 2026-01-21 |  |  |  |  |  |  |  |  |  |  |  |  |  |  |
| HFR1-05-6840 |  | Material Submittal for GRP Pipes | 6d | 2026-01-08 A | 2026-01-14 A | HFR1-05-5620 | 100% |  |  | QA/QC Engineer [32 h] |  |  | -1 | MKH2-02-002-SB-1120 | 0 | HAS3-4350 | CON-LEG101-SB-4200 | 0 | D6848 |
| HFR1-05-7490 |  | Material Approval for GRP Pipes | 6d | 2026-01-15 A | 2026-01-21 A | HFR1-05-6840 | 100% |  |  | Consultant Staff [7.35 h]; Eng+Pro+Tc [1] | 7,855 | 7,855 | -1 | MKH2-02-002-SB-1130 | 0 | HAS3-5290 | CON-LEG101-SB-4210 | 0 | D6850 |
|  | 2 | **Manholes** |  | 2026-01-15 | 2026-01-27 |  |  |  |  |  |  |  |  |  |  |  |  |  |  |
| HFR1-05-7500 |  | Material Submittal for Manholes | 5d | 2026-01-15 A | 2026-01-20 A | HFR1-05-6840, HFR1-05-6810 | 100% |  |  | QA/QC Engineer [32 h] |  |  | -1 | MKH2-02-002-SB-1120 | 0 | HAS3-5300 | CON-LEG101-SB-4220 | 0 | D6868 |
| HFR1-05-8460 |  | Material Approval for Manholes | 6d | 2026-01-21 A | 2026-01-27 A | HFR1-05-7500 | 100% |  |  | Consultant Staff [7.35 h]; Eng+Pro+Tc [1] | 7,855 | 7,855 | -1 | MKH2-02-002-SB-1130 | 0 | HAS3-6590 | CON-LEG101-SB-4230 | 0 | D6870 |
|  | 7 | **Civil Works - Buildings** |  | 2026-01-08 | 2026-05-19 |  |  |  |  |  |  |  |  |  |  |  |  |  |  |
|  | 2 | **Steel Reinforcement** |  | 2026-01-08 | 2026-01-21 |  |  |  |  |  |  |  |  |  |  |  |  |  |  |
| HFR1-05-6790 |  | Material Submittal for Steel Reinforcement | 6d | 2026-01-08 A | 2026-01-14 A | HFR1-05-5370 | 100% |  |  | QA/QC Engineer [32 h] |  |  | -1 | MKH2-02-002-SB-3040 | 0 | HAS3-4300 | CON-LEG101-SB-2280 | 0 | D3820 |
| HFR1-05-7320 |  | Material Approval for Steel Reinforcement | 6d | 2026-01-15 A | 2026-01-21 A | HFR1-05-6790 | 100% |  |  | Consultant Staff [7.35 h]; Eng+Pro+Tc [1] | 7,855 | 7,855 | -1 | MKH2-02-002-SB-3050 | 0 | HAS3-5120 | CON-LEG101-SB-2320 | 0 | D3860 |

| ID | WBS | Activity | Duration | Start | Finish | Predecessors | Complete | Planned start | Planned finish | Resources | Cost | Actual cost | Delay Activties | Total Weight % | Mapping Sheet Activity ID | Old Activity ID | Old Activity ID-Alhasa | USERTEXT | Weight 1 |
| --- | --- | --- | --- | --- | --- | --- | --- | --- | --- | --- | --- | --- | --- | --- | --- | --- | --- | --- | --- |
|  | 1 | **Ready Mix Concrete** |  | 2026-01-15 | 2026-01-27 |  |  |  |  |  |  |  |  |  |  |  |  |  |  |
| HFR1-05-7310 |  | Material Submittal for Ready Mix Concrete | 5d | 2026-01-15 A | 2026-01-20 A | HFR1-05-6790, HFR1-05-6600 | 100% |  |  | QA/QC Engineer [32 h] |  |  | -1 | 0 | D3800 | CON-LEG101-SB-2260 | HAS3-5110 | MKH2-02-002-SB-3040 | 0 |
| HFR1-05-8300 |  | Material Approval for Ready Mix Concrete | 6d | 2026-01-21 A | 2026-01-27 A | HFR1-05-7310 | 100% |  |  | Consultant Staff [7.35 h]; Eng+Pro+Tc [1] | 7,855 | 7,855 | -1 | 0 | D3840 | CON-LEG101-SB-2300 | HAS3-6430 | MKH2-02-002-SB-3050 | 0 |
|  | 3 | **Masonry** |  | 2026-01-15 | 2026-01-27 |  |  |  |  |  |  |  |  |  |  |  |  |  |  |
| HFR1-05-7330 |  | Material Submittal for Masonry | 5d | 2026-01-15 A | 2026-01-20 A | HFR1-05-6790, HFR1-05-6610 | 100% |  |  | QA/QC Engineer [32 h] |  |  | -1 | 0 | D5778 | CON-LEG101-SB-3240 | HAS3-5130 | MKH2-02-002-SB-3040 | 0 |
| HFR1-05-8310 |  | Material Approval for Masonry | 6d | 2026-01-21 A | 2026-01-27 A | HFR1-05-7330 | 100% |  |  | Consultant Staff [7.35 h]; Eng+Pro+Tc [1] | 7,855 | 7,855 | -1 | 0 | D5788 | CON-LEG101-SB-3250 | HAS3-6440 | MKH2-02-002-SB-3050 | 0 |
|  | 4 | **Steel Structure** |  | 2026-01-15 | 2026-01-27 |  |  |  |  |  |  |  |  |  |  |  |  |  |  |
| HFR1-05-7340 |  | Material Submittal for Steel Structure | 5d | 2026-01-15 A | 2026-01-20 A | HFR1-05-6790, HFR1-05-6620 | 100% |  |  | QA/QC Engineer [32 h] |  |  | -1 | 0 | D3800 | CON-LEG101-SB-4350 | HAS3-5140 | MKH2-02-002-SB-3040 | 0 |
| HFR1-05-8320 |  | Material Approval for Steel Structure | 6d | 2026-01-21 A | 2026-01-27 A | HFR1-05-7340 | 100% |  |  | Consultant Staff [7.35 h]; Eng+Pro+Tc [1] | 7,855 | 7,855 | -1 | 0 | D3840 | CON-LEG101-SB-4370 | HAS3-6450 | MKH2-02-002-SB-3050 | 0 |
|  | 5 | **Thermal & Moisture Protection** |  | 2026-01-15 | 2026-01-27 |  |  |  |  |  |  |  |  |  |  |  |  |  |  |
| HFR1-05-7350 |  | Material Submittal for Thermal & Moisture Protection | 5d | 2026-01-15 A | 2026-01-20 A | HFR1-05-6790, HFR1-05-6630 | 100% |  |  | QA/QC Engineer [32 h] |  |  | -1 | 0 | D3820 | CON-LEG101-SB-4360 | HAS3-5150 | MKH2-02-002-SB-3040 | 0 |
| HFR1-05-8330 |  | Material Approval for Thermal & Moisture Protection | 6d | 2026-01-21 A | 2026-01-27 A | HFR1-05-7350 | 100% |  |  | Consultant Staff [7.35 h]; Eng+Pro+Tc [1] | 7,855 | 7,855 | -1 | 0 | D3860 | CON-LEG101-SB-4380 | HAS3-6460 | MKH2-02-002-SB-3050 | 0 |
|  | 6 | **Water Proofing System** |  | 2026-01-15 | 2026-01-27 |  |  |  |  |  |  |  |  |  |  |  |  |  |  |
| HFR1-05-7360 |  | Material Submittal for Water Proofing System | 5d | 2026-01-15 A | 2026-01-20 A | HFR1-05-6790, HFR1-05-6640 | 100% |  |  | QA/QC Engineer [32 h] |  |  | -1 | 0 | D5778 | CON-LEG101-SB-4390 | HAS3-5160 | MKH2-02-002-SB-3040 | 0 |
| HFR1-05-8340 |  | Material Approval for Water Proofing System | 6d | 2026-01-21 A | 2026-01-27 A | HFR1-05-7360 | 100% |  |  | Consultant Staff [7.35 h]; Eng+Pro+Tc [1] | 7,855 | 7,855 | -1 | 0 | D5788 | CON-LEG101-SB-4400 | HAS3-6470 | MKH2-02-002-SB-3050 | 0 |
|  | 7 | **Doors & Windows** |  | 2026-01-15 | 2026-01-28 |  |  |  |  |  |  |  |  |  |  |  |  |  |  |
| HFR1-05-7400 |  | Material Submittal for Doors & Windows | 5d | 2026-01-15 A | 2026-01-20 A | HFR1-05-6790, HFR1-05-6680 | 100% |  |  | QA/QC Engineer [32 h] |  |  | -1 | 0 | D3800 | CON-LEG101-SB-4470 | HAS3-5200 | MKH2-02-002-SB-3040 | 0 |
| HFR1-05-8380 |  | Material Approval for Doors & Windows | 6d | 2026-01-21 A | 2026-01-28 A | HFR1-05-7400 | 100% | 2026-01-21 | 2026-01-27 | Consultant Staff [7.35 h]; Eng+Pro+Tc [1] | 7,855 | 7,855 | -1 | 0 | D3840 | CON-LEG101-SB-4490 | HAS3-6510 | MKH2-02-002-SB-3050 | 0 |
|  | 8 | **Floor Finishes** |  | 2026-01-15 | 2026-01-27 |  |  |  |  |  |  |  |  |  |  |  |  |  |  |
| HFR1-05-7370 |  | Material Submittal for Floor Finishes | 5d | 2026-01-15 A | 2026-01-20 A | HFR1-05-6790, HFR1-05-6650 | 100% |  |  | QA/QC Engineer [32 h] |  |  | -1 | 0 | D3800 | CON-LEG101-SB-4410 | HAS3-5170 | MKH2-02-002-SB-3040 | 0 |
| HFR1-05-8350 |  | Material Approval for Floor Finishes | 6d | 2026-01-21 A | 2026-01-27 A | HFR1-05-7370 | 100% |  |  | Consultant Staff [7.35 h]; Eng+Pro+Tc [1] | 7,855 | 7,855 | -1 | 0 | D3840 | CON-LEG101-SB-4430 | HAS3-6480 | MKH2-02-002-SB-3050 | 0 |
|  | 9 | **Wall Finishes** |  | 2026-01-15 | 2026-01-27 |  |  |  |  |  |  |  |  |  |  |  |  |  |  |
| HFR1-05-7410 |  | Material Submittal for Wall Finishes | 5d | 2026-01-15 A | 2026-01-20 A | HFR1-05-6790, HFR1-05-6690 | 100% |  |  | QA/QC Engineer [32 h] |  |  | -1 | 0 | D3820 | CON-LEG101-SB-4480 | HAS3-5210 | MKH2-02-002-SB-3040 | 0 |
| HFR1-05-8390 |  | Material Approval for Wall Finishes | 6d | 2026-01-21 A | 2026-01-27 A | HFR1-05-7410 | 100% |  |  | Consultant Staff [7.35 h]; Eng+Pro+Tc [1] | 7,855 | 7,855 | -1 | 0 | D3860 | CON-LEG101-SB-4500 | HAS3-6520 | MKH2-02-002-SB-3050 | 0 |

| ID | WBS | Activity | Duration | Start | Finish | Predecessors | Complete | Planned start | Planned finish | Resources | Cost | Actual cost | Delay Activties | Mapping Sheet Activity ID | Total Weight % | Old Activity ID | Old Activity ID-Alhasa | Weight 1 | USERTEXT |
| --- | --- | --- | --- | --- | --- | --- | --- | --- | --- | --- | --- | --- | --- | --- | --- | --- | --- | --- | --- |
|  | 10 | **Ceiling Finishes** |  | 2026-01-15 | 2026-01-27 |  |  |  |  |  |  |  |  |  |  |  |  |  |  |
| HFR1-05-7420 |  | Material Submittal for Ceiling Finishes | 5d | 2026-01-15 A | 2026-01-20 A | HFR1-05-6790, HFR1-05-6700 | 100% |  |  | QA/QC Engineer [32 h] |  |  | -1 | D5778 | 0 | CON-LEG101-SB-4510 | HAS3-5220 | 0 | MKH2-02-002-SB-3040 |
| HFR1-05-8400 |  | Material Approval for Ceiling Finishes | 6d | 2026-01-21 A | 2026-01-27 A | HFR1-05-7420 | 100% |  |  | Consultant Staff [7.35 h]; Eng+Pro+Tc [1] | 7,855 | 7,855 | -1 | D5788 | 0 | CON-LEG101-SB-4520 | HAS3-6530 | 0 | MKH2-02-002-SB-3050 |
|  | 11 | **Fittings** |  | 2026-01-15 | 2026-01-27 |  |  |  |  |  |  |  |  |  |  |  |  |  |  |
| HFR1-05-7380 |  | Material Submittal for Fittings | 5d | 2026-01-15 A | 2026-01-20 A | HFR1-05-6790, HFR1-05-6660 | 100% |  |  | QA/QC Engineer [32 h] |  |  | -1 | D3820 | 0 | CON-LEG101-SB-4420 | HAS3-5180 | 0 | MKH2-02-002-SB-3040 |
| HFR1-05-8360 |  | Material Approval for Fittings | 6d | 2026-01-21 A | 2026-01-27 A | HFR1-05-7380 | 100% |  |  | Consultant Staff [7.35 h]; Eng+Pro+Tc [1] | 7,855 | 7,855 | -1 | D3860 | 0 | CON-LEG101-SB-4440 | HAS3-6490 | 0 | MKH2-02-002-SB-3050 |
|  | 12 | **Signages** |  | 2026-01-15 | 2026-01-27 |  |  |  |  |  |  |  |  |  |  |  |  |  |  |
| HFR1-05-7390 |  | Material Submittal for Signages | 5d | 2026-01-15 A | 2026-01-20 A | HFR1-05-6790, HFR1-05-6670 | 100% | 2026-04-14 | 2026-04-19 | QA/QC Engineer [32 h] |  |  | 86 | D5778 | 0 | CON-LEG101-SB-4450 | HAS3-5190 | 0 | MKH2-02-002-SB-3040 |
| HFR1-05-8370 |  | Material Approval for Signages | 6d | 2026-01-21 A | 2026-01-27 A | HFR1-05-7390 | 100% | 2026-04-20 | 2026-04-26 | Consultant Staff [7.35 h]; Eng+Pro+Tc [1] | 7,855 | 7,855 | 86 | D5788 | 0 | CON-LEG101-SB-4460 | HAS3-6500 | 0 | MKH2-02-002-SB-3050 |
|  | 13 | **Logo** |  | 2026-01-15 | 2026-01-27 |  |  |  |  |  |  |  |  |  |  |  |  |  |  |
| HFR1-05-7460 |  | Material Submittal for Logo | 5d | 2026-01-15 A | 2026-01-20 A | HFR1-05-6790, HFR1-05-6740 | 100% | 2026-03-23 | 2026-03-28 | QA/QC Engineer [32 h] |  |  | 86 | D3800 | 0 | CON-LEG101-SB-4590 | HAS3-5260 | 0 | MKH2-02-002-SB-3040 |
| HFR1-05-8440 |  | Material Approval for Logo | 6d | 2026-01-21 A | 2026-01-27 A | HFR1-05-7460 | 100% | 2026-03-29 | 2026-04-04 | Consultant Staff [7.35 h]; Eng+Pro+Tc [1] | 7,855 | 7,855 | 86 | D3840 | 0 | CON-LEG101-SB-4600 | HAS3-6570 | 0 | MKH2-02-002-SB-3050 |
|  | 14 | **Pre Engineered Structures** |  | 2026-01-15 | 2026-01-27 |  |  |  |  |  |  |  |  |  |  |  |  |  |  |
| HFR1-05-7430 |  | Material Submittal for Pre Engineered Structure | 5d | 2026-01-15 A | 2026-01-20 A | HFR1-05-6790, HFR1-05-6710 | 100% |  |  | QA/QC Engineer [32 h] |  |  | -1 | D3800 | 0 | CON-LEG101-SB-4530 | HAS3-5230 | 0 | MKH2-02-002-SB-3040 |
| HFR1-05-8410 |  | Material Approval for Pre Engineered Structure | 6d | 2026-01-21 A | 2026-01-27 A | HFR1-05-7430 | 100% |  |  | Consultant Staff [7.35 h]; Eng+Pro+Tc [1] | 7,855 | 7,855 | -1 | D3840 | 0 | CON-LEG101-SB-4540 | HAS3-6540 | 0 | MKH2-02-002-SB-3050 |
|  | 15 | **Steel Fence** |  | 2026-04-29 | 2026-05-19 |  |  |  |  |  |  |  |  |  |  |  |  |  |  |
| HFR1-05-7440 |  | Material Submittal for Steel Fences | 5d | 2026-04-29 A | 2026-05-02 A | HFR1-05-6790, HFR1-05-6720 | 100% | 2026-01-15 | 2026-01-20 | QA/QC Engineer [32 h] |  |  | -1 | D3820 | 0 | CON-LEG101-SB-4550 | HAS3-5240 | 0 | MKH2-02-002-SB-3040 |
| HFR1-05-8420 |  | Material Approval for Steel Fences | 6d | 2026-05-06 A | 2026-05-19 A | HFR1-05-7440 | 100% | 2026-01-21 | 2026-01-27 | Consultant Staff [7.35 h]; Eng+Pro+Tc [1] | 7,855 | 7,855 | -1 | D3860 | 0 | CON-LEG101-SB-4560 | HAS3-6550 | 0 | MKH2-02-002-SB-3050 |
|  | 16 | **Gates** |  | 2026-01-15 | 2026-01-27 |  |  |  |  |  |  |  |  |  |  |  |  |  |  |
| HFR1-05-7450 |  | Material Submittal for Gates | 5d | 2026-01-15 A | 2026-01-20 A | HFR1-05-6790, HFR1-05-6730 | 100% |  |  | QA/QC Engineer [32 h] |  |  | -1 | D3800 | 0 | CON-LEG101-SB-4570 | HAS3-5250 | 0 | MKH2-02-002-SB-3040 |
| HFR1-05-8430 |  | Material Approval for Gates | 6d | 2026-01-21 A | 2026-01-27 A | HFR1-05-7450 | 100% |  |  | Consultant Staff [7.35 h]; Eng+Pro+Tc [1] | 7,855 | 7,855 | -1 | D3840 | 0 | CON-LEG101-SB-4580 | HAS3-6560 | 0 | MKH2-02-002-SB-3050 |
|  | 17 | **Pump Shed** |  | 2026-01-15 | 2026-01-27 |  |  |  |  |  |  |  |  |  |  |  |  |  |  |
| HFR1-05-7470 |  | Material Submittal for Pump Shed | 5d | 2026-01-15 A | 2026-01-20 A | HFR1-05-6790, HFR1-05-6750 | 100% |  |  | QA/QC Engineer [32 h] |  |  | -1 | D3800 | 0 | CON-LEG101-SB-4730 | HAS3-5270 | 0 | MKH2-02-002-SB-3040 |
| HFR1-05-8450 |  | Material Approval for Pump Shed | 6d | 2026-01-21 A | 2026-01-27 A | HFR1-05-7470 | 100% |  |  | Consultant Staff [7.35 h]; Eng+Pro+Tc [1] | 7,855 | 7,855 | -1 | D3840 | 0 | CON-LEG101-SB-4740 | HAS3-6580 | 0 | MKH2-02-002-SB-3050 |

| ID | WBS | Activity | Duration | Start | Finish | Predecessors | Complete | Planned start | Planned finish | Resources | Cost | Actual cost | Delay Activties | USERTEXT | Weight 1 | Old Activity ID-Alhasa | Old Activity ID | Total Weight % | Mapping Sheet Activity ID |
| --- | --- | --- | --- | --- | --- | --- | --- | --- | --- | --- | --- | --- | --- | --- | --- | --- | --- | --- | --- |
|  | 5 | **Mechanical - Buildings** |  | 2026-01-15 | 2026-03-27 |  |  |  |  |  |  |  |  |  |  |  |  |  |  |
|  | 2 | **Fire Fighting System** |  | 2026-01-15 | 2026-03-27 |  |  |  |  |  |  |  |  |  |  |  |  |  |  |
| HFR1-05-6770 |  | Material Submittal for Fire Fighting System | 5d | 2026-01-15 A | 2026-03-24 A | HFR1-05-5070 | 100% | 2026-01-15 | 2026-01-20 | QA/QC Engineer [32 h] |  |  | -1 | MKH2-02-002-SB-3040 | 0 | HAS3-4280 | CON-LEG101-SB-2280 | 0 | D3820 |
| HFR1-05-7020 |  | Material Approval for Fire Fighting System | 6d | 2026-01-24 A | 2026-03-27 A | HFR1-05-6770 | 100% | 2026-01-21 | 2026-01-27 | Consultant Staff [7.35 h]; Eng+Pro+Tc [1] | 7,855 | 7,855 | -1 | MKH2-02-002-SB-3050 | 0 | HAS3-4820 | CON-LEG101-SB-2320 | 0 | D3860 |
|  | 1 | **HDPE Pipes** |  | 2026-01-15 | 2026-01-27 |  |  |  |  |  |  |  |  |  |  |  |  |  |  |
| HFR1-05-7010 |  | Material Submittal for HDPE Pipes | 5d | 2026-01-15 A | 2026-01-20 A | HFR1-05-6290 | 100% |  |  | QA/QC Engineer [32 h] |  |  | -1 | MKH2-02-002-SB-3040 | 0 | HAS3-4810 | CON-LEG101-SB-2260 | 0 | D3800 |
| HFR1-05-7990 |  | Material Approval for HDPE Pipes | 6d | 2026-01-21 A | 2026-01-27 A | HFR1-05-7010 | 100% |  |  | Consultant Staff [7.35 h]; Eng+Pro+Tc [1] | 7,855 | 7,855 | -1 | MKH2-02-002-SB-3050 | 0 | HAS3-6120 | CON-LEG101-SB-2300 | 0 | D3840 |
|  | 3 | **Valves** |  | 2026-01-15 | 2026-01-27 |  |  |  |  |  |  |  |  |  |  |  |  |  |  |
| HFR1-05-7030 |  | Material Submittal for Valves | 5d | 2026-01-15 A | 2026-01-20 A | HFR1-05-6300 | 100% |  |  | QA/QC Engineer [32 h] |  |  | -1 | MKH2-02-002-SB-3040 | 0 | HAS3-4830 | CON-LEG101-SB-3240 | 0 | D5778 |
| HFR1-05-8000 |  | Material Approval for Valves | 6d | 2026-01-21 A | 2026-01-27 A | HFR1-05-7030 | 100% |  |  | Consultant Staff [7.35 h]; Eng+Pro+Tc [1] | 7,855 | 7,855 | -1 | MKH2-02-002-SB-3050 | 0 | HAS3-6130 | CON-LEG101-SB-3250 | 0 | D5788 |
|  | 4 | **GRP pipes** |  | 2026-01-15 | 2026-01-27 |  |  |  |  |  |  |  |  |  |  |  |  |  |  |
| HFR1-05-7040 |  | Material Submittal for GRP Pipes | 5d | 2026-01-15 A | 2026-01-20 A | HFR1-05-6310 | 100% |  |  | QA/QC Engineer [32 h] |  |  | -1 | MKH2-02-002-SB-3040 | 0 | HAS3-4840 | CON-LEG101-SB-4350 | 0 | D3800 |
| HFR1-05-8010 |  | Material Approval for GRP Pipes | 6d | 2026-01-21 A | 2026-01-27 A | HFR1-05-7040 | 100% |  |  | Consultant Staff [7.35 h]; Eng+Pro+Tc [1] | 7,855 | 7,855 | -1 | MKH2-02-002-SB-3050 | 0 | HAS3-6140 | CON-LEG101-SB-4370 | 0 | D3840 |
|  | 5 | **Manholes** |  | 2026-01-15 | 2026-01-27 |  |  |  |  |  |  |  |  |  |  |  |  |  |  |
| HFR1-05-7050 |  | Material Submittal for Manholes | 5d | 2026-01-15 A | 2026-01-20 A | HFR1-05-6320 | 100% |  |  | QA/QC Engineer [32 h] |  |  | -1 | MKH2-02-002-SB-3040 | 0 | HAS3-4850 | CON-LEG101-SB-4360 | 0 | D3820 |
| HFR1-05-8020 |  | Material Approval for Manholes | 6d | 2026-01-21 A | 2026-01-27 A | HFR1-05-7050 | 100% |  |  | Consultant Staff [7.35 h]; Eng+Pro+Tc [1] | 7,855 | 7,855 | -1 | MKH2-02-002-SB-3050 | 0 | HAS3-6150 | CON-LEG101-SB-4380 | 0 | D3860 |
|  | 6 | **Fire Protectional System** |  | 2026-01-15 | 2026-01-27 |  |  |  |  |  |  |  |  |  |  |  |  |  |  |
| HFR1-05-7060 |  | Material Submittal for Fire Protection System | 5d | 2026-01-15 A | 2026-01-20 A | HFR1-05-6330 | 100% |  |  | QA/QC Engineer [32 h] |  |  | -1 | MKH2-02-002-SB-3040 | 0 | HAS3-4860 | CON-LEG101-SB-4390 | 0 | D5778 |
| HFR1-05-8030 |  | Material Approval for Fire Protection System | 6d | 2026-01-21 A | 2026-01-27 A | HFR1-05-7060 | 100% |  |  | Consultant Staff [7.35 h]; Eng+Pro+Tc [1] | 7,855 | 7,855 | -1 | MKH2-02-002-SB-3050 | 0 | HAS3-6160 | CON-LEG101-SB-4400 | 0 | D5788 |
|  | 7 | **Water Supply System** |  | 2026-01-15 | 2026-01-27 |  |  |  |  |  |  |  |  |  |  |  |  |  |  |
| HFR1-05-7100 |  | Material Submittal for Water Supply System | 5d | 2026-01-15 A | 2026-01-20 A | HFR1-05-6370 | 100% |  |  | QA/QC Engineer [32 h] |  |  | -1 | MKH2-02-002-SB-3040 | 0 | HAS3-4900 | CON-LEG101-SB-4470 | 0 | D3800 |
| HFR1-05-8070 |  | Material Approval for Water Supply System | 6d | 2026-01-21 A | 2026-01-27 A | HFR1-05-7100 | 100% |  |  | Consultant Staff [7.35 h]; Eng+Pro+Tc [1] | 7,855 | 7,855 | -1 | MKH2-02-002-SB-3050 | 0 | HAS3-6200 | CON-LEG101-SB-4490 | 0 | D3840 |
|  | 8 | **Upvc Pipes** |  | 2026-01-15 | 2026-01-27 |  |  |  |  |  |  |  |  |  |  |  |  |  |  |
| HFR1-05-7070 |  | Material Submittal for UPVC Pipes | 5d | 2026-01-15 A | 2026-01-20 A | HFR1-05-6340 | 100% |  |  | QA/QC Engineer [32 h] |  |  | -1 | MKH2-02-002-SB-3040 | 0 | HAS3-4870 | CON-LEG101-SB-4410 | 0 | D3800 |
| HFR1-05-8040 |  | Material Approval for UPVC Pipes | 6d | 2026-01-21 A | 2026-01-27 A | HFR1-05-7070 | 100% |  |  | Consultant Staff [7.35 h]; Eng+Pro+Tc [1] | 7,855 | 7,855 | -1 | MKH2-02-002-SB-3050 | 0 | HAS3-6170 | CON-LEG101-SB-4430 | 0 | D3840 |

| ID | WBS | Activity | Duration | Start | Finish | Predecessors | Complete | Planned start | Planned finish | Resources | Cost | Actual cost | Delay Activties | Weight 1 | USERTEXT | Old Activity ID-Alhasa | Old Activity ID | Mapping Sheet Activity ID | Total Weight % |
| --- | --- | --- | --- | --- | --- | --- | --- | --- | --- | --- | --- | --- | --- | --- | --- | --- | --- | --- | --- |
|  | 9 | **Roof Vent Caps** |  | 2026-01-15 | 2026-01-27 |  |  |  |  |  |  |  |  |  |  |  |  |  |  |
| HFR1-05-7110 |  | Material Submittal for Roof Vent Caps | 5d | 2026-01-15 A | 2026-01-20 A | HFR1-05-6380 | 100% |  |  | QA/QC Engineer [32 h] |  |  | -1 | 0 | MKH2-02-002-SB-3040 | HAS3-4910 | CON-LEG101-SB-4480 | D3820 | 0 |
| HFR1-05-8080 |  | Material Approval for Roof Vent Caps | 6d | 2026-01-21 A | 2026-01-27 A | HFR1-05-7110 | 100% |  |  | Consultant Staff [7.35 h]; Eng+Pro+Tc [1] | 7,855 | 7,855 | -1 | 0 | MKH2-02-002-SB-3050 | HAS3-6210 | CON-LEG101-SB-4500 | D3860 | 0 |
|  | 10 | **Floor Drains** |  | 2026-01-15 | 2026-01-27 |  |  |  |  |  |  |  |  |  |  |  |  |  |  |
| HFR1-05-7120 |  | Material Submittal for Floor Drains | 5d | 2026-01-15 A | 2026-01-20 A | HFR1-05-6390 | 100% |  |  | QA/QC Engineer [32 h] |  |  | -1 | 0 | MKH2-02-002-SB-3040 | HAS3-4920 | CON-LEG101-SB-4510 | D5778 | 0 |
| HFR1-05-8090 |  | Material Approval for Floor Drains | 6d | 2026-01-21 A | 2026-01-27 A | HFR1-05-7120 | 100% |  |  | Consultant Staff [7.35 h]; Eng+Pro+Tc [1] | 7,855 | 7,855 | -1 | 0 | MKH2-02-002-SB-3050 | HAS3-6220 | CON-LEG101-SB-4520 | D5788 | 0 |
|  | 11 | **Electric Water Heater** |  | 2026-01-15 | 2026-01-27 |  |  |  |  |  |  |  |  |  |  |  |  |  |  |
| HFR1-05-7080 |  | Material Submittal for Electric Water Heater | 5d | 2026-01-15 A | 2026-01-20 A | HFR1-05-6350 | 100% |  |  | QA/QC Engineer [32 h] |  |  | -1 | 0 | MKH2-02-002-SB-3040 | HAS3-4880 | CON-LEG101-SB-4420 | D3820 | 0 |
| HFR1-05-8050 |  | Material Approval for Electric Water Heater | 6d | 2026-01-21 A | 2026-01-27 A | HFR1-05-7080 | 100% |  |  | Consultant Staff [7.35 h]; Eng+Pro+Tc [1] | 7,855 | 7,855 | -1 | 0 | MKH2-02-002-SB-3050 | HAS3-6180 | CON-LEG101-SB-4440 | D3860 | 0 |
|  | 12 | **Heating,Ventilation & Air Conditioning** |  | 2026-03-04 | 2026-03-18 |  |  |  |  |  |  |  |  |  |  |  |  |  |  |
| HFR1-05-7090 |  | Material Submittal for Heating,Ventilation & Air Conditioning | 5d | 2026-03-04 A | 2026-03-18 A | HFR1-05-6360 | 100% | 2026-01-15 | 2026-01-20 | QA/QC Engineer [32 h] |  |  | -1 | 0 | MKH2-02-002-SB-3040 | HAS3-4890 | CON-LEG101-SB-4450 | D5778 | 0 |
| HFR1-05-8060 |  | Material Approval for Heating,Ventilation & Air Conditioning | 6d | 2026-03-04 A | 2026-03-18 A | HFR1-05-7090 | 100% | 2026-01-21 | 2026-01-27 | Consultant Staff [7.35 h]; Eng+Pro+Tc [1] | 7,855 | 7,855 | -1 | 0 | MKH2-02-002-SB-3050 | HAS3-6190 | CON-LEG101-SB-4460 | D5788 | 0 |
|  | 6 | **Electrical - Buildings** |  | 2026-01-15 | 2026-03-20 |  |  |  |  |  |  |  |  |  |  |  |  |  |  |
|  | 2 | **Telecome Manholes & Handholes** |  | 2026-01-15 | 2026-01-27 |  |  |  |  |  |  |  |  |  |  |  |  |  |  |
| HFR1-05-6780 |  | Material Submittal for Telecome Manholes & handholes | 5d | 2026-01-15 A | 2026-01-20 A | HFR1-05-5190 | 100% |  |  | QA/QC Engineer [32 h] |  |  | -1 | 0 | MKH2-02-002-SB-3040 | HAS3-4290 | CON-LEG101-SB-2280 | D3820 | 0 |
| HFR1-05-7140 |  | Material Approval for Telecome Manholes & handholes | 6d | 2026-01-21 A | 2026-01-27 A | HFR1-05-6780 | 100% |  |  | Consultant Staff [7.35 h]; Eng+Pro+Tc [1] | 7,855 | 7,855 | -1 | 0 | MKH2-02-002-SB-3050 | HAS3-4940 | CON-LEG101-SB-2320 | D3860 | 0 |
|  | 1 | **Electrical manholes** |  | 2026-01-15 | 2026-01-27 |  |  |  |  |  |  |  |  |  |  |  |  |  |  |
| HFR1-05-7130 |  | Material Submittal for Manholes | 5d | 2026-01-15 A | 2026-01-20 A | HFR1-05-6400 | 100% |  |  | QA/QC Engineer [32 h] |  |  | -1 | 0 | MKH2-02-002-SB-3040 | HAS3-4930 | CON-LEG101-SB-2260 | D3800 | 0 |
| HFR1-05-8100 |  | Material Approval for Manholes | 6d | 2026-01-21 A | 2026-01-27 A | HFR1-05-7130 | 100% |  |  | Consultant Staff [7.35 h]; Eng+Pro+Tc [1] | 7,855 | 7,855 | -1 | 0 | MKH2-02-002-SB-3050 | HAS3-6230 | CON-LEG101-SB-2300 | D3840 | 0 |
|  | 3 | **Street Lighting Manholes** |  | 2026-01-15 | 2026-01-27 |  |  |  |  |  |  |  |  |  |  |  |  |  |  |
| HFR1-05-7150 |  | Material Submittal for Street Lighting Manholes | 5d | 2026-01-15 A | 2026-01-20 A | HFR1-05-6410 | 100% |  |  | QA/QC Engineer [32 h] |  |  | -1 | 0 | MKH2-02-002-SB-3040 | HAS3-4950 | CON-LEG101-SB-3240 | D5778 | 0 |
| HFR1-05-8110 |  | Material Approval for Street Lighting Manholes | 6d | 2026-01-21 A | 2026-01-27 A | HFR1-05-7150 | 100% |  |  | Consultant Staff [7.35 h]; Eng+Pro+Tc [1] | 7,855 | 7,855 | -1 | 0 | MKH2-02-002-SB-3050 | HAS3-6240 | CON-LEG101-SB-3250 | D5788 | 0 |
|  | 4 | **Duct Banks** |  | 2026-01-15 | 2026-01-27 |  |  |  |  |  |  |  |  |  |  |  |  |  |  |
| HFR1-05-7160 |  | Material Submittal for Duct Bank | 5d | 2026-01-15 A | 2026-01-20 A | HFR1-05-6420 | 100% |  |  | QA/QC Engineer [32 h] |  |  | -1 | 0 | MKH2-02-002-SB-3040 | HAS3-4960 | CON-LEG101-SB-4350 | D3800 | 0 |
| HFR1-05-8120 |  | Material Approval for Duct Bank | 6d | 2026-01-21 A | 2026-01-27 A | HFR1-05-7160 | 100% |  |  | Consultant Staff [7.35 h]; Eng+Pro+Tc [1] | 7,855 | 7,855 | -1 | 0 | MKH2-02-002-SB-3050 | HAS3-6250 | CON-LEG101-SB-4370 | D3840 | 0 |

| ID | WBS | Activity | Duration | Start | Finish | Predecessors | Complete | Resources | Cost | Actual cost | Delay Activties | Weight 1 | USERTEXT | Old Activity ID-Alhasa | Old Activity ID | Mapping Sheet Activity ID | Total Weight % |
| --- | --- | --- | --- | --- | --- | --- | --- | --- | --- | --- | --- | --- | --- | --- | --- | --- | --- |
|  | 5 | **Feeder Pillers** |  | 2026-01-15 | 2026-01-27 |  |  |  |  |  |  |  |  |  |  |  |  |
| HFR1-05-7170 |  | Material Submittal for Feeder Pillers | 5d | 2026-01-15 A | 2026-01-20 A | HFR1-05-6430 | 100% | QA/QC Engineer [32 h] |  |  | -1 | 0 | MKH2-02-002-SB-3040 | HAS3-4970 | CON-LEG101-SB-4360 | D3820 | 0 |
| HFR1-05-8130 |  | Material Approval for Feeder Pillers | 6d | 2026-01-21 A | 2026-01-27 A | HFR1-05-7170 | 100% | Consultant Staff [7.35 h]; Eng+Pro+Tc [1] | 7,855 | 7,855 | -1 | 0 | MKH2-02-002-SB-3050 | HAS3-6260 | CON-LEG101-SB-4380 | D3860 | 0 |
|  | 6 | **Street Lighting Poles** |  | 2026-01-15 | 2026-01-27 |  |  |  |  |  |  |  |  |  |  |  |  |
| HFR1-05-7180 |  | Material Submittal for Street Lighting Poles | 5d | 2026-01-15 A | 2026-01-20 A | HFR1-05-6440 | 100% | QA/QC Engineer [32 h] |  |  | -1 | 0 | MKH2-02-002-SB-3040 | HAS3-4980 | CON-LEG101-SB-4390 | D5778 | 0 |
| HFR1-05-8140 |  | Material Approval for Street Lighting Poles | 6d | 2026-01-21 A | 2026-01-27 A | HFR1-05-7180 | 100% | Consultant Staff [7.35 h]; Eng+Pro+Tc [1] | 7,855 | 7,855 | -1 | 0 | MKH2-02-002-SB-3050 | HAS3-6270 | CON-LEG101-SB-4400 | D5788 | 0 |
|  | 7 | **Street Lighting Luminaires** |  | 2026-01-15 | 2026-01-27 |  |  |  |  |  |  |  |  |  |  |  |  |
| HFR1-05-7220 |  | Material Submittal for Street Lighting Luminaires | 5d | 2026-01-15 A | 2026-01-20 A | HFR1-05-6480 | 100% | QA/QC Engineer [32 h] |  |  | -1 | 0 | MKH2-02-002-SB-3040 | HAS3-5020 | CON-LEG101-SB-4470 | D3800 | 0 |
| HFR1-05-8180 |  | Material Approval for Street Lighting Luminaires | 6d | 2026-01-21 A | 2026-01-27 A | HFR1-05-7220 | 100% | Consultant Staff [7.35 h]; Eng+Pro+Tc [1] | 7,855 | 7,855 | -1 | 0 | MKH2-02-002-SB-3050 | HAS3-6310 | CON-LEG101-SB-4490 | D3840 | 0 |
|  | 8 | **Low Voltage Cables** |  | 2026-01-15 | 2026-01-27 |  |  |  |  |  |  |  |  |  |  |  |  |
| HFR1-05-7190 |  | Material Submittal for Low Voltage Cables | 5d | 2026-01-15 A | 2026-01-20 A | HFR1-05-6450 | 100% | QA/QC Engineer [32 h] |  |  | -1 | 0 | MKH2-02-002-SB-3040 | HAS3-4990 | CON-LEG101-SB-4410 | D3800 | 0 |
| HFR1-05-8150 |  | Material Approval for Low Voltage Cables | 6d | 2026-01-21 A | 2026-01-27 A | HFR1-05-7190 | 100% | Consultant Staff [7.35 h]; Eng+Pro+Tc [1] | 7,855 | 7,855 | -1 | 0 | MKH2-02-002-SB-3050 | HAS3-6280 | CON-LEG101-SB-4430 | D3840 | 0 |
|  | 9 | **LED Lighting Fixtures** |  | 2026-01-15 | 2026-01-27 |  |  |  |  |  |  |  |  |  |  |  |  |
| HFR1-05-7230 |  | Material Submittal for LED Lighting Fixtures | 5d | 2026-01-15 A | 2026-01-20 A | HFR1-05-6490 | 100% | QA/QC Engineer [32 h] |  |  | -1 | 0 | MKH2-02-002-SB-3040 | HAS3-5030 | CON-LEG101-SB-4480 | D3820 | 0 |
| HFR1-05-8190 |  | Material Approval for LED Lighting Fixtures | 6d | 2026-01-21 A | 2026-01-27 A | HFR1-05-7230 | 100% | Consultant Staff [7.35 h]; Eng+Pro+Tc [1] | 7,855 | 7,855 | -1 | 0 | MKH2-02-002-SB-3050 | HAS3-6320 | CON-LEG101-SB-4500 | D3860 | 0 |
|  | 10 | **Power Panel** |  | 2026-01-15 | 2026-01-27 |  |  |  |  |  |  |  |  |  |  |  |  |
| HFR1-05-7240 |  | Material Submittal for Power Panel | 5d | 2026-01-15 A | 2026-01-20 A | HFR1-05-6500 | 100% | QA/QC Engineer [32 h] |  |  | -1 | 0 | MKH2-02-002-SB-3040 | HAS3-5040 | CON-LEG101-SB-4510 | D5778 | 0 |
| HFR1-05-8200 |  | Material Approval for Power Panel | 6d | 2026-01-21 A | 2026-01-27 A | HFR1-05-7240 | 100% | Consultant Staff [7.35 h]; Eng+Pro+Tc [1] | 7,855 | 7,855 | -1 | 0 | MKH2-02-002-SB-3050 | HAS3-6330 | CON-LEG101-SB-4520 | D5788 | 0 |
|  | 11 | **Control Panels** |  | 2026-01-15 | 2026-01-27 |  |  |  |  |  |  |  |  |  |  |  |  |
| HFR1-05-7200 |  | Material Submittal for Control Panels | 5d | 2026-01-15 A | 2026-01-20 A | HFR1-05-6460 | 100% | QA/QC Engineer [32 h] |  |  | -1 | 0 | MKH2-02-002-SB-3040 | HAS3-5000 | CON-LEG101-SB-4420 | D3820 | 0 |
| HFR1-05-8160 |  | Material Approval for Control Panels | 6d | 2026-01-21 A | 2026-01-27 A | HFR1-05-7200 | 100% | Consultant Staff [7.35 h]; Eng+Pro+Tc [1] | 7,855 | 7,855 | -1 | 0 | MKH2-02-002-SB-3050 | HAS3-6290 | CON-LEG101-SB-4440 | D3860 | 0 |
|  | 12 | **Isolator & Disconnecting Switches** |  | 2026-01-15 | 2026-01-27 |  |  |  |  |  |  |  |  |  |  |  |  |
| HFR1-05-7210 |  | Material Submittal for Isolator & Disconnecting Switches | 5d | 2026-01-15 A | 2026-01-20 A | HFR1-05-6470 | 100% | QA/QC Engineer [32 h] |  |  | -1 | 0 | MKH2-02-002-SB-3040 | HAS3-5010 | CON-LEG101-SB-4450 | D5778 | 0 |
| HFR1-05-8170 |  | Material Approval for Isolator & Disconnecting Switches | 6d | 2026-01-21 A | 2026-01-27 A | HFR1-05-7210 | 100% | Consultant Staff [7.35 h]; Eng+Pro+Tc [1] | 7,855 | 7,855 | -1 | 0 | MKH2-02-002-SB-3050 | HAS3-6300 | CON-LEG101-SB-4460 | D5788 | 0 |

| ID | WBS | Activity | Duration | Start | Finish | Predecessors | Complete | Planned start | Planned finish | Resources | Cost | Actual cost | Delay Activties | Total Weight % | Mapping Sheet Activity ID | Old Activity ID | Old Activity ID-Alhasa | USERTEXT | Weight 1 |
| --- | --- | --- | --- | --- | --- | --- | --- | --- | --- | --- | --- | --- | --- | --- | --- | --- | --- | --- | --- |
|  | 13 | **Cable Trays** |  | 2026-01-15 | 2026-03-20 |  |  |  |  |  |  |  |  |  |  |  |  |  |  |
| HFR1-05-7280 |  | Material Submittal for Cable Trays | 5d | 2026-01-15 A | 2026-03-20 A | HFR1-05-6540 | 100% | 2026-01-15 | 2026-01-20 | QA/QC Engineer [32 h] |  |  | -1 | 0 | D3800 | CON-LEG101-SB-4590 | HAS3-5080 | MKH2-02-002-SB-3040 | 0 |
| HFR1-05-8240 |  | Material Approval for Cable Trays | 6d | 2026-01-21 A | 2026-01-27 A | HFR1-05-7280 | 100% |  |  | Consultant Staff [7.35 h]; Eng+Pro+Tc [1] | 7,855 | 7,855 | -1 | 0 | D3840 | CON-LEG101-SB-4600 | HAS3-6370 | MKH2-02-002-SB-3050 | 0 |
|  | 14 | **KWHM** |  | 2026-01-15 | 2026-01-27 |  |  |  |  |  |  |  |  |  |  |  |  |  |  |
| HFR1-05-7250 |  | Material Submittal for KWHM | 5d | 2026-01-15 A | 2026-01-20 A | HFR1-05-6510 | 100% |  |  | QA/QC Engineer [32 h] |  |  | -1 | 0 | D3800 | CON-LEG101-SB-4530 | HAS3-5050 | MKH2-02-002-SB-3040 | 0 |
| HFR1-05-8210 |  | Material Approval for KWHM | 6d | 2026-01-21 A | 2026-01-27 A | HFR1-05-7250 | 100% |  |  | Consultant Staff [7.35 h]; Eng+Pro+Tc [1] | 7,855 | 7,855 | -1 | 0 | D3840 | CON-LEG101-SB-4540 | HAS3-6340 | MKH2-02-002-SB-3050 | 0 |
|  | 15 | **Safety Disconnect Switches** |  | 2026-01-15 | 2026-01-27 |  |  |  |  |  |  |  |  |  |  |  |  |  |  |
| HFR1-05-7260 |  | Material Submittal for Safety Disconnects Switches | 5d | 2026-01-15 A | 2026-01-20 A | HFR1-05-6520 | 100% |  |  | QA/QC Engineer [32 h] |  |  | -1 | 0 | D3820 | CON-LEG101-SB-4550 | HAS3-5060 | MKH2-02-002-SB-3040 | 0 |
| HFR1-05-8220 |  | Material Approval for Safety Disconnects Switches | 6d | 2026-01-21 A | 2026-01-27 A | HFR1-05-7260 | 100% |  |  | Consultant Staff [7.35 h]; Eng+Pro+Tc [1] | 7,855 | 7,855 | -1 | 0 | D3860 | CON-LEG101-SB-4560 | HAS3-6350 | MKH2-02-002-SB-3050 | 0 |
|  | 16 | **Telecom & Data System** |  | 2026-01-15 | 2026-01-27 |  |  |  |  |  |  |  |  |  |  |  |  |  |  |
| HFR1-05-7270 |  | Material Submittal for Telecome & Data System | 5d | 2026-01-15 A | 2026-01-20 A | HFR1-05-6530 | 100% |  |  | QA/QC Engineer [32 h] |  |  | -1 | 0 | D3800 | CON-LEG101-SB-4570 | HAS3-5070 | MKH2-02-002-SB-3040 | 0 |
| HFR1-05-8230 |  | Material Approval for Telecome & Data System | 6d | 2026-01-21 A | 2026-01-27 A | HFR1-05-7270 | 100% |  |  | Consultant Staff [7.35 h]; Eng+Pro+Tc [1] | 7,855 | 7,855 | -1 | 0 | D3840 | CON-LEG101-SB-4580 | HAS3-6360 | MKH2-02-002-SB-3050 | 0 |
|  | 17 | **Grounding System** |  | 2026-01-15 | 2026-01-21 |  |  |  |  |  |  |  |  |  |  |  |  |  |  |
| HFR1-05-7300 |  | Material Submittal for Grounding System | 5d | 2026-01-15 A | 2026-01-20 A | HFR1-05-6590 | 100% |  |  | QA/QC Engineer [32 h] |  |  | -1 | 0 | D3800 | CON-LEG101-SB-4730 | HAS3-5100 | MKH2-02-002-SB-3040 | 0 |
| HFR1-05-8290 |  | Material Approval for Grounding System | 6d | 2026-01-21 A | 2026-01-21 A | HFR1-05-7300 | 100% | 2026-01-21 | 2026-01-27 | Consultant Staff [7.35 h]; Eng+Pro+Tc [1] | 7,855 | 7,855 | -8 | 0 | D3840 | CON-LEG101-SB-4740 | HAS3-6420 | MKH2-02-002-SB-3050 | 0 |
|  | 18 | **Lightning Protection System** |  | 2026-01-15 | 2026-01-27 |  |  |  |  |  |  |  |  |  |  |  |  |  |  |
| HFR1-05-7290 |  | Material Submittal for Lightning Protection System | 5d | 2026-01-15 A | 2026-01-20 A | HFR1-05-6580 | 100% |  |  | QA/QC Engineer [32 h] |  |  | -1 | 0 | D3800 | CON-LEG101-SB-4710 | HAS3-5090 | MKH2-02-002-SB-3040 | 0 |
| HFR1-05-8280 |  | Material Approval for Lightning Protection System | 6d | 2026-01-21 A | 2026-01-27 A | HFR1-05-7290 | 100% |  |  | Consultant Staff [7.35 h]; Eng+Pro+Tc [1] | 7,855 | 7,855 | -1 | 0 | D3840 | CON-LEG101-SB-4720 | HAS3-6410 | MKH2-02-002-SB-3050 | 0 |
|  | 19 | **Fire Alarm System** |  | 2026-01-15 | 2026-01-27 |  |  |  |  |  |  |  |  |  |  |  |  |  |  |
| HFR1-05-8260 |  | Material Submittal for Fire Alarm System | 5d | 2026-01-15 A | 2026-01-20 A | HFR1-05-6970 | 100% |  |  | QA/QC Engineer [32 h] |  |  | -1 | 0 | D3820 | CON-LEG101-SB-4670 | HAS3-6390 | MKH2-02-002-SB-3040 | 0 |
| HFR1-05-8800 |  | Material Approval for Fire Alarm System | 6d | 2026-01-21 A | 2026-01-27 A | HFR1-05-8260 | 100% |  |  | Consultant Staff [7.35 h]; Eng+Pro+Tc [1] | 7,855 | 7,855 | -1 | 0 | D3860 | CON-LEG101-SB-4680 | HAS3-7120 | MKH2-02-002-SB-3050 | 0 |
|  | 20 | **Solar Power Plant** |  | 2026-01-15 | 2026-01-27 |  |  |  |  |  |  |  |  |  |  |  |  |  |  |
| HFR1-05-8270 |  | Material Submittal for Solar Power Plant | 5d | 2026-01-15 A | 2026-01-20 A | HFR1-05-6980 | 100% |  |  | QA/QC Engineer [32 h] |  |  | -1 | 0 | D5778 | CON-LEG101-SB-4690 | HAS3-6400 | MKH2-02-002-SB-3040 | 0 |
| HFR1-05-8810 |  | Material Approval for Solar Power Plant | 6d | 2026-01-21 A | 2026-01-27 A | HFR1-05-8270 | 100% |  |  | Consultant Staff [7.35 h]; Eng+Pro+Tc [1] | 7,855 | 7,855 | -1 | 0 | D5788 | CON-LEG101-SB-4700 | HAS3-7130 | MKH2-02-002-SB-3050 | 0 |

| ID | WBS | Activity | Duration | Start | Finish | Predecessors | Complete | Remaining | Planned start | Planned finish | Resources | Cost | Actual cost | Delay Activties | Total Weight % | Mapping Sheet Activity ID | Old Activity ID | Old Activity ID-Alhasa | USERTEXT | Weight 1 |
| --- | --- | --- | --- | --- | --- | --- | --- | --- | --- | --- | --- | --- | --- | --- | --- | --- | --- | --- | --- | --- |
|  | 21 | **Skylight Fixtures** |  | 2026-01-15 | 2026-01-27 |  |  |  |  |  |  |  |  |  |  |  |  |  |  |  |
| HFR1-05-8250 |  | Material Submittal for Skylight Fixtures | 5d | 2026-01-15 A | 2026-01-20 A | HFR1-05-6960 | 100% |  |  |  | QA/QC Engineer [32 h] |  |  | -1 | 0 | D3800 | CON-LEG101-SB-4650 | HAS3-6380 | MKH2-02-002-SB-3040 | 0 |
| HFR1-05-8790 |  | Material Approval for Skylight Fixtures | 6d | 2026-01-21 A | 2026-01-27 A | HFR1-05-8250 | 100% |  |  |  | Consultant Staff [7.35 h]; Eng+Pro+Tc [1] | 7,855 | 7,855 | -1 | 0 | D3840 | CON-LEG101-SB-4660 | HAS3-7110 | MKH2-02-002-SB-3050 | 0 |
|  | 5 | **Procurement** |  | 2026-01-15 | 2026-11-08 |  |  |  |  |  |  |  |  |  |  |  |  |  |  |  |
|  | 2 | **Short Lead Item** |  | 2026-01-15 | 2026-11-08 |  |  |  |  |  |  |  |  |  |  |  |  |  |  |  |
|  | 1 | **Road Works - Civil** |  | 2026-01-15 | 2026-11-02 |  |  |  |  |  |  |  |  |  |  |  |  |  |  |  |
|  | 1 | **Steel Reinforcement** |  | 2026-01-15 | 2026-02-11 |  |  |  |  |  |  |  |  |  |  |  |  |  |  |  |
| HFR1-05-3350 |  | PO for Steel Reinforcement | 6d | 2026-01-15 A | 2026-01-21 A | HFR1-05-6990 SS | 100% |  |  |  | Purchaser [8 h] |  |  | -1 | 0 | E1450 | CON-LEG101-PR-1390 | HAS3-1290 | MKH2-02-002-PR-1930 | 0 |
| HFR1-05-5530 |  | Material Fabrication for Steel Reinforcement | 6d | 2026-01-22 A | 2026-01-28 A | HFR1-05-3350 | 100% |  |  |  | QA/QC Engineer [160 h] |  |  | -1 | 0 | E1460 | CON-LEG101-PR-1400 | HAS3-2770 | MKH2-02-002-PR-1940 | 0 |
| HFR1-05-8860 |  | Material Delivery for Steel Reinforcement | 12d | 2026-01-29 A | 2026-02-11 A | HFR1-05-5530 | 100% |  |  |  | Purchaser [180 h]; PRO-SHORT-ROAD [1] | 20,149 | 20,149 | -1 |  |  |  | HAS3-7280 |  |  |
|  | 2 | **Ready Mixed Concrete** |  | 2026-01-15 | 2026-04-01 |  |  |  |  |  |  |  |  |  |  |  |  |  |  |  |
| HFR1-05-3360 |  | PO for Ready Mixed Concrete | 8d | 2026-01-15 A | 2026-01-24 A | HFR1-05-7970 SS | 100% |  |  |  | Purchaser [16 h] |  |  | -1 | 0 | E1480 | CON-LEG101-PR-1420 | HAS3-1300 | MKH2-02-002-PR-1960 | 0 |
| HFR1-05-5700 |  | Material Delivery for Ready Mixed Concrete | 10d | 2026-01-25 A | 2026-04-01 A | HFR1-05-3360 | 100% |  | 2026-01-25 | 2026-02-04 | QA/QC Engineer [24 h]; PRO-SHORT-ROAD [1] | 20,149 | 20,149 | -1 | 0 | E1490 | CON-LEG101-PR-1430 | HAS3-2940 | MKH2-02-002-PR-1970 | 0 |
|  | 3 | **Water Proofing** |  | 2026-01-22 | 2026-03-23 |  |  |  |  |  |  |  |  |  |  |  |  |  |  |  |
| HFR1-05-3400 |  | PO for Water Proofing | 6d | 2026-01-22 A | 2026-01-28 A | HFR1-05-8780 | 100% |  |  |  | Purchaser [8 h] |  |  | -1 | 0 | E1500 | CON-LEG101-PR-1440 | HAS3-1310 | MKH2-02-002-PR-1980 | 0 |
| HFR1-05-5540 |  | Material Fabrication for Water Proofing | 25d | 2026-01-29 A | 2026-02-28 A | HFR1-05-3400, HFR1-05-8200, HFR1-05-8170, HFR1-05-8410, HFR1-05-8380 | 100% |  |  |  | QA/QC Engineer [200 h] |  |  | -1 | 0 | E1510 | CON-LEG101-PR-1450 | HAS3-2780 | MKH2-02-002-PR-1990 | 0 |
| HFR1-05-8990 |  | Material Delivery for Water Proofing | 25d | 2026-02-18 A | 2026-03-23 A | HFR1-05-5540 | 100% |  | 2026-03-01 | 2026-04-01 | QA/QC Engineer [24 h]; PRO-SHORT-ROAD [1] | 20,149 | 20,149 | -11 | 0 | E1520 | CON-LEG101-PR-1460 | HAS3-7850 | MKH2-02-002-PR-2000 | 0 |
|  | 4 | **Aggregate Base Course** |  | 2026-05-31 | 2026-09-17 |  |  |  |  |  |  |  |  |  |  |  |  |  |  |  |
| HFR1-05-3430 |  | PO for Aggregate Base Course | 6d | 2026-05-31 A | 2026-06-04 A | HFR1-05-8740 | 100% |  | 2026-06-14 | 2026-06-20 | Purchaser [40 h] |  |  | 56 | 0 | E1530 | CON-LEG101-PR-1470 | HAS3-1320 | MKH2-02-002-PR-2010 | 0 |
| HFR1-05-5570 |  | Material Delivery for Aggregate Base Course | 12d | 2026-09-07 A | 2026-09-17 | HFR1-05-3430 | 90% | 1.2d | 2026-09-09 | 2026-09-22 | Purchaser [200 h]; PRO-SHORT-ROAD [1] | 20,149 | 18,134.1 | 56 |  |  |  | HAS3-2810 |  |  |
|  | 5 | **Bituminous Base & Wearing Course** |  | 2026-05-31 | 2026-09-10 |  |  |  |  |  |  |  |  |  |  |  |  |  |  |  |
| HFR1-05-3460 |  | PO for Bituminous Base & Wearing Cource | 6d | 2026-05-31 A | 2026-06-04 A | HFR1-05-8930 | 100% |  | 2026-06-15 | 2026-06-21 | Purchaser [32 h] |  |  | 56 | 0 | E1560 | CON-LEG101-PR-1500 | HAS3-1330 | MKH2-02-002-PR-2040 | 0 |
| HFR1-05-5550 |  | Material Delivery to the Site | 37d | 2026-09-07 A | 2026-09-10 A | HFR1-05-3460 FS+70d | 100% |  | 2026-09-09 | 2026-10-22 | QA/QC Engineer [224 h]; PRO-SHORT-ROAD [1] | 20,149 | 20,149 | 56 | 0 | E1570 | CON-LEG101-PR-1510 | HAS3-2790 | MKH2-02-002-PR-2050 | 0 |
|  | 7 | **Precast Concrete Kerb** |  | 2026-01-22 | 2026-07-12 |  |  |  |  |  |  |  |  |  |  |  |  |  |  |  |
| HFR1-05-3500 |  | PO for Precast Concrete Kerb | 6d | 2026-01-22 A | 2026-01-28 A | HFR1-05-8940 | 100% |  | 2026-04-04 | 2026-04-09 | Purchaser [40 h] |  |  | -1 | 0 | E1600 | CON-LEG101-PR-1520 | HAS3-1340 | MKH2-02-002-PR-2080 | 0 |
| HFR1-05-5560 |  | Material Fabrication for Precast Concrete Kerb | 38d | 2026-04-22 A | 2026-05-12 A | HFR1-05-3500 FS+40d | 100% |  | 2026-05-31 | 2026-07-13 | QA/QC Engineer [144 h] |  |  | -84 | 0 | E1610 | CON-LEG101-PR-1530 | HAS3-2800 | MKH2-02-002-PR-2090 | 0 |
| HFR1-05-9110 |  | Material Delivery for Precast Concrete Kerb | 35d | 2026-07-06 A | 2026-07-12 A | HFR1-05-5560 | 100% |  | 2026-07-14 | 2026-08-23 | QA/QC Engineer [32 h]; PRO-SHORT-ROAD [1] | 20,149 |  | -111 | 0 | E1620 | CON-LEG101-PR-1540 | HAS3-8210 | MKH2-02-002-PR-2100 | 0 |

| ID | WBS | Activity | Duration | Start | Finish | Predecessors | Complete | Remaining | Planned start | Planned finish | Resources | Cost | Actual cost | Delay Activties | Total Weight % | Mapping Sheet Activity ID | Old Activity ID-Alhasa | Old Activity ID | USERTEXT | Weight 1 |
| --- | --- | --- | --- | --- | --- | --- | --- | --- | --- | --- | --- | --- | --- | --- | --- | --- | --- | --- | --- | --- |
|  | 8 | **Interlocking Block Pavers** |  | 2026-07-07 | 2026-08-06 |  |  |  |  |  |  |  |  |  |  |  |  |  |  |  |
| HFR1-05-3550 |  | PO for Interlocking Block Pavers | 4d | 2026-07-07 A | 2026-07-11 A | HFR1-05-8950 FS+35d, HFR1-05-5700, HFR1-05-8860 | 100% |  | 2026-08-01 | 2026-08-04 | Purchaser [24 h] |  |  | 12 | 0 | E1630 | HAS3-1350 | CON-LEG101-PR-1550 | MKH2-02-002-PR-2110 | 0 |
| HFR1-05-5000 |  | Material Fabrication for Interlocking Block Pavers | 37d | 2026-07-12 A | 2026-07-15 A | HFR1-05-3550 FS+20d | 100% |  | 2026-08-29 | 2026-10-11 | QA/QC Engineer [128 h] |  |  | 12 | 0 | E1640 | HAS3-1990 | CON-LEG101-PR-1560 | MKH2-02-002-PR-2120 | 0 |
| HFR1-05-9060 |  | Material Delivery for Interlocking Block Pavers | 35d | 2026-07-16 A | 2026-08-06 A | HFR1-05-5000 | 100% |  | 2026-10-12 | 2026-11-21 | QA/QC Engineer [32 h]; PRO-SHORT-ROAD [1] | 20,149 | 20,149 | 12 | 0 | E1650 | HAS3-7980 | CON-LEG101-PR-1570 | MKH2-02-002-PR-2130 | 0 |
|  | 9 | **Pavement Markings** |  | 2026-08-11 | 2026-11-02 |  |  |  |  |  |  |  |  |  |  |  |  |  |  |  |
| HFR1-05-3570 |  | PO for Pavement Markings | 5d | 2026-08-11 A | 2026-08-17 A | HFR1-05-9070 FS+35d | 100% |  | 2026-09-06 | 2026-09-10 | Purchaser [32 h] |  |  | 6 | 0 | E1660 | HAS3-1360 | CON-LEG101-PR-1580 | MKH2-02-002-PR-2140 | 0 |
| HFR1-05-5020 |  | Material Fabrication for Pavement Markings | 40d | 2026-08-19 A | 2026-08-24 A | HFR1-05-8990, HFR1-05-3570 FS+15d | 100% |  | 2026-09-30 | 2026-11-15 | QA/QC Engineer [112 h] |  |  | 6 | 0 | E1670 | HAS3-2020 | CON-LEG101-PR-1590 | MKH2-02-002-PR-2150 | 0 |
| HFR1-05-9130 |  | Material Delivery for Pavement Markings | 40d | 2026-09-01 A | 2026-11-02 | HFR1-05-5020 | 80% | 40d | 2026-11-16 | 2026-12-31 | QA/QC Engineer [224 h]; PRO-SHORT-ROAD [1] | 20,149 |  | 6 | 0 | E1680 | HAS3-8470 | CON-LEG101-PR-1600 | MKH2-02-002-PR-2160 | 0 |
|  | 10 | **Traffic Signs** |  | 2026-08-25 | 2026-09-13 |  |  |  |  |  |  |  |  |  |  |  |  |  |  |  |
| HFR1-05-2920 |  | PO for Traffic Signs | 5d | 2026-08-25 A | 2026-08-27 A | HFR1-05-9180 FS+45d | 100% |  | 2026-09-07 | 2026-09-12 | Purchaser [48 h] |  |  | 1 | 0 | E1690 | HAS3-1 | CON-LEG101-PR-1610 | MKH2-02-002-PR-2170 | 0 |
| HFR1-05-5010 |  | Material Fabrication for Traffic Signs | 75d | 2026-08-29 A | 2026-08-31 A | HFR1-05-2920 | 100% |  | 2026-09-13 | 2026-12-09 | QA/QC Engineer [152 h] |  |  | 1 | 0 | E1700 | HAS3-2 | CON-LEG101-PR-1620 | MKH2-02-002-PR-2180 | 0 |
| HFR1-05-5760 |  | Material Delivery for Traffic Signs | 25d | 2026-09-02 A | 2026-09-13 A | HFR1-05-5010, HFR1-05-9110, HFR1-05-5550 | 100% |  | 2026-12-10 | 2027-01-07 | QA/QC Engineer [128 h]; PRO-SHORT-ROAD [1] | 20,149 | 20,149 | 42 | 0 | E1710 | HAS3-3 | CON-LEG101-PR-1630 | MKH2-02-002-PR-2190 | 0 |
|  | 2 | **Potable Water Network** |  | 2026-01-22 | 2026-03-29 |  |  |  |  |  |  |  |  |  |  |  |  |  |  |  |
|  | 1 | **HDPE Pipes** |  | 2026-01-22 | 2026-03-23 |  |  |  |  |  |  |  |  |  |  |  |  |  |  |  |
| HFR1-05-4930 |  | PO for HDPE Pipes | 6d | 2026-01-22 A | 2026-01-28 A | HFR1-05-6820 | 100% |  |  |  | Purchaser [8 h] |  |  | -1 | 0 | E1450 | HAS3-1920 | CON-LEG101-PR-1390 | MKH2-02-002-PR-1930 | 0 |
| HFR1-05-5650 |  | Material Fabrication for HDPE Pipes | 25d | 2026-01-29 A | 2026-02-28 A | HFR1-05-4930 | 100% |  |  |  | QA/QC Engineer [160 h] |  |  | -1 | 0 | E1460 | HAS3-2890 | CON-LEG101-PR-1400 | MKH2-02-002-PR-1940 | 0 |
| HFR1-05-8970 |  | Material Delivery for HDPE Pipes | 15d | 2026-02-18 A | 2026-03-23 A | HFR1-05-5650 | 100% |  | 2026-03-01 | 2026-03-17 | Purchaser [180 h]; PRO-SHORT-POTABEL WA [1] | 19,550 | 19,550 | 1 |  |  | HAS3-7490 |  |  |  |
|  | 2 | **Valves** |  | 2026-01-22 | 2026-03-29 |  |  |  |  |  |  |  |  |  |  |  |  |  |  |  |
| HFR1-05-4940 |  | PO for Valves | 6d | 2026-01-22 A | 2026-01-28 A | HFR1-05-7480 SS | 100% |  |  |  | Purchaser [8 h] |  |  | -1 | 0 | E1450 | HAS3-1930 | CON-LEG101-PR-1390 | MKH2-02-002-PR-1930 | 0 |
| HFR1-05-5660 |  | Material Fabrication for Valves | 25d | 2026-01-29 A | 2026-03-01 A | HFR1-05-4940 | 100% |  | 2026-03-17 | 2026-04-18 | QA/QC Engineer [160 h] |  |  | -1 | 0 | E1460 | HAS3-2900 | CON-LEG101-PR-1400 | MKH2-02-002-PR-1940 | 0 |
| HFR1-05-8980 |  | Material Delivery for Valves | 15d | 2026-03-04 A | 2026-03-29 A | HFR1-05-5660 | 100% |  | 2026-04-19 | 2026-05-05 | Purchaser [180 h]; PRO-SHORT-POTABEL WA [1] | 19,550 | 19,550 | -10 |  |  | HAS3-7500 |  |  |  |
|  | 3 | **Sewer Water Network** |  | 2026-01-15 | 2026-03-30 |  |  |  |  |  |  |  |  |  |  |  |  |  |  |  |
|  | 1 | **GRP Pipes** |  | 2026-01-15 | 2026-02-28 |  |  |  |  |  |  |  |  |  |  |  |  |  |  |  |
| HFR1-05-4950 |  | PO for GRP Pipes | 6d | 2026-01-15 A | 2026-01-21 A | HFR1-05-7490 SS | 100% |  |  |  | Purchaser [8 h] |  |  | -1 | 0 | E1450 | HAS3-1940 | CON-LEG101-PR-1390 | MKH2-02-002-PR-1930 | 0 |
| HFR1-05-5670 |  | Material Fabrication for GRP Pipes | 25d | 2026-01-22 A | 2026-02-19 A | HFR1-05-4950 | 100% |  |  |  | QA/QC Engineer [160 h] |  |  | -1 | 0 | E1460 | HAS3-2910 | CON-LEG101-PR-1400 | MKH2-02-002-PR-1940 | 0 |
| HFR1-05-8870 |  | Material Delivery for GRP Pipes | 25d | 2026-02-21 A | 2026-02-28 A | HFR1-05-5670 | 100% |  | 2026-03-17 | 2026-04-18 | Purchaser [180 h]; PRO-SHORT-POTABEL WA [1] | 19,550 | 19,550 | -25 |  |  | HAS3-7290 |  |  |  |

| ID | WBS | Activity | Duration | Start | Finish | Predecessors | Complete | Planned start | Planned finish | Resources | Cost | Actual cost | Delay Activties | Weight 1 | USERTEXT | Mapping Sheet Activity ID | Total Weight % | Old Activity ID | Old Activity ID-Alhasa |
| --- | --- | --- | --- | --- | --- | --- | --- | --- | --- | --- | --- | --- | --- | --- | --- | --- | --- | --- | --- |
|  | 2 | **Manholes** |  | 2026-01-21 | 2026-03-30 |  |  |  |  |  |  |  |  |  |  |  |  |  |  |
| HFR1-05-4960 |  | PO for Manholes | 6d | 2026-01-21 A | 2026-01-27 A | HFR1-05-8460 SS | 100% |  |  | Purchaser [8 h] |  |  | -1 | 0 | MKH2-02-002-PR-1930 | E1450 | 0 | CON-LEG101-PR-1390 | HAS3-1950 |
| HFR1-05-5680 |  | Material Fabrication for Manholes | 25d | 2026-01-28 A | 2026-02-26 A | HFR1-05-4960 | 100% |  |  | QA/QC Engineer [160 h] |  |  | -1 | 0 | MKH2-02-002-PR-1940 | E1460 | 0 | CON-LEG101-PR-1400 | HAS3-2920 |
| HFR1-05-8880 |  | Material Delivery for Manholes | 25d | 2026-02-22 A | 2026-03-30 A | HFR1-05-5680 | 100% | 2026-03-17 | 2026-04-18 | Purchaser [180 h]; PRO-SHORT-POTABEL WA [1] | 19,550 | 19,550 | -30 |  |  |  |  |  | HAS3-7300 |
|  | 7 | **Civil Works - Buildings** |  | 2026-01-15 | 2026-11-08 |  |  |  |  |  |  |  |  |  |  |  |  |  |  |
|  | 2 | **Steel Reinforcement** |  | 2026-01-15 | 2026-01-28 |  |  |  |  |  |  |  |  |  |  |  |  |  |  |
| HFR1-05-3630 |  | PO for Steel Reinforcement | 3d | 2026-01-15 A | 2026-01-18 A | HFR1-05-7320 SS | 100% |  |  | Purchaser [32 h] |  |  | -1 | 0 | MKH2-02-002-PR-1320 | E3720 | 0 | CON-LEG101-PR-3160 | HAS3-1380 |
| HFR1-05-5580 |  | Material Fabrication for Steel Reinforcement | 4d | 2026-01-19 A | 2026-01-22 A | HFR1-05-3630 | 100% |  |  | QA/QC Engineer [128 h] |  |  | -1 | 0 | MKH2-02-002-PR-1360 | E3750 | 0 | CON-LEG101-PR-3170 | HAS3-2820 |
| HFR1-05-9160 |  | Material Delivery for Steel Reinforcement | 5d | 2026-01-24 A | 2026-01-28 A | HFR1-05-5580 | 100% |  |  | QA/QC Engineer [48 h]; PRO-SHORT-CIVIL [1] | 21,400 | 21,400 | -1 | 0.00245815896638331 | MKH2-02-002-PR-1400 | E3780 | 0.245815896638331 | CON-LEG101-PR-3180 | HAS3-8530 |
|  | 1 | **Ready Mix Concrete** |  | 2026-01-21 | 2026-02-04 |  |  |  |  |  |  |  |  |  |  |  |  |  |  |
| HFR1-05-3670 |  | PO for Ready Mix Concrete | 5d | 2026-01-21 A | 2026-01-26 A | HFR1-05-8300 SS | 100% |  |  | Purchaser [32 h] |  |  | -1 | 0 | MKH2-02-002-PR-1320 | E3720 | 0 | CON-LEG101-PR-3160 | HAS3-1390 |
| HFR1-05-3700 |  | Material Delivery for Ready Mix Concrete | 8d | 2026-01-27 A | 2026-02-04 A | HFR1-05-3670 | 100% |  |  | QA/QC Engineer [48 h]; PRO-SHORT-CIVIL [1] | 21,400 | 21,400 | -1 | 0.00245815896638331 | MKH2-02-002-PR-1400 | E3780 | 0.245815896638331 | CON-LEG101-PR-3180 | HAS3-1400 |
|  | 3 | **Masonry** |  | 2026-01-21 | 2026-04-02 |  |  |  |  |  |  |  |  |  |  |  |  |  |  |
| HFR1-05-3750 |  | PO for Masonry | 5d | 2026-01-21 A | 2026-02-03 A | HFR1-05-8310 SS | 100% | 2026-01-21 | 2026-01-26 | Purchaser [32 h] |  |  | -1 | 0 | MKH2-02-002-PR-1320 | E3720 | 0 | CON-LEG101-PR-3160 | HAS3-1410 |
| HFR1-05-3850 |  | Material Delivery for Masonry | 8d | 2026-01-27 A | 2026-04-02 A | HFR1-05-3750 | 100% | 2026-01-27 | 2026-02-04 | QA/QC Engineer [48 h]; PRO-SHORT-CIVIL [1] | 21,400 | 21,400 | -1 | 0.00245815896638331 | MKH2-02-002-PR-1400 | E3780 | 0.245815896638331 | CON-LEG101-PR-3180 | HAS3-1420 |
|  | 5 | **Thermal & Moisture Protection** |  | 2026-01-21 | 2026-02-09 |  |  |  |  |  |  |  |  |  |  |  |  |  |  |
| HFR1-05-3920 |  | PO for Thermal & Moisture Protection | 5d | 2026-01-21 A | 2026-01-26 A | HFR1-05-8330 SS | 100% |  |  | Purchaser [32 h] |  |  | -1 | 0 | MKH2-02-002-PR-1320 | E3720 | 0 | CON-LEG101-PR-3160 | HAS3-1430 |
| HFR1-05-5030 |  | Material Fabrication for Thermal & Moisture Protection | 6d | 2026-01-27 A | 2026-02-02 A | HFR1-05-3920 | 100% | 2026-03-23 | 2026-03-29 | QA/QC Engineer [128 h] |  |  | 51 | 0 | MKH2-02-002-PR-1360 | E3750 | 0 | CON-LEG101-PR-3170 | HAS3-2040 |
| HFR1-05-9140 |  | Material Delivery for Thermal & Moisture Protection | 6d | 2026-02-03 A | 2026-02-09 A | HFR1-05-5030 | 100% | 2026-03-30 | 2026-04-05 | QA/QC Engineer [48 h]; PRO-SHORT-CIVIL [1] | 21,400 | 21,400 | 51 | 0.00245815896638331 | MKH2-02-002-PR-1400 | E3780 | 0.245815896638331 | CON-LEG101-PR-3180 | HAS3-8480 |
|  | 6 | **Water Proofing System** |  | 2026-01-21 | 2026-02-07 |  |  |  |  |  |  |  |  |  |  |  |  |  |  |
| HFR1-05-3960 |  | PO for Water Proofing System | 3d | 2026-01-21 A | 2026-01-24 A | HFR1-05-8340 SS | 100% |  |  | Purchaser [32 h] |  |  | -1 | 0 | MKH2-02-002-PR-1320 | E3720 | 0 | CON-LEG101-PR-3160 | HAS3-1440 |
| HFR1-05-5710 |  | Material Fabrication for Water Proofing System | 6d | 2026-01-25 A | 2026-01-31 A | HFR1-05-3960 | 100% |  |  | QA/QC Engineer [128 h] |  |  | -1 | 0 | MKH2-02-002-PR-1360 | E3750 | 0 | CON-LEG101-PR-3170 | HAS3-2950 |
| HFR1-05-9090 |  | Material Delivery for Water Proofing System | 6d | 2026-02-01 A | 2026-02-07 A | HFR1-05-5710 | 100% |  |  | QA/QC Engineer [48 h]; PRO-SHORT-CIVIL [1] | 21,400 | 21,400 | -1 | 0.00245815896638331 | MKH2-02-002-PR-1400 | E3780 | 0.245815896638331 | CON-LEG101-PR-3180 | HAS3-8180 |
|  | 8 | **Floor Finishes** |  | 2026-07-07 | 2026-07-29 |  |  |  |  |  |  |  |  |  |  |  |  |  |  |
| HFR1-05-4060 |  | PO for Floor Finishes | 3d | 2026-07-07 A | 2026-07-12 A | HFR1-05-8350 SS | 100% | 2026-08-01 | 2026-08-03 | Purchaser [32 h] |  |  | 72 | 0 | MKH2-02-002-PR-1320 | E3720 | 0 | CON-LEG101-PR-3160 | HAS3-1450 |
| HFR1-05-5590 |  | Material Fabrication for Floor Finishes | 6d | 2026-07-14 A | 2026-07-18 A | HFR1-05-4060 | 100% | 2026-08-04 | 2026-08-10 | QA/QC Engineer [128 h] |  |  | 72 | 0 | MKH2-02-002-PR-1360 | E3750 | 0 | CON-LEG101-PR-3170 | HAS3-2830 |
| HFR1-05-9170 |  | Material Delivery for Floor Finishes | 6d | 2026-07-19 A | 2026-07-29 A | HFR1-05-5590 | 100% | 2026-08-11 | 2026-08-17 | QA/QC Engineer [48 h]; PRO-SHORT-CIVIL [1] | 21,400 | 21,400 | 72 | 0.00245815896638331 | MKH2-02-002-PR-1400 | E3780 | 0.245815896638331 | CON-LEG101-PR-3180 | HAS3-8540 |

| ID | WBS | Activity | Duration | Start | Finish | Predecessors | Complete | Remaining | Planned start | Planned finish | Resources | Cost | Actual cost | Delay Activties | Mapping Sheet Activity ID | Total Weight % | Old Activity ID-Alhasa | Old Activity ID | Weight 1 | USERTEXT |
| --- | --- | --- | --- | --- | --- | --- | --- | --- | --- | --- | --- | --- | --- | --- | --- | --- | --- | --- | --- | --- |
|  | 9 | **Wall Finishes** |  | 2026-05-02 | 2026-08-02 |  |  |  |  |  |  |  |  |  |  |  |  |  |  |  |
| HFR1-05-4100 |  | PO for Wall Finishes | 3d | 2026-05-02 A | 2026-05-20 A | HFR1-05-8390 SS | 100% |  | 2026-07-14 | 2026-07-16 | Purchaser [32 h] |  |  | 72 | E3720 | 0 | HAS3-1460 | CON-LEG101-PR-3160 | 0 | MKH2-02-002-PR-1320 |
| HFR1-05-5720 |  | Material Fabrication for Wall Finishes | 6d | 2026-06-16 A | 2026-06-30 A | HFR1-05-4100 | 100% |  | 2026-07-18 | 2026-07-23 | QA/QC Engineer [128 h] |  |  | 72 | E3750 | 0 | HAS3-2960 | CON-LEG101-PR-3170 | 0 | MKH2-02-002-PR-1360 |
| HFR1-05-9100 |  | Material Delivery for Wall Finishes | 6d | 2026-07-12 A | 2026-08-02 A | HFR1-05-5720 | 100% |  | 2026-07-25 | 2026-07-30 | QA/QC Engineer [48 h]; PRO-SHORT-CIVIL [1] | 21,400 | 21,400 | 72 | E3780 | 0.245815896638331 | HAS3-8190 | CON-LEG101-PR-3180 | 0.00245815896638331 | MKH2-02-002-PR-1400 |
|  | 10 | **Ceiling Finishes** |  | 2026-07-13 | 2026-08-10 |  |  |  |  |  |  |  |  |  |  |  |  |  |  |  |
| HFR1-05-4210 |  | PO for Ceiling Finishes | 8d | 2026-07-13 A | 2026-07-19 A | HFR1-05-8400 | 100% |  | 2026-08-06 | 2026-08-15 | Purchaser [32 h] |  |  | 72 | E3720 | 0 | HAS3-1470 | CON-LEG101-PR-3160 | 0 | MKH2-02-002-PR-1320 |
| HFR1-05-5730 |  | Material Fabrication for Ceiling Finishes | 45d | 2026-07-20 A | 2026-07-28 A | HFR1-05-4210 FS+15d, HFR1-05-9170, HFR1-05-9090, HFR1-05-9140 | 100% |  | 2026-09-02 | 2026-10-25 | QA/QC Engineer [128 h] |  |  | 72 | E3750 | 0 | HAS3-2970 | CON-LEG101-PR-3170 | 0 | MKH2-02-002-PR-1360 |
| HFR1-05-9370 |  | Material Delivery for Ceiling Finishes | 45d | 2026-08-04 A | 2026-08-10 A | HFR1-05-5730 | 100% |  | 2026-10-26 | 2026-12-16 | QA/QC Engineer [48 h]; PRO-SHORT-CIVIL [1] | 21,400 | 21,400 | 72 | E3780 | 0.245815896638331 | HAS3-9460 | CON-LEG101-PR-3180 | 0.00245815896638331 | MKH2-02-002-PR-1400 |
|  | 12 | **Signages** |  | 2026-08-29 | 2026-09-13 |  |  |  |  |  |  |  |  |  |  |  |  |  |  |  |
| HFR1-05-4260 |  | PO for Signages | 8d | 2026-08-29 A | 2026-08-31 A | HFR1-05-8370 | 100% |  | 2026-09-03 | 2026-09-12 | Purchaser [32 h] |  |  | 86 | E3720 | 0 | HAS3-1480 | CON-LEG101-PR-3160 | 0 | MKH2-02-002-PR-1320 |
| HFR1-05-5740 |  | Material Fabrication for Signages | 45d | 2026-09-01 A | 2026-09-02 A | HFR1-05-9100, HFR1-05-4260 FS+15d | 100% |  | 2026-09-17 | 2026-11-09 | QA/QC Engineer [128 h] |  |  | 86 | E3750 | 0 | HAS3-2980 | CON-LEG101-PR-3170 | 0 | MKH2-02-002-PR-1360 |
| HFR1-05-9380 |  | Material Delivery for Signages | 45d | 2026-09-03 A | 2026-09-13 A | HFR1-05-5740, HFR1-05-8980, HFR1-05-8970 | 100% |  | 2026-11-10 | 2026-12-31 | QA/QC Engineer [48 h]; PRO-SHORT-CIVIL [1] | 21,400 | 21,400 | 86 | E3780 | 0.245815896638331 | HAS3-9470 | CON-LEG101-PR-3180 | 0.00245815896638331 | MKH2-02-002-PR-1400 |
|  | 13 | **Logo** |  | 2026-05-12 | 2026-11-08 |  |  |  |  |  |  |  |  |  |  |  |  |  |  |  |
| HFR1-05-4330 |  | PO for Logo | 8d | 2026-05-12 A | 2026-05-23 A | HFR1-05-8440 | 100% |  | 2026-06-16 | 2026-06-24 | Purchaser [32 h] |  |  | 86 | E3720 | 0 | HAS3-1490 | CON-LEG101-PR-3160 | 0 | MKH2-02-002-PR-1320 |
| HFR1-05-5750 |  | Material Fabrication for Logo | 45d | 2026-08-01 A | 2026-08-05 A | HFR1-05-3850, HFR1-05-4330 FS+15d | 100% |  | 2026-08-12 | 2026-10-04 | QA/QC Engineer [128 h] |  |  | 86 | E3750 | 0 | HAS3-2990 | CON-LEG101-PR-3170 | 0 | MKH2-02-002-PR-1360 |
| HFR1-05-9390 |  | Material Delivery for Logo | 45d | 2026-08-10 A | 2026-11-08 | HFR1-05-5750 | 80% | 45d | 2026-10-05 | 2026-11-25 | QA/QC Engineer [48 h]; PRO-SHORT-CIVIL [1] | 21,400 |  | 86 | E3780 | 0.245815896638331 | HAS3-9480 | CON-LEG101-PR-3180 | 0.00245815896638331 | MKH2-02-002-PR-1400 |
|  | 15 | **Steel Fence** |  | 2026-05-24 | 2026-09-09 |  |  |  |  |  |  |  |  |  |  |  |  |  |  |  |
| HFR1-05-4370 |  | PO for Steel Fence | 8d | 2026-05-24 A | 2026-06-01 A | HFR1-05-8420 | 100% |  | 2026-06-11 | 2026-06-20 | Purchaser [32 h] |  |  | 72 | E3720 | 0 | HAS3-1500 | CON-LEG101-PR-3160 | 0 | MKH2-02-002-PR-1320 |
| HFR1-05-5770 |  | Material Fabrication for Steel Fence | 25d | 2026-06-02 A | 2026-06-08 A | HFR1-05-4370 FS+51d, HFR1-05-8980, HFR1-05-8970 | 100% |  | 2026-08-19 | 2026-09-16 | QA/QC Engineer [128 h] |  |  | 72 | E3750 | 0 | HAS3-3000 | CON-LEG101-PR-3170 | 0 | MKH2-02-002-PR-1360 |
| HFR1-05-9190 |  | Material Delivery for Steel Fence | 25d | 2026-06-14 A | 2026-09-09 A | HFR1-05-5770 | 100% |  | 2026-06-18 | 2026-07-16 | QA/QC Engineer [48 h]; PRO-SHORT-CIVIL [1] | 21,400 | 12,840 | 72 | E3780 | 0.245815896638331 | HAS3-8640 | CON-LEG101-PR-3180 | 0.00245815896638331 | MKH2-02-002-PR-1400 |
|  | 16 | **Gates** |  | 2026-05-06 | 2026-08-29 |  |  |  |  |  |  |  |  |  |  |  |  |  |  |  |
| HFR1-05-4410 |  | PO for Gates | 8d | 2026-05-06 A | 2026-05-12 A | HFR1-05-8430 | 100% |  | 2026-06-04 | 2026-06-13 | Purchaser [32 h] |  |  | 72 | E3720 | 0 | HAS3-1510 | CON-LEG101-PR-3160 | 0 | MKH2-02-002-PR-1320 |
| HFR1-05-5780 |  | Material Fabrication for Gates | 42d | 2026-05-26 A | 2026-06-02 A | HFR1-05-4410 FS+50d | 100% |  | 2026-07-13 | 2026-08-30 | QA/QC Engineer [128 h] |  |  | 72 | E3750 | 0 | HAS3-3010 | CON-LEG101-PR-3170 | 0 | MKH2-02-002-PR-1360 |
| HFR1-05-9310 |  | Material Delivery for Gates | 35d | 2026-06-18 A | 2026-08-29 A | HFR1-05-5780 | 100% |  | 2026-06-24 | 2026-08-03 | QA/QC Engineer [48 h]; PRO-SHORT-CIVIL [1] | 21,400 | 8,560 | 72 | E3780 | 0.245815896638331 | HAS3-9270 | CON-LEG101-PR-3180 | 0.00245815896638331 | MKH2-02-002-PR-1400 |

| ID | WBS | Activity | Duration | Start | Finish | Predecessors | Complete | Planned start | Planned finish | Resources | Cost | Actual cost | Delay Activties | Mapping Sheet Activity ID | Total Weight % | Old Activity ID-Alhasa | Old Activity ID | Weight 1 | USERTEXT |
| --- | --- | --- | --- | --- | --- | --- | --- | --- | --- | --- | --- | --- | --- | --- | --- | --- | --- | --- | --- |
|  | 17 | **Pump Shed** |  | 2026-01-28 | 2026-04-06 |  |  |  |  |  |  |  |  |  |  |  |  |  |  |
| HFR1-05-4450 |  | PO for GatesPump Shed | 8d | 2026-01-28 A | 2026-02-05 A | HFR1-05-8450 | 100% | 2026-03-23 | 2026-03-31 | Purchaser [32 h] |  |  | 72 | E3720 | 0 | HAS3-1520 | CON-LEG101-PR-3160 | 0 | MKH2-02-002-PR-1320 |
| HFR1-05-5790 |  | Material Fabrication for Gates Pump Shed | 30d | 2026-02-07 A | 2026-02-12 A | HFR1-05-4450 FS+51d | 100% | 2026-06-03 | 2026-07-07 | QA/QC Engineer [128 h] |  |  | 72 | E3750 | 0 | HAS3-3020 | CON-LEG101-PR-3170 | 0 | MKH2-02-002-PR-1360 |
| HFR1-05-9200 |  | Material Delivery for Gates Pump Shed | 25d | 2026-02-14 A | 2026-04-06 A | HFR1-05-5790 | 100% | 2026-07-08 | 2026-08-05 | QA/QC Engineer [48 h]; PRO-SHORT-CIVIL [1] | 21,400 | 21,400 | 72 | E3780 | 0.245815896638331 | HAS3-8650 | CON-LEG101-PR-3180 | 0.00245815896638331 | MKH2-02-002-PR-1400 |
|  | 5 | **Mechanical - Buildings** |  | 2026-01-28 | 2026-04-14 |  |  |  |  |  |  |  |  |  |  |  |  |  |  |
|  | 1 | **HDPE Pipes** |  | 2026-01-28 | 2026-02-23 |  |  |  |  |  |  |  |  |  |  |  |  |  |  |
| HFR1-05-4490 |  | PO for HDPE Pipes | 8d | 2026-01-28 A | 2026-02-05 A | HFR1-05-7020 | 100% |  |  | Purchaser [32 h] |  |  | -1 | E3720 | 0 | HAS3-1530 | CON-LEG101-PR-3160 | 0 | MKH2-02-002-PR-1320 |
| HFR1-05-5800 |  | Material Fabrication for HDPE Pipes | 12d | 2026-02-07 A | 2026-02-19 A | HFR1-05-4490 | 100% |  |  | QA/QC Engineer [128 h] |  |  | -1 | E3750 | 0 | HAS3-3030 | CON-LEG101-PR-3170 | 0 | MKH2-02-002-PR-1360 |
| HFR1-05-9150 |  | Material Delivery for HDPE Pipes | 12d | 2026-02-19 A | 2026-02-23 A | HFR1-05-5800 | 100% | 2026-02-21 | 2026-03-07 | QA/QC Engineer [48 h]; Eng+Pro+Tc [450]; PRO-SHORT-elct & mec [1] | 22,085 | 22,085 | -14 | E3780 | 0.245815896638331 | HAS3-8490 | CON-LEG101-PR-3180 | 0.00245815896638331 | MKH2-02-002-PR-1400 |
|  | 4 | **GRP pipes** |  | 2026-01-28 | 2026-02-28 |  |  |  |  |  |  |  |  |  |  |  |  |  |  |
| HFR1-05-4580 |  | PO for GRP pipes | 8d | 2026-01-28 A | 2026-02-05 A | HFR1-05-7990, HFR1-05-8010 | 100% |  |  | Purchaser [32 h] |  |  | -1 | E3720 | 0 | HAS3-1540 | CON-LEG101-PR-3160 | 0 | MKH2-02-002-PR-1320 |
| HFR1-05-5810 |  | Material Fabrication for GRP pipes | 12d | 2026-02-07 A | 2026-02-19 A | HFR1-05-4580 | 100% |  |  | QA/QC Engineer [128 h] |  |  | -1 | E3750 | 0 | HAS3-3040 | CON-LEG101-PR-3170 | 0 | MKH2-02-002-PR-1360 |
| HFR1-05-9210 |  | Material Delivery for GRP pipes | 6d | 2026-02-21 A | 2026-02-28 A | HFR1-05-5810 | 100% |  |  | QA/QC Engineer [48 h]; Eng+Pro+Tc [400]; PRO-SHORT-elct & mec [1] | 22,085 | 22,085 | 48 | E3780 | 0.245815896638331 | HAS3-8660 | CON-LEG101-PR-3180 | 0.00245815896638331 | MKH2-02-002-PR-1400 |
|  | 5 | **Manholes** |  | 2026-01-28 | 2026-04-09 |  |  |  |  |  |  |  |  |  |  |  |  |  |  |
| HFR1-05-4610 |  | PO for Manholes | 8d | 2026-01-28 A | 2026-02-05 A | HFR1-05-8020 | 100% |  |  | Purchaser [32 h] |  |  | -1 | E3720 | 0 | HAS3-1550 | CON-LEG101-PR-3160 | 0 | MKH2-02-002-PR-1320 |
| HFR1-05-5820 |  | Material Fabrication for Manholes | 12d | 2026-02-07 A | 2026-02-19 A | HFR1-05-4610 | 100% |  |  | QA/QC Engineer [128 h] |  |  | -1 | E3750 | 0 | HAS3-3050 | CON-LEG101-PR-3170 | 0 | MKH2-02-002-PR-1360 |
| HFR1-05-9220 |  | Material Delivery for Manholes | 6d | 2026-02-21 A | 2026-04-09 A | HFR1-05-5820 | 100% | 2026-02-21 | 2026-02-28 | QA/QC Engineer [48 h]; Eng+Pro+Tc [400]; PRO-SHORT-elct & mec [1] | 22,085 | 22,085 | 48 | E3780 | 0.245815896638331 | HAS3-8670 | CON-LEG101-PR-3180 | 0.00245815896638331 | MKH2-02-002-PR-1400 |
|  | 7 | **Water Supply System** |  | 2026-01-28 | 2026-02-28 |  |  |  |  |  |  |  |  |  |  |  |  |  |  |
| HFR1-05-4640 |  | PO for Water Supply System | 8d | 2026-01-28 A | 2026-02-05 A | HFR1-05-8070 | 100% |  |  | Purchaser [32 h] |  |  | -1 | E3720 | 0 | HAS3-1560 | CON-LEG101-PR-3160 | 0 | MKH2-02-002-PR-1320 |
| HFR1-05-5830 |  | Material Fabrication for Water Supply System | 12d | 2026-02-07 A | 2026-02-19 A | HFR1-05-4640 | 100% |  |  | QA/QC Engineer [128 h] |  |  | -1 | E3750 | 0 | HAS3-3060 | CON-LEG101-PR-3170 | 0 | MKH2-02-002-PR-1360 |
| HFR1-05-9230 |  | Material Delivery for Water Supply System | 6d | 2026-02-21 A | 2026-02-28 A | HFR1-05-5830 | 100% |  |  | QA/QC Engineer [48 h]; Eng+Pro+Tc [350]; PRO-SHORT-elct & mec [1] | 22,085 | 22,085 | 48 | E3780 | 0.245815896638331 | HAS3-8680 | CON-LEG101-PR-3180 | 0.00245815896638331 | MKH2-02-002-PR-1400 |
|  | 8 | **Upvc Pipes** |  | 2026-01-28 | 2026-02-23 |  |  |  |  |  |  |  |  |  |  |  |  |  |  |
| HFR1-05-4710 |  | PO for Upvc Pipes | 8d | 2026-01-28 A | 2026-02-05 A | HFR1-05-8040 | 100% |  |  | Purchaser [32 h] |  |  | -1 | E3720 | 0 | HAS3-1570 | CON-LEG101-PR-3160 | 0 | MKH2-02-002-PR-1320 |
| HFR1-05-5840 |  | Material Fabrication for Upvc Pipes | 12d | 2026-02-07 A | 2026-02-16 A | HFR1-05-4710 | 100% | 2026-02-07 | 2026-02-19 | QA/QC Engineer [128 h] |  |  | -5 | E3750 | 0 | HAS3-3070 | CON-LEG101-PR-3170 | 0 | MKH2-02-002-PR-1360 |
| HFR1-05-9240 |  | Material Delivery for Upvc Pipes | 6d | 2026-02-17 A | 2026-02-23 A | HFR1-05-5840 | 100% | 2026-02-21 | 2026-02-28 | QA/QC Engineer [48 h]; Eng+Pro+Tc [350]; PRO-SHORT-elct & mec [1] | 22,085 | 22,085 | -6 | E3780 | 0.245815896638331 | HAS3-8690 | CON-LEG101-PR-3180 | 0.00245815896638331 | MKH2-02-002-PR-1400 |

| ID | WBS | Activity | Duration | Start | Finish | Predecessors | Complete | Planned start | Planned finish | Resources | Cost | Actual cost | Delay Activties | Old Activity ID | Old Activity ID-Alhasa | Total Weight % | Mapping Sheet Activity ID | USERTEXT | Weight 1 |
| --- | --- | --- | --- | --- | --- | --- | --- | --- | --- | --- | --- | --- | --- | --- | --- | --- | --- | --- | --- |
|  | 9 | **Roof Vent Caps** |  | 2026-01-28 | 2026-04-14 |  |  |  |  |  |  |  |  |  |  |  |  |  |  |
| HFR1-05-4730 |  | PO for Roof Vent Caps | 8d | 2026-01-28 A | 2026-02-05 A | HFR1-05-8080 | 100% |  |  | Purchaser [32 h] |  |  | -1 | CON-LEG101-PR-3160 | HAS3-1580 | 0 | E3720 | MKH2-02-002-PR-1320 | 0 |
| HFR1-05-5850 |  | Material Fabrication for Roof Vent Caps | 27d | 2026-02-25 A | 2026-03-10 A | HFR1-05-4730 FS+50d | 100% | 2026-04-11 | 2026-05-11 | QA/QC Engineer [128 h] |  |  | -86 | CON-LEG101-PR-3170 | HAS3-3080 | 0 | E3750 | MKH2-02-002-PR-1360 | 0 |
| HFR1-05-8900 |  | Material Delivery for Roof Vent Caps | 26d | 2026-03-31 A | 2026-04-14 A | HFR1-05-5850 | 100% | 2026-05-12 | 2026-06-14 | QA/QC Engineer [48 h]; Eng+Pro+Tc [260]; PRO-SHORT-elct & mec [1] | 22,085 | 22,085 | -112 | CON-LEG101-PR-3180 | HAS3-7400 | 0.245815896638331 | E3780 | MKH2-02-002-PR-1400 | 0.00245815896638331 |
|  | 10 | **Floor Drains** |  | 2026-01-28 | 2026-03-09 |  |  |  |  |  |  |  |  |  |  |  |  |  |  |
| HFR1-05-4740 |  | PO for Floor Drains | 8d | 2026-01-28 A | 2026-02-05 A | HFR1-05-8090 | 100% |  |  | Purchaser [32 h] |  |  | -1 | CON-LEG101-PR-3160 | HAS3-1590 | 0 | E3720 | MKH2-02-002-PR-1320 | 0 |
| HFR1-05-5860 |  | Material Fabrication for Floor Drains | 27d | 2026-02-07 A | 2026-02-19 A | HFR1-05-4740 FS+40d, HFR1-05-9150 | 100% | 2026-03-30 | 2026-04-29 | QA/QC Engineer [128 h] |  |  | -70 | CON-LEG101-PR-3170 | HAS3-3090 | 0 | E3750 | MKH2-02-002-PR-1360 | 0 |
| HFR1-05-8910 |  | Material Delivery for Floor Drains | 35d | 2026-03-03 A | 2026-03-09 A | HFR1-05-5860 | 100% | 2026-05-31 | 2026-07-09 | QA/QC Engineer [48 h]; Eng+Pro+Tc [350]; PRO-SHORT-elct & mec [1] | 22,085 | 22,085 | -21 | CON-LEG101-PR-3180 | HAS3-7410 | 0.245815896638331 | E3780 | MKH2-02-002-PR-1400 | 0.00245815896638331 |
|  | 6 | **Electrical - Buildings** |  | 2026-01-21 | 2026-06-14 |  |  |  |  |  |  |  |  |  |  |  |  |  |  |
|  | 2 | **Telecome Manholes & Handholes** |  | 2026-01-28 | 2026-04-16 |  |  |  |  |  |  |  |  |  |  |  |  |  |  |
| HFR1-05-4750 |  | PO for Telecome Manholes & Handholes | 8d | 2026-01-28 A | 2026-02-05 A | HFR1-05-7140 | 100% |  |  | Purchaser [32 h] |  |  | -1 | CON-LEG101-PR-3160 | HAS3-1600 | 0 | E3720 | MKH2-02-002-PR-1320 | 0 |
| HFR1-05-5870 |  | Material Fabrication for Telecome Manholes & Handholes | 15d | 2026-02-07 A | 2026-02-19 A | HFR1-05-4750 | 100% | 2026-02-07 | 2026-02-24 | QA/QC Engineer [128 h] |  |  | -5 | CON-LEG101-PR-3170 | HAS3-3100 | 0 | E3750 | MKH2-02-002-PR-1360 | 0 |
| HFR1-05-9000 |  | Material Delivery for Telecome Manholes & Handholes | 8d | 2026-02-21 A | 2026-04-16 A | HFR1-05-5870 | 100% | 2026-02-25 | 2026-03-05 | QA/QC Engineer [48 h]; Eng+Pro+Tc [340]; PRO-SHORT-elct & mec [1] | 22,085 | 22,085 | 44 | CON-LEG101-PR-3180 | HAS3-7860 | 0.245815896638331 | E3780 | MKH2-02-002-PR-1400 | 0.00245815896638331 |
|  | 1 | **Electrical manholes** |  | 2026-01-28 | 2026-04-18 |  |  |  |  |  |  |  |  |  |  |  |  |  |  |
| HFR1-05-4760 |  | PO for Electrical manholes | 8d | 2026-01-28 A | 2026-02-05 A | HFR1-05-8100 | 100% |  |  | Purchaser [32 h] |  |  | -1 | CON-LEG101-PR-3160 | HAS3-1610 | 0 | E3720 | MKH2-02-002-PR-1320 | 0 |
| HFR1-05-5880 |  | Material Fabrication for Electrical manholes | 15d | 2026-02-07 A | 2026-02-24 A | HFR1-05-4760 | 100% |  |  | QA/QC Engineer [128 h] |  |  | -5 | CON-LEG101-PR-3170 | HAS3-3110 | 0 | E3750 | MKH2-02-002-PR-1360 | 0 |
| HFR1-05-9250 |  | Material Delivery for Electrical manholes | 9d | 2026-02-21 A | 2026-04-18 A | HFR1-05-5880 | 100% | 2026-02-25 | 2026-03-07 | QA/QC Engineer [48 h]; Eng+Pro+Tc [350]; PRO-SHORT-elct & mec [1] | 22,085 | 22,085 | 44 | CON-LEG101-PR-3180 | HAS3-8700 | 0.245815896638331 | E3780 | MKH2-02-002-PR-1400 | 0.00245815896638331 |
|  | 3 | **Street Lighting Manholes** |  | 2026-01-28 | 2026-04-21 |  |  |  |  |  |  |  |  |  |  |  |  |  |  |
| HFR1-05-4770 |  | PO for Street Lighting Manholes | 8d | 2026-01-28 A | 2026-02-05 A | HFR1-05-8110 | 100% |  |  | Purchaser [32 h] |  |  | -1 | CON-LEG101-PR-3160 | HAS3-1620 | 0 | E3720 | MKH2-02-002-PR-1320 | 0 |
| HFR1-05-5890 |  | Material Fabrication for Street Lighting Manholes | 15d | 2026-02-07 A | 2026-03-16 A | HFR1-05-4770 | 100% | 2026-02-07 | 2026-02-24 | QA/QC Engineer [128 h] |  |  | -5 | CON-LEG101-PR-3170 | HAS3-3120 | 0 | E3750 | MKH2-02-002-PR-1360 | 0 |
| HFR1-05-9260 |  | Material Delivery for Street Lighting Manholes | 8d | 2026-03-25 A | 2026-04-21 A | HFR1-05-5890 | 100% | 2026-02-25 | 2026-03-05 | QA/QC Engineer [48 h]; Eng+Pro+Tc [440]; PRO-SHORT-elct & mec [1] | 22,085 | 22,085 | 44 | CON-LEG101-PR-3180 | HAS3-8710 | 0.245815896638331 | E3780 | MKH2-02-002-PR-1400 | 0.00245815896638331 |
|  | 4 | **Duct Banks** |  | 2026-01-28 | 2026-04-30 |  |  |  |  |  |  |  |  |  |  |  |  |  |  |
| HFR1-05-4780 |  | PO for Duct Banks | 8d | 2026-01-28 A | 2026-02-05 A | HFR1-05-8120 | 100% |  |  | Purchaser [32 h] |  |  | -1 | CON-LEG101-PR-3160 | HAS3-1630 | 0 | E3720 | MKH2-02-002-PR-1320 | 0 |
| HFR1-05-5900 |  | Material Fabrication for Duct Banks | 15d | 2026-02-07 A | 2026-02-19 A | HFR1-05-4780 | 100% | 2026-02-07 | 2026-02-24 | QA/QC Engineer [128 h] |  |  | -5 | CON-LEG101-PR-3170 | HAS3-3130 | 0 | E3750 | MKH2-02-002-PR-1360 | 0 |
| HFR1-05-9340 |  | Material Delivery for Duct Banks | 9d | 2026-02-21 A | 2026-04-30 A | HFR1-05-5900 | 100% | 2026-02-25 | 2026-03-07 | QA/QC Engineer [48 h]; Eng+Pro+Tc [520]; PRO-SHORT-elct & mec [1] | 22,085 | 22,085 | 44 | CON-LEG101-PR-3180 | HAS3-9320 | 0.245815896638331 | E3780 | MKH2-02-002-PR-1400 | 0.00245815896638331 |

| ID | WBS | Activity | Duration | Start | Finish | Predecessors | Complete | Planned start | Planned finish | Resources | Cost | Actual cost | Delay Activties | Old Activity ID | Old Activity ID-Alhasa | Total Weight % | Mapping Sheet Activity ID | USERTEXT | Weight 1 |
| --- | --- | --- | --- | --- | --- | --- | --- | --- | --- | --- | --- | --- | --- | --- | --- | --- | --- | --- | --- |
|  | 16 | **Telecom & Data System** |  | 2026-01-28 | 2026-06-14 |  |  |  |  |  |  |  |  |  |  |  |  |  |  |
| HFR1-05-4790 |  | PO for Telecom & Data System | 8d | 2026-01-28 A | 2026-02-05 A | HFR1-05-8230 | 100% |  |  | Purchaser [32 h] |  |  | -1 | CON-LEG101-PR-3160 | HAS3-1640 | 0 | E3720 | MKH2-02-002-PR-1320 | 0 |
| HFR1-05-5910 |  | Material Fabrication for Telecom & Data System | 45d | 2026-05-13 A | 2026-06-01 A | HFR1-05-4790 FS+45d, HFR1-05-9260 | 100% | 2026-06-11 | 2026-08-02 | QA/QC Engineer [128 h] |  |  | 21 | CON-LEG101-PR-3170 | HAS3-3140 | 0 | E3750 | MKH2-02-002-PR-1360 | 0 |
| HFR1-05-9400 |  | Material Delivery for Telecom & Data System | 35d | 2026-06-07 A | 2026-06-14 A | HFR1-05-5910 | 100% | 2026-06-17 | 2026-07-27 | QA/QC Engineer [48 h]; Eng+Pro+Tc [350]; PRO-SHORT-elct & mec [1] | 22,085 | 22,085 | 21 | CON-LEG101-PR-3180 | HAS3-9490 | 0.245815896638331 | E3780 | MKH2-02-002-PR-1400 | 0.00245815896638331 |
|  | 17 | **Grounding System** |  | 2026-01-21 | 2026-02-12 |  |  |  |  |  |  |  |  |  |  |  |  |  |  |
| HFR1-05-4800 |  | PO for Grounding System | 4d | 2026-01-21 A | 2026-01-25 A | HFR1-05-8290 SS | 100% |  |  | Purchaser [32 h] |  |  | -1 | CON-LEG101-PR-3160 | HAS3-1650 | 0 | E3720 | MKH2-02-002-PR-1320 | 0 |
| HFR1-05-5920 |  | Material Fabrication for Grounding System | 7d | 2026-01-26 A | 2026-02-02 A | HFR1-05-4800 | 100% |  |  | QA/QC Engineer [128 h] |  |  | -1 | CON-LEG101-PR-3170 | HAS3-3150 | 0 | E3750 | MKH2-02-002-PR-1360 | 0 |
| HFR1-05-9010 |  | Material Delivery for Grounding System | 7d | 2026-02-03 A | 2026-02-12 A | HFR1-05-5920 | 100% | 2026-02-03 | 2026-02-10 | QA/QC Engineer [48 h]; PRO-SHORT-elct & mec [1] | 22,085 | 22,085 | 66 | CON-LEG101-PR-3180 | HAS3-7870 | 0.245815896638331 | E3780 | MKH2-02-002-PR-1400 | 0.00245815896638331 |
|  | 1 | **Long Lead Item** |  | 2026-01-28 | 2026-08-24 |  |  |  |  |  |  |  |  |  |  |  |  |  |  |
|  | 7 | **Civil Works - Buildings** |  | 2026-01-28 | 2026-08-24 |  |  |  |  |  |  |  |  |  |  |  |  |  |  |
|  | 4 | **Steel Structure** |  | 2026-01-28 | 2026-04-09 |  |  |  |  |  |  |  |  |  |  |  |  |  |  |
| HFR1-05-1000 |  | PO for Steel Structure | 8d | 2026-01-28 A | 2026-02-05 A | HFR1-05-8320 | 100% |  |  | Purchaser [250 h] |  |  | -1 | CON-LEG101-PR-3160 | 1 | 0 | E3720 | MKH2-02-002-PR-1320 | 0 |
| HFR1-05-1300 |  | Material Delivery for Steel Structure | 22d | 2026-02-05 A | 2026-04-04 A | HFR1-05-9010, HFR1-05-1240, HFR1-05-9240, HFR1-05-9230, HFR1-05-9220, HFR1-05-9210 | 100% | 2026-04-20 | 2026-05-14 | QA/QC Engineer [520 h]; Eng+Pro+Tc [150]; PRO-LONG-CIVIL [1] | 105,330 | 105,330 | 42 | CON-LEG101-PR-3180 | 3 | 0.245815896638331 | E3780 | MKH2-02-002-PR-1400 | 0.00245815896638331 |
| HFR1-05-1240 |  | Material Fabrication for Steel Structure | 23d | 2026-02-07 A | 2026-03-01 A | HFR1-05-1000 | 100% | 2026-03-22 | 2026-04-16 | QA/QC Engineer [520 h] |  |  | 40 | CON-LEG101-PR-3170 | 2 | 0 | E3750 | MKH2-02-002-PR-1360 | 0 |
| HFR1-05-1580 |  | Staging Time For Steel Structure | 8d | 2026-04-06 A | 2026-04-09 A | HFR1-05-9340, HFR1-05-9260, HFR1-05-9250, HFR1-05-9000, HFR1-05-9240, HFR1-05-9230, HFR1-05-9220, HFR1-05-9210, HFR1-05-9150, HFR1-05-1300 | 100% | 2026-05-20 | 2026-06-01 |  |  |  | 42 |  | 4 |  |  |  |  |
|  | 7 | **Doors & Windows** |  | 2026-05-31 | 2026-08-24 |  |  |  |  |  |  |  |  |  |  |  |  |  |  |
| HFR1-05-2370 |  | PO for Doors & Windows | 8d | 2026-05-31 A | 2026-06-04 A | HFR1-05-8380 | 100% | 2026-06-13 | 2026-06-21 | Purchaser [100 h] |  |  | 50 | CON-LEG101-PR-3160 | D1 | 0 | E3720 | MKH2-02-002-PR-1320 | 0 |
| HFR1-05-2380 |  | Material Fabrication for Doors & Windows | 52d | 2026-06-06 A | 2026-06-11 A | HFR1-05-2370 | 100% | 2026-06-14 | 2026-08-12 | QA/QC Engineer [500 h] |  |  | 50 | CON-LEG101-PR-3170 | D2 | 0 | E3750 | MKH2-02-002-PR-1360 | 0 |
| HFR1-05-2960 |  | Material Delivery for Doors & Windows | 45d | 2026-06-14 A | 2026-08-22 A | HFR1-05-2380 | 100% | 2026-06-16 | 2026-08-06 | QA/QC Engineer [780 h]; Eng+Pro+Tc [450]; PRO-LONG-CIVIL [1] | 105,330 | 73,731 | 50 | CON-LEG101-PR-3180 | HAS3-10140 | 0.245815896638331 | E3780 | MKH2-02-002-PR-1400 | 0.00245815896638331 |
| HFR1-05-3180 |  | Staging Time For Doors & Windows | 7d | 2026-08-23 A | 2026-08-24 A | HFR1-05-2960 | 100% | 2026-10-19 | 2026-10-26 |  |  |  | 50 |  | HAS3-11860 |  |  |  |  |
|  | 11 | **Fittings** |  | 2026-01-28 | 2026-04-14 |  |  |  |  |  |  |  |  |  |  |  |  |  |  |
| HFR1-05-2390 |  | PO for Fittings | 8d | 2026-01-28 A | 2026-02-05 A | HFR1-05-8360 | 100% |  |  | Purchaser [200 h] |  |  | -1 | CON-LEG101-PR-3160 | F1 | 0 | E3720 | MKH2-02-002-PR-1320 | 0 |
| HFR1-05-2400 |  | Material Fabrication for Fittings | 54d | 2026-02-07 A | 2026-02-14 A | HFR1-05-2390 | 100% | 2026-02-07 | 2026-04-14 | QA/QC Engineer [200 h] |  |  | -60 | CON-LEG101-PR-3170 | F2 | 0 | E3750 | MKH2-02-002-PR-1360 | 0 |
| HFR1-05-2410 |  | Material Delivery for Fittings | 56d | 2026-02-15 A | 2026-04-12 A | HFR1-05-2400 | 100% | 2026-04-15 | 2026-06-22 | QA/QC Engineer [200 h]; Eng+Pro+Tc [560]; PRO-LONG-CIVIL [1] | 105,330 | 105,330 | -5 | CON-LEG101-PR-3180 | F3 | 0.245815896638331 | E3780 | MKH2-02-002-PR-1400 | 0.00245815896638331 |
| HFR1-05-2420 |  | Staging Time For Fittings | 7d | 2026-04-12 A | 2026-04-14 A | HFR1-05-2410 | 100% | 2026-04-18 | 2026-04-25 |  |  |  | -5 |  | F4 |  |  |  |  |

| ID | WBS | Activity | Duration | Start | Finish | Predecessors | Complete | Planned start | Planned finish | Resources | Cost | Actual cost | Delay Activties | Old Activity ID | Old Activity ID-Alhasa | Mapping Sheet Activity ID | Total Weight % | Weight 1 | USERTEXT |
| --- | --- | --- | --- | --- | --- | --- | --- | --- | --- | --- | --- | --- | --- | --- | --- | --- | --- | --- | --- |
|  | 14 | **Pre Engineered Structures** |  | 2026-01-28 | 2026-04-04 |  |  |  |  |  |  |  |  |  |  |  |  |  |  |
| HFR1-05-9770 |  | PO for Pre Engineered Structures | 8d | 2026-01-28 A | 2026-02-05 A | HFR1-05-8410 | 100% |  |  | Purchaser [200 h] |  |  | -1 | CON-LEG101-PR-3160 | P1 | E3720 | 0 | 0 | MKH2-02-002-PR-1320 |
| HFR1-05-9780 |  | Material Fabrication for Pre Engineered Structures | 17d | 2026-02-07 A | 2026-02-11 A | HFR1-05-9770 | 100% | 2026-02-07 | 2026-02-26 | QA/QC Engineer [200 h] |  |  | -16 | CON-LEG101-PR-3170 | P2 | E3750 | 0 | 0 | MKH2-02-002-PR-1360 |
| HFR1-05-9790 |  | Material Delivery for Pre Engineered Structures | 15d | 2026-02-12 A | 2026-04-01 A | HFR1-05-9780 | 100% | 2026-02-28 | 2026-03-16 | QA/QC Engineer [200 h]; Eng+Pro+Tc [150]; PRO-LONG-CIVIL [1] | 105,330 | 105,330 | -26 | CON-LEG101-PR-3180 | P4 | E3780 | 0.245815896638331 | 0.00245815896638331 | MKH2-02-002-PR-1400 |
| HFR1-05-9800 |  | Staging Time For Pre Engineered Structures | 7d | 2026-04-01 A | 2026-04-04 A | HFR1-05-9790 | 100% | 2026-03-17 | 2026-03-28 |  |  |  | -32 |  | P5 |  |  |  |  |
|  | 5 | **Mechanical - Buildings** |  | 2026-01-28 | 2026-07-01 |  |  |  |  |  |  |  |  |  |  |  |  |  |  |
|  | 2 | **Fire Fighting System** |  | 2026-01-28 | 2026-04-20 |  |  |  |  |  |  |  |  |  |  |  |  |  |  |
| HFR1-05-4810 |  | PO for Fire Fighting System | 8d | 2026-01-28 A | 2026-02-05 A | HFR1-05-7020 | 100% |  |  | Purchaser [500 h] |  |  | -1 | CON-LEG101-PR-3160 | HAS3-1700 | E3720 | 0 | 0 | MKH2-02-002-PR-1320 |
| HFR1-05-5930 |  | Material Fabrication for Fire Fighting System | 45d | 2026-02-15 A | 2026-03-01 A | HFR1-05-4810 FS+10d | 100% | 2026-04-09 | 2026-06-03 | QA/QC Engineer [500 h] |  |  | 50 | CON-LEG101-PR-3170 | HAS3-3200 | E3750 | 0 | 0 | MKH2-02-002-PR-1360 |
| HFR1-05-9120 |  | Material Delivery for Fire Fighting System | 45d | 2026-03-25 A | 2026-04-18 A | HFR1-05-5930 | 100% | 2026-06-04 | 2026-07-26 | QA/QC Engineer [48 h]; Eng+Pro+Tc [360]; PRO-LONG-MECH [1] | 102,220 | 102,220 | 50 | CON-LEG101-PR-3180 | HAS3-8220 | E3780 | 0.245815896638331 | 0.00245815896638331 | MKH2-02-002-PR-1400 |
| HFR1-05-9890 |  | Staging Time For Fire Fighting System | 7d | 2026-04-18 A | 2026-04-20 A | HFR1-05-9120, HFR1-05-3390 | 100% | 2026-08-15 | 2026-08-22 |  |  |  | 58 |  | S4 |  |  |  |  |
|  | 3 | **Valves** |  | 2026-01-28 | 2026-03-30 |  |  |  |  |  |  |  |  |  |  |  |  |  |  |
| HFR1-05-9550 |  | PO for Valves | 8d | 2026-01-28 A | 2026-02-05 A | HFR1-05-8000 | 100% |  |  | Purchaser [32 h] |  |  | -1 | CON-LEG101-PR-3160 | K1 | E3720 | 0 | 0 | MKH2-02-002-PR-1320 |
| HFR1-05-9560 |  | Material Fabrication for Valves | 37d | 2026-03-01 A | 2026-03-05 A | HFR1-05-9550 FS+25d | 100% | 2026-04-12 | 2026-05-24 | QA/QC Engineer [128 h] |  |  | 31 | CON-LEG101-PR-3170 | K2 | E3750 | 0 | 0 | MKH2-02-002-PR-1360 |
| HFR1-05-9570 |  | Material Delivery for Valves | 35d | 2026-03-07 A | 2026-03-24 A | HFR1-05-9560 | 100% | 2026-05-25 | 2026-07-07 | QA/QC Engineer [48 h]; Eng+Pro+Tc [350]; PRO-LONG-MECH [1] | 102,220 | 102,220 | 31 | CON-LEG101-PR-3180 | K3 | E3780 | 0.245815896638331 | 0.00245815896638331 | MKH2-02-002-PR-1400 |
| HFR1-05-9580 |  | Staging Time For Valves | 8d | 2026-03-26 A | 2026-03-30 A | HFR1-05-9570, HFR1-05-3390 | 100% | 2026-08-03 | 2026-08-11 |  |  |  | 61 |  | K4 |  |  |  |  |
|  | 6 | **Fire Protectional System** |  | 2026-01-28 | 2026-07-01 |  |  |  |  |  |  |  |  |  |  |  |  |  |  |
| HFR1-05-9510 |  | PO for Fire Protectional System | 8d | 2026-01-28 A | 2026-02-05 A | HFR1-05-8030 | 100% |  |  | Purchaser [32 h] |  |  | -1 | CON-LEG101-PR-3160 | J1 | E3720 | 0 | 0 | MKH2-02-002-PR-1320 |
| HFR1-05-9520 |  | Material Fabrication for Fire Protectional System | 34d | 2026-03-09 A | 2026-03-16 A | HFR1-05-9510 FS+25d | 100% | 2026-04-19 | 2026-05-31 | QA/QC Engineer [128 h] |  |  | 31 | CON-LEG101-PR-3170 | J2 | E3750 | 0 | 0 | MKH2-02-002-PR-1360 |
| HFR1-05-9530 |  | Material Delivery for Fire Protectional System | 45d | 2026-04-02 A | 2026-06-22 A | HFR1-05-9520 | 100% | 2026-06-01 | 2026-07-22 | QA/QC Engineer [48 h]; Eng+Pro+Tc [450]; PRO-LONG-MECH [1] | 102,220 | 91,998 | 31 | CON-LEG101-PR-3180 | J3 | E3780 | 0.245815896638331 | 0.00245815896638331 | MKH2-02-002-PR-1400 |
| HFR1-05-9540 |  | Staging Time For Fire Protectional System | 7d | 2026-06-27 A | 2026-07-01 A | HFR1-05-9530 | 100% | 2026-08-24 | 2026-08-31 |  |  |  | 31 |  | J4 |  |  |  |  |
|  | 11 | **Electric Water Heater** |  | 2026-01-28 | 2026-04-21 |  |  |  |  |  |  |  |  |  |  |  |  |  |  |
| HFR1-05-9620 |  | PO for Electric Water Heater | 8d | 2026-01-28 A | 2026-02-05 A | HFR1-05-8050 | 100% |  |  | Purchaser [32 h] |  |  | -1 | CON-LEG101-PR-3160 | M1 | E3720 | 0 | 0 | MKH2-02-002-PR-1320 |
| HFR1-05-9630 |  | Material Fabrication for Electric Water Heater | 45d | 2026-03-09 A | 2026-03-18 A | HFR1-05-9620 FS+25d, HFR1-05-9340, HFR1-05-9260, HFR1-05-9250, HFR1-05-9000 | 100% | 2026-05-04 | 2026-06-28 | QA/QC Engineer [128 h] |  |  | 42 | CON-LEG101-PR-3170 | M2 | E3750 | 0 | 0 | MKH2-02-002-PR-1360 |
| HFR1-05-9640 |  | Material Delivery for Electric Water Heater | 45d | 2026-03-28 A | 2026-04-19 A | HFR1-05-9630 | 100% | 2026-06-29 | 2026-08-19 | QA/QC Engineer [48 h]; Eng+Pro+Tc [450]; PRO-LONG-MECH [1] | 102,220 | 102,220 | 42 | CON-LEG101-PR-3180 | M3 | E3780 | 0.245815896638331 | 0.00245815896638331 | MKH2-02-002-PR-1400 |
| HFR1-05-9650 |  | Staging Time For Electric Water Heater | 7d | 2026-04-19 A | 2026-04-21 A | HFR1-05-9640, HFR1-05-8910, HFR1-05-8900, HFR1-05-9390, HFR1-05-9380, HFR1-05-9370, HFR1-05-9890 | 100% | 2026-09-06 | 2026-09-13 |  |  |  | 74 |  | M4 |  |  |  |  |

| ID | WBS | Activity | Duration | Start | Finish | Predecessors | Complete | Planned start | Planned finish | Resources | Cost | Actual cost | Delay Activties | Old Activity ID | Old Activity ID-Alhasa | Mapping Sheet Activity ID | Total Weight % | Weight 1 | USERTEXT |
| --- | --- | --- | --- | --- | --- | --- | --- | --- | --- | --- | --- | --- | --- | --- | --- | --- | --- | --- | --- |
|  | 12 | **Heating,Ventilation & Air Conditioning** |  | 2026-01-28 | 2026-04-20 |  |  |  |  |  |  |  |  |  |  |  |  |  |  |
| HFR1-05-9940 |  | PO for Heating,Ventilation & Air Conditioning | 8d | 2026-01-28 A | 2026-02-05 A | HFR1-05-8060 | 100% |  |  | Purchaser [32 h] |  |  | -1 | CON-LEG101-PR-3160 | X1 | E3720 | 0 | 0 | MKH2-02-002-PR-1320 |
| HFR1-05-9950 |  | Material Fabrication for Heating,Ventilation & Air Conditioning | 52d | 2026-03-12 A | 2026-03-23 A | HFR1-05-9940 FS+32d | 100% | 2026-04-23 | 2026-06-25 | QA/QC Engineer [128 h] |  |  | 22 | CON-LEG101-PR-3170 | X2 | E3750 | 0 | 0 | MKH2-02-002-PR-1360 |
| HFR1-05-9960 |  | Material Delivery for Heating,Ventilation & Air Conditioning | 35d | 2026-03-29 A | 2026-04-18 A | HFR1-05-9950 | 100% | 2026-06-27 | 2026-08-05 | QA/QC Engineer [48 h]; Eng+Pro+Tc [350]; PRO-LONG-MECH [1] | 102,220 | 102,220 | 22 | CON-LEG101-PR-3180 | X3 | E3780 | 0.245815896638331 | 0.00245815896638331 | MKH2-02-002-PR-1400 |
| HFR1-05-9970 |  | Staging Time For Heating,Ventilation & Air Conditioning | 7d | 2026-04-19 A | 2026-04-20 A | HFR1-05-9960, HFR1-05-9540 | 100% | 2026-08-06 | 2026-08-13 |  |  |  | 22 |  | X4 |  |  |  |  |
|  | 2 | **Electrical - Buildings** |  | 2026-01-28 | 2026-07-07 |  |  |  |  |  |  |  |  |  |  |  |  |  |  |
|  | 5 | **Feeder Pillers** |  | 2026-01-28 | 2026-06-28 |  |  |  |  |  |  |  |  |  |  |  |  |  |  |
| HFR1-05-9980 |  | PO for Feeder Pillers | 8d | 2026-01-28 A | 2026-02-10 A | HFR1-05-8130 | 100% | 2026-05-06 | 2026-05-14 | Purchaser [32 h] |  |  | 72 | CON-LEG101-PR-3160 | Z1 | E3720 | 0 | 0 | MKH2-02-002-PR-1320 |
| HFR1-05-9990 |  | Material Fabrication for Feeder Pillers | 46d | 2026-03-08 A | 2026-04-02 A | HFR1-05-5570, HFR1-05-9980 FS+25d | 100% | 2026-06-17 | 2026-08-09 | QA/QC Engineer [128 h] |  |  | 72 | CON-LEG101-PR-3170 | Z2 | E3750 | 0 | 0 | MKH2-02-002-PR-1360 |
| HFR1-05-10000 |  | Material Delivery for Feeder Pillers | 52d | 2026-04-29 A | 2026-06-22 A | HFR1-05-9990 | 100% | 2026-08-10 | 2026-10-10 | QA/QC Engineer [48 h]; Eng+Pro+Tc [520]; PRO-LONG-ELEC [1] | 102,807 | 102,807 | 72 | CON-LEG101-PR-3180 | Z3 | E3780 | 0.245815896638331 | 0.00245815896638331 | MKH2-02-002-PR-1400 |
| HFR1-05-10010 |  | Staging Time For Feeder Pillers | 7d | 2026-06-24 A | 2026-06-28 A | HFR1-05-10000 | 100% | 2026-07-16 | 2026-07-23 |  |  |  | 72 |  | Z4 |  |  |  |  |
|  | 6 | **Street Lighting Poles** |  | 2026-01-28 | 2026-05-16 |  |  |  |  |  |  |  |  |  |  |  |  |  |  |
| HFR1-05-2330 |  | PO for Street Lighting Poles | 8d | 2026-01-28 A | 2026-02-05 A | HFR1-05-8140 | 100% |  |  | Purchaser [32 h] |  |  | -1 | CON-LEG101-PR-3160 | C1 | E3720 | 0 | 0 | MKH2-02-002-PR-1320 |
| HFR1-05-2340 |  | Material Fabrication for Street Lighting Poles | 45d | 2026-03-10 A | 2026-03-17 A | HFR1-05-2330 FS+25d | 100% | 2026-04-09 | 2026-06-03 | QA/QC Engineer [128 h] |  |  | 31 | CON-LEG101-PR-3170 | C2 | E3750 | 0 | 0 | MKH2-02-002-PR-1360 |
| HFR1-05-2350 |  | Material Delivery for Street Lighting Poles | 55d | 2026-03-30 A | 2026-05-13 A | HFR1-05-2340 | 100% | 2026-06-04 | 2026-08-06 | QA/QC Engineer [48 h]; Eng+Pro+Tc [550]; PRO-LONG-ELEC [1] | 102,807 | 102,807 | 31 | CON-LEG101-PR-3180 | C3 | E3780 | 0.245815896638331 | 0.00245815896638331 | MKH2-02-002-PR-1400 |
| HFR1-05-2360 |  | Staging Time For Street Lighting Poles | 7d | 2026-05-14 A | 2026-05-16 A | HFR1-05-2350 | 100% | 2026-07-23 | 2026-07-30 |  |  |  | 31 |  | C4 |  |  |  |  |
|  | 7 | **Street Lighting Luminaires** |  | 2026-01-28 | 2026-07-04 |  |  |  |  |  |  |  |  |  |  |  |  |  |  |
| HFR1-05-1960 |  | PO for Street Lighting Luminaires | 8d | 2026-01-28 A | 2026-02-05 A | HFR1-05-8180 | 100% |  |  | Purchaser [32 h] |  |  | -1 | CON-LEG101-PR-3160 | A1 | E3720 | 0 | 0 | MKH2-02-002-PR-1320 |
| HFR1-05-2250 |  | Material Fabrication for Street Lighting Luminaires | 35d | 2026-03-15 A | 2026-03-26 A | HFR1-05-1960 FS+25d | 100% | 2026-04-09 | 2026-05-19 | QA/QC Engineer [128 h] |  |  | 31 | CON-LEG101-PR-3170 | A2 | E3750 | 0 | 0 | MKH2-02-002-PR-1360 |
| HFR1-05-2260 |  | Material Delivery for Street Lighting Luminaires | 55d | 2026-04-02 A | 2026-06-28 A | HFR1-05-2250 | 100% | 2026-05-20 | 2026-07-26 | QA/QC Engineer [48 h]; Eng+Pro+Tc [550]; PRO-LONG-ELEC [1] | 102,807 | 92,526.3 | 31 | CON-LEG101-PR-3180 | A222 | E3780 | 0.245815896638331 | 0.00245815896638331 | MKH2-02-002-PR-1400 |
| HFR1-05-2270 |  | Staging Time For Street Lighting Luminaires | 7d | 2026-06-29 A | 2026-07-04 A | HFR1-05-2260 | 100% | 2026-07-18 | 2026-07-25 |  |  |  | 31 |  | A4 |  |  |  |  |
|  | 8 | **Low Voltage Cables** |  | 2026-01-28 | 2026-07-07 |  |  |  |  |  |  |  |  |  |  |  |  |  |  |
| HFR1-05-9810 |  | PO for Low Voltage Cables | 8d | 2026-01-28 A | 2026-02-05 A | HFR1-05-8150 | 100% |  |  | Purchaser [32 h] |  |  | -1 | CON-LEG101-PR-3160 | Q1 | E3720 | 0 | 0 | MKH2-02-002-PR-1320 |
| HFR1-05-9820 |  | Material Fabrication for Low Voltage Cables | 45d | 2026-03-09 A | 2026-03-24 A | HFR1-05-9810 FS+25d | 100% | 2026-04-09 | 2026-06-03 | QA/QC Engineer [128 h] |  |  | 31 | CON-LEG101-PR-3170 | Q2 | E3750 | 0 | 0 | MKH2-02-002-PR-1360 |
| HFR1-05-9830 |  | Material Delivery for Low Voltage Cables | 45d | 2026-03-31 A | 2026-06-29 A | HFR1-05-9820 | 100% | 2026-06-04 | 2026-07-26 | QA/QC Engineer [48 h]; Eng+Pro+Tc [450]; PRO-LONG-ELEC [1] | 102,807 | 92,526.3 | 31 | CON-LEG101-PR-3180 | Q3 | E3780 | 0.245815896638331 | 0.00245815896638331 | MKH2-02-002-PR-1400 |
| HFR1-05-9840 |  | Staging Time For Low Voltage Cables | 7d | 2026-06-30 A | 2026-07-07 A | HFR1-05-9830 | 100% | 2026-07-18 | 2026-07-25 |  |  |  | 31 |  | Q4 |  |  |  |  |

| ID | WBS | Activity | Duration | Start | Finish | Predecessors | Complete | Planned start | Planned finish | Resources | Cost | Actual cost | Delay Activties | Old Activity ID-Alhasa | Old Activity ID | Total Weight % | Mapping Sheet Activity ID | USERTEXT | Weight 1 |
| --- | --- | --- | --- | --- | --- | --- | --- | --- | --- | --- | --- | --- | --- | --- | --- | --- | --- | --- | --- |
|  | 9 | **LED Lighting Fixtures** |  | 2026-01-28 | 2026-06-30 |  |  |  |  |  |  |  |  |  |  |  |  |  |  |
| HFR1-05-9900 |  | PO for LED Lighting Fixtures | 8d | 2026-01-28 A | 2026-02-05 A | HFR1-05-8190 | 100% |  |  | Purchaser [32 h] |  |  | -1 | W1 | CON-LEG101-PR-3160 | 0 | E3720 | MKH2-02-002-PR-1320 | 0 |
| HFR1-05-9910 |  | Material Fabrication for LED Lighting Fixtures | 40d | 2026-03-16 A | 2026-03-30 A | HFR1-05-9900 FS+25d | 100% | 2026-04-09 | 2026-05-25 | QA/QC Engineer [128 h] |  |  | 31 | W2 | CON-LEG101-PR-3170 | 0 | E3750 | MKH2-02-002-PR-1360 | 0 |
| HFR1-05-9920 |  | Material Delivery for LED Lighting Fixtures | 45d | 2026-04-01 A | 2026-06-25 A | HFR1-05-9910 | 100% | 2026-05-30 | 2026-07-20 | QA/QC Engineer [48 h]; Eng+Pro+Tc [450]; PRO-LONG-ELEC [1] | 102,807 | 92,526.3 | 31 | W3 | CON-LEG101-PR-3180 | 0.245815896638331 | E3780 | MKH2-02-002-PR-1400 | 0.00245815896638331 |
| HFR1-05-9930 |  | Staging Time For LED Lighting Fixtures | 7d | 2026-06-27 A | 2026-06-30 A | HFR1-05-9920 | 100% | 2026-08-24 | 2026-08-31 |  |  |  | 31 | W4 |  |  |  |  |  |
|  | 10 | **Power Panel** |  | 2026-01-28 | 2026-06-29 |  |  |  |  |  |  |  |  |  |  |  |  |  |  |
| HFR1-05-4820 |  | PO for Power Panel | 8d | 2026-01-28 A | 2026-02-05 A | HFR1-05-8200 | 100% |  |  | Purchaser [32 h] |  |  | -1 | HAS3-1800 | CON-LEG101-PR-3160 | 0 | E3720 | MKH2-02-002-PR-1320 | 0 |
| HFR1-05-5940 |  | Material Fabrication for Power Panel | 45d | 2026-03-17 A | 2026-03-31 A | HFR1-05-4820 FS+20d | 100% | 2026-04-09 | 2026-06-03 | QA/QC Engineer [128 h] |  |  | 38 | HAS3-3300 | CON-LEG101-PR-3170 | 0 | E3750 | MKH2-02-002-PR-1360 | 0 |
| HFR1-05-9410 |  | Material Delivery for Power Panel | 55d | 2026-04-04 A | 2026-06-25 A | HFR1-05-5940 | 100% | 2026-06-04 | 2026-08-06 | QA/QC Engineer [48 h]; Eng+Pro+Tc [550]; PRO-LONG-ELEC [1] | 102,807 | 92,526.3 | 38 | HAS3-9540 | CON-LEG101-PR-3180 | 0.245815896638331 | E3780 | MKH2-02-002-PR-1400 | 0.00245815896638331 |
| HFR1-05-9420 |  | Staging Time For Power Panel | 7d | 2026-06-25 A | 2026-06-29 A | HFR1-05-9410 | 100% | 2026-07-02 | 2026-07-09 |  |  |  | 38 | HAS3-9544 |  |  |  |  |  |
|  | 11 | **Control Panels** |  | 2026-01-28 | 2026-04-16 |  |  |  |  |  |  |  |  |  |  |  |  |  |  |
| HFR1-05-4830 |  | PO for Control Panels | 8d | 2026-01-28 A | 2026-02-05 A | HFR1-05-8160 | 100% |  |  | Purchaser [32 h] |  |  | -1 | HAS3-1810 | CON-LEG101-PR-3160 | 0 | E3720 | MKH2-02-002-PR-1320 | 0 |
| HFR1-05-5950 |  | Material Fabrication for Control Panels | 40d | 2026-03-11 A | 2026-03-30 A | HFR1-05-4830 FS+20d | 100% | 2026-04-09 | 2026-05-25 | QA/QC Engineer [128 h] |  |  | 38 | HAS3-3310 | CON-LEG101-PR-3170 | 0 | E3750 | MKH2-02-002-PR-1360 | 0 |
| HFR1-05-9270 |  | Material Delivery for Control Panels | 45d | 2026-04-02 A | 2026-04-13 A | HFR1-05-5950 | 100% | 2026-05-30 | 2026-07-20 | QA/QC Engineer [48 h]; Eng+Pro+Tc [450]; PRO-LONG-ELEC [1] | 102,807 | 102,807 | 38 | HAS3-8730 | CON-LEG101-PR-3180 | 0.245815896638331 | E3780 | MKH2-02-002-PR-1400 | 0.00245815896638331 |
| HFR1-05-9290 |  | Staging Time For Control Panels | 7d | 2026-04-14 A | 2026-04-16 A | HFR1-05-9270 | 100% | 2026-06-18 | 2026-06-25 |  |  |  | 38 | HAS3-8745 |  |  |  |  |  |
|  | 12 | **Isolator & Disconnecting Switches** |  | 2026-02-02 | 2026-06-29 |  |  |  |  |  |  |  |  |  |  |  |  |  |  |
| HFR1-05-4840 |  | PO for Isolator & Disconnecting Switches | 8d | 2026-02-02 A | 2026-02-11 A | HFR1-05-8170 | 100% | 2026-04-09 | 2026-04-18 | Purchaser [32 h] |  |  | 72 | HAS3-1820 | CON-LEG101-PR-3160 | 0 | E3720 | MKH2-02-002-PR-1320 | 0 |
| HFR1-05-5960 |  | Material Fabrication for Isolator & Disconnecting Switches | 45d | 2026-03-10 A | 2026-03-30 A | HFR1-05-4840 FS+25d | 100% | 2026-05-18 | 2026-07-12 | QA/QC Engineer [128 h] |  |  | 72 | HAS3-3320 | CON-LEG101-PR-3170 | 0 | E3750 | MKH2-02-002-PR-1360 | 0 |
| HFR1-05-9430 |  | Material Delivery for Isolator & Disconnecting Switches | 45d | 2026-04-02 A | 2026-06-25 A | HFR1-05-5960 | 100% | 2026-07-13 | 2026-09-02 | QA/QC Engineer [48 h]; Eng+Pro+Tc [450]; PRO-LONG-ELEC [1] | 102,807 | 92,526.3 | 72 | HAS3-9550 | CON-LEG101-PR-3180 | 0.245815896638331 | E3780 | MKH2-02-002-PR-1400 | 0.00245815896638331 |
| HFR1-05-9440 |  | Staging Time For Isolator & Disconnecting Switches | 7d | 2026-06-25 A | 2026-06-29 A | HFR1-05-4600, HFR1-05-9430 | 100% | 2026-07-30 | 2026-08-06 |  |  |  | 72 | HAS3-9555 |  |  |  |  |  |
|  | 13 | **Cable Trays** |  | 2026-05-03 | 2026-06-22 |  |  |  |  |  |  |  |  |  |  |  |  |  |  |
| HFR1-05-4850 |  | PO for Cable Trays | 8d | 2026-05-03 A | 2026-05-12 A | HFR1-05-8240 | 100% | 2026-06-06 | 2026-06-14 | Purchaser [32 h] |  |  | 72 | HAS3-1830 | CON-LEG101-PR-3160 | 0 | E3720 | MKH2-02-002-PR-1320 | 0 |
| HFR1-05-5970 |  | Material Fabrication for Cable Trays | 45d | 2026-05-14 A | 2026-05-21 A | HFR1-05-4850 FS+25d | 100% | 2026-06-14 | 2026-08-04 | QA/QC Engineer [128 h] |  |  | 72 | HAS3-3330 | CON-LEG101-PR-3170 | 0 | E3750 | MKH2-02-002-PR-1360 | 0 |
| HFR1-05-9450 |  | Material Delivery for Cable Trays | 35d | 2026-06-09 A | 2026-06-17 A | HFR1-05-5970 | 100% | 2026-06-14 | 2026-07-23 | QA/QC Engineer [48 h]; Eng+Pro+Tc [350]; PRO-LONG-ELEC [1] | 102,807 | 92,526.3 | 72 | HAS3-9560 | CON-LEG101-PR-3180 | 0.245815896638331 | E3780 | MKH2-02-002-PR-1400 | 0.00245815896638331 |
| HFR1-05-9460 |  | Staging Time For Cable Trays | 7d | 2026-06-20 A | 2026-06-22 A | HFR1-05-9450 | 100% | 2026-08-06 | 2026-08-13 |  |  |  | 72 | HAS3-9565 |  |  |  |  |  |

| ID | WBS | Activity | Duration | Start | Finish | Predecessors | Complete | Planned start | Planned finish | Resources | Cost | Actual cost | Delay Activties | Old Activity ID-Alhasa | Old Activity ID | Mapping Sheet Activity ID | Total Weight % | Weight 1 | USERTEXT |
| --- | --- | --- | --- | --- | --- | --- | --- | --- | --- | --- | --- | --- | --- | --- | --- | --- | --- | --- | --- |
|  | 14 | **KWHM** |  | 2026-01-28 | 2026-04-04 |  |  |  |  |  |  |  |  |  |  |  |  |  |  |
| HFR1-05-4860 |  | PO for KWHM | 8d | 2026-01-28 A | 2026-02-05 A | HFR1-05-8210 | 100% | 2026-04-18 | 2026-04-26 | Purchaser [32 h] |  |  | 72 | HAS3-1840 | CON-LEG101-PR-3160 | E3720 | 0 | 0 | MKH2-02-002-PR-1320 |
| HFR1-05-5980 |  | Material Fabrication for KWHM | 25d | 2026-02-25 A | 2026-03-03 A | HFR1-05-4860 FS+25d | 100% | 2026-05-30 | 2026-06-27 | QA/QC Engineer [128 h] |  |  | 72 | HAS3-3340 | CON-LEG101-PR-3170 | E3750 | 0 | 0 | MKH2-02-002-PR-1360 |
| HFR1-05-9480 |  | Staging Time For KWHM | 7d | 2026-03-05 A | 2026-04-01 A | HFR1-05-9470 | 100% | 2026-07-27 | 2026-08-03 |  |  |  | 72 | HAS3-9574 |  |  |  |  |  |
| HFR1-05-9470 |  | Material Delivery for KWHM | 25d | 2026-04-02 A | 2026-04-04 A | HFR1-05-5980, HFR1-05-9800 | 100% | 2026-06-28 | 2026-07-26 | QA/QC Engineer [48 h]; Eng+Pro+Tc [420]; PRO-LONG-ELEC [1] | 102,807 | 102,807 | 72 | HAS3-9570 | CON-LEG101-PR-3180 | E3780 | 0.245815896638331 | 0.00245815896638331 | MKH2-02-002-PR-1400 |
|  | 15 | **Safety Disconnect Switches** |  | 2026-02-10 | 2026-05-05 |  |  |  |  |  |  |  |  |  |  |  |  |  |  |
| HFR1-05-4870 |  | PO for Safety Disconnect Switches | 8d | 2026-02-10 A | 2026-02-28 A | HFR1-05-8220 | 100% | 2026-04-23 | 2026-05-02 | Purchaser [32 h] |  |  | 72 | HAS3-1850 | CON-LEG101-PR-3160 | E3720 | 0 | 0 | MKH2-02-002-PR-1320 |
| HFR1-05-5990 |  | Material Fabrication for Safety Disconnect Switches | 40d | 2026-03-01 A | 2026-03-24 A | HFR1-05-4870 FS+25d | 100% | 2026-06-04 | 2026-07-20 | QA/QC Engineer [128 h] |  |  | 72 | HAS3-3350 | CON-LEG101-PR-3170 | E3750 | 0 | 0 | MKH2-02-002-PR-1360 |
| HFR1-05-9280 |  | Material Delivery for Safety Disconnect Switches | 40d | 2026-04-01 A | 2026-05-02 A | HFR1-05-5990 | 100% | 2026-07-06 | 2026-08-20 | QA/QC Engineer [48 h]; Eng+Pro+Tc [400]; PRO-LONG-ELEC [1] | 102,807 | 102,807 | 72 | HAS3-8740 | CON-LEG101-PR-3180 | E3780 | 0.245815896638331 | 0.00245815896638331 | MKH2-02-002-PR-1400 |
| HFR1-05-9300 |  | Staging Time For Safety Disconnect Switches | 7d | 2026-05-02 A | 2026-05-05 A | HFR1-05-9280, HFR1-05-9480 | 100% | 2026-05-09 | 2026-05-17 |  |  |  | 72 | HAS3-8746 |  |  |  |  |  |
|  | 18 | **Lightning Protection System** |  | 2026-01-28 | 2026-06-25 |  |  |  |  |  |  |  |  |  |  |  |  |  |  |
| HFR1-05-4880 |  | PO for Lightning Protection System | 8d | 2026-01-28 A | 2026-02-05 A | HFR1-05-8280 | 100% |  |  | Purchaser [32 h] |  |  | -1 | HAS3-1860 | CON-LEG101-PR-3160 | E3720 | 0 | 0 | MKH2-02-002-PR-1320 |
| HFR1-05-6000 |  | Material Fabrication for Lightning Protection System | 44d | 2026-02-07 A | 2026-02-12 A | HFR1-05-4880 FS+25d | 100% | 2026-03-09 | 2026-05-02 | QA/QC Engineer [128 h] |  |  | -80 | HAS3-3360 | CON-LEG101-PR-3170 | E3750 | 0 | 0 | MKH2-02-002-PR-1360 |
| HFR1-05-9350 |  | Material Delivery for Lightning Protection System | 44d | 2026-02-13 A | 2026-06-15 A | HFR1-05-6000 | 100% | 2026-05-03 | 2026-06-25 | QA/QC Engineer [48 h]; Eng+Pro+Tc [440]; PRO-LONG-ELEC [1] | 102,807 | 92,526.6 | -128 | HAS3-9330 | CON-LEG101-PR-3180 | E3780 | 0.245815896638331 | 0.00245815896638331 | MKH2-02-002-PR-1400 |
| HFR1-05-9360 |  | Staging Time For Lightning Protection System | 7d | 2026-06-18 A | 2026-06-25 A | HFR1-05-9350, HFR1-05-9460, HFR1-05-9290 | 100% | 2026-06-27 | 2026-07-04 |  |  |  | -134 | HAS3-9333 |  |  |  |  |  |
|  | 19 | **Fire Alarm System** |  | 2026-01-28 | 2026-07-04 |  |  |  |  |  |  |  |  |  |  |  |  |  |  |
| HFR1-05-9850 |  | PO for Fire Alarm System | 8d | 2026-01-28 A | 2026-02-05 A | HFR1-05-8800 | 100% |  |  | Purchaser [32 h] |  |  | -1 | R1 | CON-LEG101-PR-3160 | E3720 | 0 | 0 | MKH2-02-002-PR-1320 |
| HFR1-05-9860 |  | Material Fabrication for Fire Alarm System | 52d | 2026-03-18 A | 2026-03-31 A | HFR1-05-9850 FS+25d | 100% | 2026-04-09 | 2026-06-11 | QA/QC Engineer [128 h] |  |  | 31 | R2 | CON-LEG101-PR-3170 | E3750 | 0 | 0 | MKH2-02-002-PR-1360 |
| HFR1-05-9870 |  | Material Delivery for Fire Alarm System | 45d | 2026-04-02 A | 2026-06-29 A | HFR1-05-9860 | 100% | 2026-06-13 | 2026-08-03 | QA/QC Engineer [48 h]; Eng+Pro+Tc [520]; PRO-LONG-ELEC [1] | 102,807 | 92,526.3 | 31 | R3 | CON-LEG101-PR-3180 | E3780 | 0.245815896638331 | 0.00245815896638331 | MKH2-02-002-PR-1400 |
| HFR1-05-9880 |  | Staging Time For Fire Alarm System | 7d | 2026-06-30 A | 2026-07-04 A | HFR1-05-9870, HFR1-05-9360, HFR1-05-9930, HFR1-05-9840 | 100% | 2026-09-27 | 2026-10-04 |  |  |  | 60 | R4 |  |  |  |  |  |
|  | 20 | **Solar Power Plant** |  | 2026-02-16 | 2026-06-22 |  |  |  |  |  |  |  |  |  |  |  |  |  |  |
| HFR1-05-4890 |  | PO for Solar Power Plant | 8d | 2026-02-16 A | 2026-03-01 A | HFR1-05-8810 | 100% | 2026-04-09 | 2026-04-18 | Purchaser [32 h] |  |  | 72 | HAS3-1880 | CON-LEG101-PR-3160 | E3720 | 0 | 0 | MKH2-02-002-PR-1320 |
| HFR1-05-6010 |  | Material Fabrication for Solar Power Plant | 40d | 2026-03-18 A | 2026-03-31 A | HFR1-05-4890 FS+25d | 100% | 2026-05-18 | 2026-07-06 | QA/QC Engineer [128 h] |  |  | 72 | HAS3-3380 | CON-LEG101-PR-3170 | E3750 | 0 | 0 | MKH2-02-002-PR-1360 |
| HFR1-05-9320 |  | Material Delivery for Solar Power Plant | 40d | 2026-04-05 A | 2026-06-15 A | HFR1-05-6010 | 100% | 2026-07-07 | 2026-08-22 | QA/QC Engineer [48 h]; Eng+Pro+Tc [470]; PRO-LONG-ELEC [1] | 102,807 | 102,807 | 72 | HAS3-9280 | CON-LEG101-PR-3180 | E3780 | 0.245815896638331 | 0.00245815896638331 | MKH2-02-002-PR-1400 |
| HFR1-05-9330 |  | Staging Time For Solar Power Plant | 7d | 2026-06-18 A | 2026-06-22 A | HFR1-05-9320 | 100% | 2026-06-14 | 2026-06-21 |  |  |  | 72 | HAS3-9285 |  |  |  |  |  |

| ID | WBS | Activity | Duration | Start | Finish | Predecessors | Complete | Planned start | Planned finish | Resources | Cost | Actual cost | Delay Activties | Old Activity ID-Alhasa | Old Activity ID | Mapping Sheet Activity ID | Total Weight % | Weight 1 | USERTEXT |
| --- | --- | --- | --- | --- | --- | --- | --- | --- | --- | --- | --- | --- | --- | --- | --- | --- | --- | --- | --- |
|  | 21 | **Skylight Fixtures** |  | 2026-05-02 | 2026-07-05 |  |  |  |  |  |  |  |  |  |  |  |  |  |  |
| HFR1-05-4900 |  | PO for Skylight Fixtures | 8d | 2026-05-02 A | 2026-05-12 A | HFR1-05-8790 | 100% | 2026-06-04 | 2026-06-13 | Purchaser [32 h] |  |  | 72 | HAS3-1890 | CON-LEG101-PR-3160 | E3720 | 0 | 0 | MKH2-02-002-PR-1320 |
| HFR1-05-6020 |  | Material Fabrication for Skylight Fixtures | 25d | 2026-05-14 A | 2026-05-23 A | HFR1-05-4900 FS+25d | 100% | 2026-06-14 | 2026-07-12 | QA/QC Engineer [128 h] |  |  | 72 | HAS3-3390 | CON-LEG101-PR-3170 | E3750 | 0 | 0 | MKH2-02-002-PR-1360 |
| HFR1-05-9490 |  | Material Delivery for Skylight Fixtures | 25d | 2026-06-01 A | 2026-06-30 A | HFR1-05-6020 | 100% | 2026-07-13 | 2026-08-10 | QA/QC Engineer [48 h]; Eng+Pro+Tc [520]; PRO-LONG-ELEC [1] | 102,807 | 82,245.6 | 72 | HAS3-9580 | CON-LEG101-PR-3180 | E3780 | 0.245815896638331 | 0.00245815896638331 | MKH2-02-002-PR-1400 |
| HFR1-05-9500 |  | Staging Time For Skylight Fixtures | 7d | 2026-07-01 A | 2026-07-05 A | HFR1-05-9490 | 100% | 2026-08-11 | 2026-08-18 |  |  |  | 72 | HAS3-9585 |  |  |  |  |  |
|  | 3 | **Construction phase** |  | 2025-12-29 | 2026-12-15 |  |  |  |  |  |  |  |  |  |  |  |  |  |  |
|  | 6 | **Siite General Works** |  | 2025-12-29 | 2026-04-23 |  |  |  |  |  |  |  |  |  |  |  |  |  |  |
|  | 5 | **Earth Works -All Site** |  | 2025-12-29 | 2026-04-04 |  |  |  |  |  |  |  |  |  |  |  |  |  |  |
| HFR1-05-1250 |  | Demolition of the existing curbstone | 5d | 2025-12-29 A | 2026-01-03 A | HFR1-05-7910, HFR1-05-3110, HFR1-05-5690, HFR1-05-6860, HFR1-05-8890 | 100% |  |  | LABOR [15 h]; Demolition of the existing curbstone [48]; Excavator [50 h]; Labor [50 h]; Skilled Labor [50 h]; Eq. Operator [50 h] | 1,728 | 1,728 | -1 | 200 |  |  |  |  |  |
| HFR1-05-1260 |  | Excavation for all site | 7d | 2026-01-04 A | 2026-01-11 A | HFR1-05-1250 | 100% |  |  | LABOR [5 h]; POCLAIN [24.24 h]; Bob Cat [1.51 h]; Dump Truck 16 m3 [4.52 h]; Dump Truck 26 m3 [4.52 h]; Poclain Excavator [12.05 h]; Bulldozr (D8) [1.51 h]; Payloader [1.51 h]; Excavation [13444]; Excavator [70 h]; Grider [70 h]; Truck [140 h]; Eq. Operator [280 h] | 322,656 | 322,656 | -1 | 201 |  |  |  |  |  |
| HFR1-05-1270 |  | Termite Protection (Soil Treatment) | 5d | 2026-01-12 A | 2026-01-17 A | HFR1-05-1260 | 100% |  |  | LABOR [5 h]; Termite Controle tech [0.75 h]; Excavation [75]; Labor [100 h]; Skilled Labor [100 h] | 1,800 | 1,800 | -1 | 203 |  |  |  |  |  |
| HFR1-05-1280 |  | Backfilling after G.BColumns nescks -Footing /4 layers | 3d | 2026-01-26 A | 2026-01-31 A | HFR1-05-3050 | 100% | 2026-03-12 | 2026-03-15 | Loder [1.51 h]; Truk [60 h]; LABOR [3.77 h]; Bob Cat [4.52 h]; Dump Truck 16 m3 [3.62 h]; Poclain Excavator [8.44 h]; Bulldozr (D8) [4.52 h]; Grader [2.26 h]; Backfilling [4911]; Bobcat [120 h]; Compactor [60 h]; Labor [300 h]; Eq. Operator [180 h] | 162,063 | 162,063 | -46 | 205 |  |  |  |  |  |
| HFR1-05-1290 |  | Backfilling after G.BColumns nescks -Footing/second four layers | 3d | 2026-03-11 A | 2026-04-04 A | HFR1-05-1280 | 100% | 2026-05-04 | 2026-05-06 | Loder [29.08 h]; Truk [29.08 h]; LABOR [21.81 h]; Backfilling [4908]; Bobcat [120 h]; Compactor [60 h]; Labor [300 h]; Skilled Labor [300 h]; Eq. Operator [180 h] | 161,964 | 161,964 | 52 | 206 |  |  |  |  |  |
|  | 4 | **Reinforced Concrete foundations Works all site** |  | 2026-01-27 | 2026-03-12 |  |  |  |  |  |  |  |  |  |  |  |  |  |  |
| HFR1-05-1010 |  | Lean Concrete Formwork Preparation and pouring | 5d | 2026-01-27 A | 2026-02-01 A | HFR1-05-1270, HFR1-05-3700 SS, HFR1-05-7530, HFR1-05-7520, HFR1-05-7510, HFR1-05-6950, HFR1-05-6940, HFR1-05-6930, HFR1-05-6920, HFR1-05-9050, HFR1-05-9040, HFR1-05-9030, HFR1-05-9020, HFR1-05-8570, HFR1-05-8650, HFR1-05-8560, HFR1-05-8550, HFR1-05-8540, HFR1-05-8650 FF, HFR1-05-6160, HFR1-05-7540, HFR1-05-7550, HFR1-05-7560, HFR1-05-7570, HFR1-05-7580, HFR1-05-7590, HFR1-05-7600, HFR1-05-7610, HFR1-05-7870, HFR1-05-8820, HFR1-05-8830, HFR1-05-7880, HFR1-05-8840, HFR1-05-8850, HFR1-05-8490, HFR1-05-8500, HFR1-05-8510, HFR1-05-8520, HFR1-05-8530, HFR1-05-8700, HFR1-05-8710, HFR1-05-8720, HFR1-05-8730, HFR1-05-8660, HFR1-05-8670, HFR1-05-8680, HFR1-05-8690, HFR1-05-8620, HFR1-05-8630, HFR1-05-8640, HFR1-05-8650 SS | 100% |  |  | LABOR [25.45 h]; Dump Truck 16 m3 [8.44 h]; Vibratory Roller [8.44 h]; Gomaco Concrete [8.44 h]; Bitumen Tanker [8.44 h]; Lean concrete under foundation and grade beams. [155]; Labor [200 h]; Skilled Labor [100 h]; Mason [200 h] | 7,130 | 7,130 | -1 | 100 |  |  |  |  |  |
| HFR1-05-1020 |  | Lean Concrete Curing | 3d | 2026-02-02 A | 2026-02-04 A | HFR1-05-1010 | 100% |  |  | LABOR [10.91 h]; Dump Truck 16 m3 [3.62 h]; Vibratory Roller [3.62 h]; Gomaco Concrete [3.62 h]; Bitumen Tanker [3.62 h]; Lean concrete under foundation and grade beams. [157]; Labor [60 h] | 7,222 | 7,222 | -1 | 101 |  |  |  |  |  |
| HFR1-05-1030 |  | Footings Rebar Fixing | 3d | 2026-02-05 A | 2026-02-08 A | HFR1-05-1020, HFR1-05-9160 SS | 100% |  |  | LABOR [15 h]; Steel Fixer [10 h]; Isolated Footings [55]; Labor [120 h]; Skilled Labor [60 h]; Steel Fixer [120 h] | 49,830 | 49,830 | -1 | 103 |  |  |  |  |  |
| HFR1-05-1050 |  | Footings Inspection | 3d | 2026-02-07 A | 2026-02-10 A | HFR1-05-1040, HFR1-05-9010 | 100% | 2026-02-15 | 2026-02-17 | LABOR [10.91 h]; Isolated Footings [21.54]; Skilled Labor [60 h] | 19,515.24 | 19,515.24 | -9 | 105 |  |  |  |  |  |
| HFR1-05-1040 |  | Footings Formwork | 5d | 2026-02-09 A | 2026-02-14 A | HFR1-05-1030, HFR1-05-2990 | 100% |  |  | LABOR [15 h]; Carpenter [32.72 h]; Isolated Footings [13.25]; Labor [200 h]; Skilled Labor [100 h]; Carpenter [200 h] | 12,004.5 | 12,004.5 | -1 | 104 |  |  |  |  |  |
| HFR1-05-1060 |  | Footings Concrete Pouring | 2d | 2026-02-15 A | 2026-02-16 A | HFR1-05-1050 | 100% | 2026-02-18 | 2026-02-19 | CONCRETE MIixer [3.64 h]; LABOR [10.91 h]; Dump Truck 16 m3 [3.62 h]; Vibratory Roller [3.62 h]; Gomaco Concrete [3.62 h]; Bitumen Tanker [3.62 h]; Isolated Footings [31.48]; Labor [80 h]; Skilled Labor [60 h]; Mason [80 h] | 28,520.88 | 28,520.88 | -5 | 106 |  |  |  |  |  |
| HFR1-05-1070 |  | Footings Curing | 2d | 2026-02-15 A | 2026-03-05 A | HFR1-05-1060 | 100% | 2026-02-21 | 2026-02-23 | LABOR [10.91 h]; Labour [10.91 h]; Dump Truck 16 m3 [1.21 h]; Vibratory Roller [7.32 h]; Gomaco Concrete [1.21 h]; Bitumen Tanker [1.21 h]; Isolated Footings [3.15]; Labor [40 h] | 2,853.9 | 2,853.9 | 56 | 106-1 |  |  |  |  |  |
| HFR1-05-1080 |  | Grade beams Rebar Fixing | 4d | 2026-02-16 A | 2026-03-02 A | HFR1-05-1070 | 100% | 2026-02-24 | 2026-02-28 | LABOR [21.81 h]; Steel Fixer [36.36 h]; Dump Truck 16 m3 [7.23 h]; Vibratory Roller [7.23 h]; Gomaco Concrete [7.23 h]; Bitumen Tanker [7.23 h]; Grade beams [54.25]; Labor [160 h]; Skilled Labor [80 h]; Steel Fixer [160 h] | 56,148.75 | 56,148.75 | 56 | 107 |  |  |  |  |  |
| HFR1-05-1090 |  | Form Works for Grade beams | 4d | 2026-02-19 A | 2026-03-04 A | HFR1-05-1080 | 100% | 2026-03-01 | 2026-03-04 | LABOR [10 h]; Carpenter [15 h]; Grade beams [11.6]; Labor [160 h]; Skilled Labor [80 h]; Carpenter [160 h] | 12,006 | 12,006 | 56 | 108 |  |  |  |  |  |
| HFR1-05-3020 |  | Grade beams Inspection | 2d | 2026-02-21 A | 2026-03-03 A | HFR1-05-1090 | 100% | 2026-03-05 | 2026-03-07 | LABOR [14.54 h]; Steel Fixer [24.24 h]; Dump Truck 16 m3 [1.21 h]; Vibratory Roller [1.21 h]; Gomaco Concrete [1.21 h]; Grade beams [38.75]; Labor [40 h] | 40,106.25 | 40,106.25 | 56 | HAS3-10460 |  |  |  |  |  |
| HFR1-05-3030 |  | Pouring Concrete works for Grade beams | 2d | 2026-03-03 A | 2026-03-11 A | HFR1-05-3020 | 100% | 2026-05-03 | 2026-05-04 | CONCRETE MIixer [7.27 h]; LABOR [21.81 h]; Labour [21.81 h]; Dump Truck 16 m3 [2.41 h]; Vibratory Roller [2.41 h]; Gomaco Concrete [2.41 h]; Bitumen Tanker [2.41 h]; Grade beams [12.09]; Labor [80 h]; Skilled Labor [60 h]; Mason [80 h] | 12,513.15 | 12,513.15 | 56 | HAS3-10470 |  |  |  |  |  |
| HFR1-05-3050 |  | Beams Curing Works | 2d | 2026-03-07 A | 2026-03-12 A | HFR1-05-3030 | 100% | 2026-05-06 | 2026-05-07 | LABOR [14.54 h]; Dump Truck 16 m3 [2.41 h]; Vibratory Roller [2.41 h]; Gomaco Concrete [2.41 h]; Bitumen Tanker [2.41 h]; Grade beams [23.25]; Labor [40 h] | 24,063.75 | 24,063.75 | 56 | HAS3-10500 |  |  |  |  |  |

| ID | WBS | Activity | Duration | Start | Finish | Predecessors | Complete | Remaining | Planned start | Planned finish | Resources | Cost | Actual cost | Delay Activties | Old Activity ID-Alhasa |
| --- | --- | --- | --- | --- | --- | --- | --- | --- | --- | --- | --- | --- | --- | --- | --- |
|  | 6 | **Insulation Works** |  | 2026-01-06 | 2026-04-23 |  |  |  |  |  |  |  |  |  |  |
| HFR1-05-2950 |  | Waterproofing bitumen Surface Preparation | 3d | 2026-01-06 A | 2026-04-23 A | HFR1-05-3050, HFR1-05-9140 | 100% |  | 2026-03-12 | 2026-03-15 | LABOR [2.41 h]; LABOR [58.17 h]; Insulation Tection [58.17 h]; Provide and apply 2 coats of bitumen waterproofing paint on concrete surface in contact with soil. [2853.79]; Supply and lay 250 micron thk polyethylene sheet under grade slab and footings [12416]; Supply and apply anti termite under all concrete in touch with earth for all buildings as per manufacture instructions, engineer approval [10463.9]; Labor [60 h]; Skilled Labor [60 h] | 187,646.72 | 187,646.72 | 56 | HAS3-10130 |
| HFR1-05-2970 |  | Waterproofing Application | 3d | 2026-02-01 A | 2026-04-23 A | HFR1-05-9090, HFR1-05-2950 | 100% |  | 2026-03-16 | 2026-03-22 | LABOR [2.41 h]; Insulation Tection [7.53 h]; Supplying and fixing 3mm thk extruded aluminum flashing 40mm with sealent and 50*50mm cant strip. [6278.33]; Labor [60 h]; Skilled Labor [60 h] | 188,349.9 | 188,349.9 | 56 | HAS3-10190 |
|  | 12 | **Hunger -1** |  | 2026-02-02 | 2026-11-28 |  |  |  |  |  |  |  |  |  |  |
|  | 7 | **Concrete works** |  | 2026-04-12 | 2026-05-03 |  |  |  |  |  |  |  |  |  |  |
| HFR1-05-2440 |  | SOG (Whole Factory) Form work | 5d | 2026-04-12 A | 2026-04-29 A | HFR1-05-3050 | 100% |  | 2026-05-05 | 2026-05-10 | LABOR [4.52 h]; Mobilization [2.91 h]; Carpenter [4.52 h]; Provide and cast 150 mm thk concrete floor slab on grade [24.36]; Labor [280 h]; Skilled Labor [140 h]; Carpenter [280 h] | 22,411.2 | 22,411.2 | 56 | HA-10-1010 |
| HFR1-05-2510 |  | SOG (Whole Factory) Inspection | 2d | 2026-04-23 A | 2026-05-03 A | HFR1-05-2430 | 100% |  | 2026-05-20 | 2026-05-21 | LABOR [2 h]; Provide and cast 150 mm thk concrete floor slab on grade [144.02]; Skilled Labor [40 h] | 132,498.4 | 132,498.4 | 56 | HA-10-1080 |
| HFR1-05-2430 |  | SOG (Whole Factory) Rebar Mesh & MEP Sleeves | 4d | 2026-04-26 A | 2026-05-02 A | HFR1-05-3050 SS, HFR1-05-8700, HFR1-05-8710, HFR1-05-8720, HFR1-05-8730 | 100% |  | 2026-05-17 | 2026-05-20 | LABOR [63.02 h]; Steel Fixer [15.06 h]; Lean concrete under foundation and grade beams. [455]; Labor [160 h]; Skilled Labor [80 h]; Steel Fixer [160 h] | 20,930 | 20,930 | 56 | HA-10-1000 |
| HFR1-05-2540 |  | SOG (Whole Factory) Vapor Barrier & Insulation | 2d | 2026-04-30 A | 2026-04-30 A | HFR1-05-2530, HFR1-05-2970, HFR1-05-1290, HFR1-05-2440, HFR1-05-8970, HFR1-05-8980 | 100% |  | 2026-05-30 | 2026-05-31 | LABOR [5.27 h]; Provide and cast 150 mm thk concrete floor slab on grade [24.5] | 22,540 | 22,540 | 56 | HA-10-1110 |
| HFR1-05-2520 |  | SOG (Whole Factory) Concrete Pouring | 3d | 2026-05-02 A | 2026-05-03 A | HFR1-05-2510, HFR1-05-9170 | 100% |  | 2026-05-23 | 2026-05-25 | CONCRETE MIixer [15.75 h]; LABOR [4.52 h]; Provide and cast 150 mm thk concrete floor slab on grade [70]; Labor [120 h]; Skilled Labor [90 h]; Mason [120 h] | 64,400 | 64,400 | 56 | HA-10-1090 |
| HFR1-05-2530 |  | SOG (Whole Factory) Curing | 3d | 2026-05-02 A | 2026-05-03 A | HFR1-05-2520 SS | 100% |  | 2026-05-23 | 2026-05-25 | LABOR [6.78 h]; Provide and cast 150 mm thk concrete floor slab on grade [36.13]; Labor [30 h]; Skilled Labor [60 h] | 33,239.6 | 33,239.6 | 56 | HA-10-1100 |
|  | 1 | **Steel Structure Works** |  | 2026-02-09 | 2026-07-01 |  |  |  |  |  |  |  |  |  |  |
| HFR1-05-2450 |  | Rated Steel Bollards Concrete Base Casting | 5d | 2026-02-09 A | 2026-06-21 A | HFR1-05-2540, HFR1-05-1580, HFR1-05-2440 | 100% |  | 2026-04-14 | 2026-04-19 | install steel bollards 1135mm height [500]; Labor [100 h]; Skilled Labor [50 h]; Plumber [150 h] | 510,000 | 510,000 | 42 | HA-10-1020 |
| HFR1-05-2490 |  | Fire rating required | 15d | 2026-03-08 A | 2026-06-13 A | HFR1-05-2470, HFR1-05-1290 | 100% |  | 2026-05-16 | 2026-06-04 | LABOR [9.94 h]; Metal Works tech [96.95 h]; Size 400mm wide*4000mm long [400]; Skilled Labor [100 h] | 345,600 | 345,600 | 42 | HA-10-1060 |
| HFR1-05-2500 |  | Installation sandwich panel | 6d | 2026-03-12 A | 2026-07-01 A | HFR1-05-2490, HFR1-05-9480, HFR1-05-9500 | 100% |  | 2026-07-08 | 2026-07-14 | LABOR [96.95 h]; Metal Works tech [96.95 h]; Size 400mm wide*4000mm long [2.65]; Skilled Labor [120 h] | 2,285.98 | 1,828.78 | 69 | HA-10-1070 |
| HFR1-05-2460 |  | Installation column steel & Steel Ladder | 6d | 2026-04-06 A | 2026-04-15 A | HFR1-05-2450, HFR1-05-9800 | 100% |  | 2026-05-02 | 2026-05-07 | LABOR [96.95 h]; Metal Works tech [96.95 h]; install steel ladder with safety cage [50]; Size 400mm wide*4000mm long [370]; Labor [120 h]; Skilled Labor [120 h]; Steel Fixer [240 h] | 643,680 | 643,680 | 42 | HA-10-1030 |
| HFR1-05-2470 |  | Install beam Rafter | 6d | 2026-04-06 A | 2026-04-15 A | HFR1-05-2460 | 100% |  | 2026-05-09 | 2026-05-14 | LABOR [96.95 h]; Metal Works tech [96.95 h]; Size 400mm wide*4000mm long [240]; Skilled Labor [120 h]; Steel Fixer [180 h] | 207,360 | 207,360 | 42 | HA-10-1040 |
| HFR1-05-2480 |  | Installation Purlin & bracing | 6d | 2026-04-07 A | 2026-04-16 A | HFR1-05-2470 SS | 100% |  | 2026-05-09 | 2026-05-14 | LABOR [96.95 h]; Metal Works tech [96.95 h]; Size 400mm wide*4000mm long [167.91]; Skilled Labor [120 h]; Steel Fixer [120 h] | 145,074.24 | 145,074.24 | 42 | HA-10-1050 |
|  | 4 | **Architectural** |  | 2026-04-14 | 2026-10-20 |  |  |  |  |  |  |  |  |  |  |
| HFR1-05-2560 |  | Block work | 15d | 2026-04-14 A | 2026-06-02 A | HFR1-05-3850 FS+20d | 100% |  | 2026-05-11 | 2026-05-31 | LABOR [53.32 h]; at external walls (200mm thick insulated) [1576.41]; at electrical room (200mm thick, 2 hr fire rated) [2115.18]; Labor [600 h]; Skilled Labor [300 h]; Mason [900 h] | 334,198.68 | 334,198.68 | 16 | HA-10-1130 |
| HFR1-05-2570 |  | Plaster | 8d | 2026-06-09 A | 2026-07-06 A | HFR1-05-2560, HFR1-05-9100 | 100% |  | 2026-06-30 | 2026-07-08 | Supply and install 2 coats of acrylic paint at external walls and parapet including one coat of primer and two coats of putty to give smooth Surface as a base for paint including fiberglass tape to joints and all other accessories as per Modon specificati [410.56]; Labor [240 h]; Skilled Labor [160 h]; Mason [320 h] | 14,780.16 | 11,824.13 | 31 | HA-10-1140 |
| HFR1-05-2750 |  | Doors Installation | 7d | 2026-06-27 A | 2026-08-01 A | HFR1-05-3180, HFR1-05-2730, HFR1-05-2500, HFR1-05-2720, HFR1-05-2640 | 100% |  | 2026-09-28 | 2026-10-05 | LABOR [33.93 h]; Doors installer [12.05 h]; install (D6) 3000*3500mm galvanized steel heavy duty industrial isolated type roll up shutter door [9.99]; Labor [140 h]; Skilled Labor [140 h]; Carpenter [140 h] | 156,443.4 | 31,288.68 | 52 | HA-10-1340 |
| HFR1-05-2770 |  | Metal works | 5d | 2026-07-06 A | 2026-09-13 A | HFR1-05-2420, HFR1-05-2750, HFR1-05-2750 FF | 100% |  | 2026-10-15 | 2026-10-20 | ALHSA FACTORY [0.15 h]; LABOR [33.93 h]; FINSHING Techtion [42.42 h]; install steel ladder with safety cage [8.04]; Labor [100 h]; Skilled Labor [50 h]; Steel Fixer [100 h] | 52,099.2 | 52,099.2 | 45 | HA-10-1370 |
| HFR1-05-2720 |  | Finishes floor Installation | 6d | 2026-07-09 A | 2026-09-22 | HFR1-05-2620 | 95% | 6d | 2026-09-10 | 2026-09-16 | LABOR [33.93 h]; Doors installer [42.42 h]; Supply and apply epoxy paint to concrete surface in the factory area as shown in the drawings and specifications [2218.6] | 133,116 |  | 31 | HA-10-1310 |
| HFR1-05-2610 |  | Marble chips on external walls and grooves | 7d | 2026-07-26 A | 2026-07-29 A | HFR1-05-2600 SS | 100% |  | 2026-08-05 | 2026-08-12 | LABOR [33.93 h]; FINSHING Techtion [42.42 h]; Supply and install layer of marble chips on external walls and grooves to conform with specification requirements to complete the works as per drawing. Color and material is subject for Client approval. [75]; Labor [70 h]; Skilled Labor [140 h] | 3,600 | 3,600 | 31 | HA-10-1180 |
| HFR1-05-2620 |  | GRC panels with the mechanical fixat | 15d | 2026-07-26 A | 2026-07-29 A | HFR1-05-2640 SS | 100% |  | 2026-08-16 | 2026-09-01 | LABOR [33.93 h]; Painter [42.42 h]; Supply and install GRC panels with the mechanical fixations and whatever needed to do a perfect work, as shown in the drawings and specification [11]; Skilled Labor [300 h] | 4,620 | 4,620 | 31 | HA-10-1190 |
| HFR1-05-2630 |  | External Paint Primer + Final Coat | 7d | 2026-08-06 A | 2026-09-24 | HFR1-05-2610 | 85% | 7d | 2026-08-10 | 2026-08-17 | LABOR [33.93 h]; Supply and install 2 coats of acrylic paint at external walls and parapet including one coat of primer and two coats of putty to give smooth Surface as a base for paint including fiberglass tape to joints and all other accessories as per Modon specificati [202.5]; Skilled Labor [140 h] | 7,290 |  | 31 | HA-10-1200 |
| HFR1-05-2730 |  | External Paint Touch-up & Inspection | 7d | 2026-08-06 A | 2026-10-10 | HFR1-05-2720 SS, HFR1-05-2690 | 85% | 7d | 2026-09-01 | 2026-09-08 | LABOR [33.93 h]; Painter [42.42 h]; Supply and install 300*300mm ceramic tiles with approved quality on 30 mm mortar including sand fill material as approved by the Client for toilets [71.47]; Labor [70 h]; Skilled Labor [70 h]; Carpenter [140 h] | 7,289.94 |  | 31 | HA-10-1320 |
| HFR1-05-2660 |  | Windows Glass Installation | 7d | 2026-08-08 A | 2026-08-27 A | HFR1-05-2630 | 100% |  | 2026-08-18 | 2026-08-25 | LABOR [6.03 h]; Window W1 (size 1000*1300) [10.02]; Carpenter [140 h] | 10,160.28 | 10,160.28 | 31 | HA-10-1230 |
| HFR1-05-2690 |  | Cladding | 6d | 2026-08-10 A | 2026-10-01 | HFR1-05-2660 | 95% | 6d | 2026-08-31 | 2026-09-06 | LABOR [33.93 h]; Doors installer [42.42 h]; Supply and install aluminium cladding where material is approved by the Client, including sub-frames, all accessories and fittings, and whatever needed to do perfect work all as per drawing and specification. [29.53]; Labor [60 h]; Skilled Labor [60 h]; Carpenter [60 h] | 11,280.46 |  | 31 | HA-10-1280 |
| HFR1-05-2640 |  | Epoxy Paint | 15d | 2026-08-15 A | 2026-10-04 | HFR1-05-2610 | 85% | 15d | 2026-08-18 | 2026-09-03 | LABOR [33.93 h]; FINSHING Techtion [42.42 h]; Supply and apply epoxy paint to concrete surface in the factory area as shown in the drawings and specifications [185]; Skilled Labor [300 h] | 11,100 |  | 31 | HA-10-1210 |
| HFR1-05-2600 |  | Paint Primer + Putty + Final Coat INSIDE | 8d | 2026-08-24 A | 2026-09-26 | HFR1-05-2570 FS+20d | 80% | 8d | 2026-08-29 | 2026-09-06 | LABOR [33.93 h]; Tlles Fitter [33.93 h]; Supply and install 2 coats of acrylic paint at external walls and parapet including one coat of primer and two coats of putty to give smooth Surface as a base for paint including fiberglass tape to joints and all other accessories as per Modon specificati [410.56]; Labor [80 h]; Skilled Labor [160 h]; Mason [240 h] | 14,780.16 |  | 31 | HA-10-1170 |
| HFR1-05-2820 |  | Specialites Fittings | 4d | 2026-09-01 A | 2026-10-20 | HFR1-05-2420, HFR1-05-2770, HFR1-05-2790 | 95% | 4d | 2027-01-20 | 2027-01-24 | LABOR [53.32 h]; FINSHING Techtion [66.65 h]; Supply, install, testing and commission Fire Alarm Check Valve (ACV) assembly with OS&Y gate valve 6" Ø, complete with accessories.as per drawing and specifications [3.13]; Labor [80 h]; Skilled Labor [80 h] | 22,536 |  | 65 | HA-10-1430 |
| HFR1-05-2790 |  | Signage Layout & Marking Locations | 5d | 2026-09-03 A | 2026-10-15 | HFR1-05-9380, HFR1-05-2770 | 45% | 5d | 2027-01-02 | 2027-01-06 | LABOR [38.78 h]; Doors installer [3.31 h]; Identification sign for toilets & prayer room [43]; Labor [100 h] | 33,540 |  | 65 | HA-10-1400 |

| ID | WBS | Activity | Duration | Start | Finish | Predecessors | Complete | Remaining | Planned start | Planned finish | Resources | Cost | Actual cost | Delay Activties | Old Activity ID-Alhasa |
| --- | --- | --- | --- | --- | --- | --- | --- | --- | --- | --- | --- | --- | --- | --- | --- |
|  | 5 | **MEP WORKS** |  | 2026-02-02 | 2026-11-28 |  |  |  |  |  |  |  |  |  |  |
|  | 1 | **Plumping-FIRE-HVAC** |  | 2026-02-02 | 2026-11-28 |  |  |  |  |  |  |  |  |  |  |
| HFR1-05-2550 |  | Drainage Preparation (Marking + Sleeves + Supports) | 6d | 2026-02-02 A | 2026-03-25 A | HFR1-05-2560 | 100% |  | 2026-05-10 | 2026-05-16 | LABOR [48.47 h]; plumber [48.47 h]; Supply, installation , testing & commissioning of condensate drain piping, complete as per drawings, specifications and method of measurement. [142.58]; Labor [240 h]; Plumber [120 h]; Pipe-Laying Worker [120 h] | 25,664.4 | 25,664.4 | 16 | HA-10-1120 |
| HFR1-05-2650 |  | Drainage Installation (Pipes + Traps + Connections) | 4d | 2026-02-11 A | 2026-04-01 A | HFR1-05-2590, HFR1-05-9150, HFR1-05-9210, HFR1-05-9220, HFR1-05-9230, HFR1-05-9240 | 100% |  | 2026-06-22 | 2026-06-25 | LABOR [48.47 h]; plumber [48.47 h]; 160 mm Pipe in trench not exceeding 2.00 m depth to invert [53.47]; Labor [80 h]; Plumber [80 h]; Pipe-Laying Worker [80 h] | 25,665.6 | 25,665.6 | 72 | HA-10-1220 |
| HFR1-05-2840 |  | WATER SUPPLY SYSTEM | 5d | 2026-02-12 A | 2026-05-07 A | HFR1-05-2830, HFR1-05-9580, HFR1-05-9650 | 100% |  | 2026-07-13 | 2026-07-18 | LABOR [48.47 h]; AC tecntion [48.47 h]; 63 mm Ø (2 1/2" Ø )Cold water [749.13]; Labor [50 h]; Skilled Labor [100 h]; Plumber [100 h]; Pipe-Laying Worker [100 h] | 89,895.6 | 89,895.6 | 74 | HA-10-1450 |
| HFR1-05-2580 |  | HVAC Ducting Preparation (Marking + Supports + Hangers) | 5d | 2026-03-18 A | 2026-03-28 A | HFR1-05-2550 | 100% |  | 2026-05-19 | 2026-05-24 | LABOR [48.47 h]; AC tecntion [48.47 h]; Supply, install, test and commission indoor ductwork as per SMACNA Standards, complete, VD, duct tape, adhesive, duct sealant, hangers, supports and all other accessories, (Flanged TDC Type) and as per drawings and specification. [422.22]; Labor [100 h]; Electrician [200 h] | 15,199.92 | 15,199.92 | 16 | HA-10-1150 |
| HFR1-05-2710 |  | Floor drains installations | 4d | 2026-03-18 A | 2026-04-01 A | HFR1-05-2700 | 100% |  | 2026-09-06 | 2026-09-09 | LABOR [48.47 h]; plumber [48.47 h]; Supply, installation , testing & commissioning of condensate drain piping, complete as per drawings, specifications and method of measurement. [142.58]; Labor [40 h]; Plumber [80 h] | 25,664.4 | 25,664.4 | 72 | HA-10-1300 |
| HFR1-05-2850 |  | HVAC Ducting Installation (Ducts + Fittings + Accessories) | 6d | 2026-04-13 A | 2026-04-19 A | HFR1-05-2840, HFR1-05-9650, HFR1-05-9970 | 100% |  | 2026-09-24 | 2026-09-30 | LABOR [48.47 h]; AC tecntion [48.47 h]; Supply, install, test and commission indoor ductwork as per SMACNA Standards, complete, VD, duct tape, adhesive, duct sealant, hangers, supports and all other accessories, (Flanged TDC Type) and as per drawings and specification. [1692.56]; Labor [60 h]; Skilled Labor [60 h]; Electrician [120 h] | 60,932.16 | 60,932.16 | 74 | HA-10-1480 |
| HFR1-05-2670 |  | Gully trap works +Heavy duty covers | 4d | 2026-04-15 A | 2026-06-22 A | HFR1-05-2650, HFR1-05-8900 | 100% |  | 2026-09-06 | 2026-09-09 | LABOR [48.47 h]; plumber [48.47 h]; Supply, install, test and commission Gully Traps with heavy duty cover and all other accessories as per drawings and specification. [38.89]; Labor [40 h]; Plumber [80 h] | 25,667.4 | 23,100.66 | 72 | HA-10-1240 |
| HFR1-05-2780 |  | Inspection chambers with heavy duty covers | 6d | 2026-04-16 A | 2026-08-13 A | HFR1-05-2760 | 100% |  | 2026-10-05 | 2026-10-11 | LABOR [48.47 h]; Supply, install, test and commission Gully Traps with heavy duty cover and all other accessories as per drawings and specification. [38.89]; Labor [60 h]; Skilled Labor [120 h]; Plumber [120 h] | 25,667.4 | 23,100.66 | 72 | HA-10-1380 |
| HFR1-05-2890 |  | HVAC Ducting Testing (Leak Test) & Final Inspection | 9d | 2026-04-16 A | 2026-04-20 A | HFR1-05-2880 | 100% |  | 2026-11-18 | 2026-11-28 | LABOR [48.47 h]; AC tecntion [48.47 h]; Supply, install, test and commission indoor ductwork as per SMACNA Standards, complete, VD, duct tape, adhesive, duct sealant, hangers, supports and all other accessories, (Flanged TDC Type) and as per drawings and specification. [1692.56]; Labor [70 h]; Skilled Labor [70 h]; Electrician [140 h] | 60,932.16 | 60,932.16 | 74 | HA-10-1540 |
| HFR1-05-2680 |  | Fire Fighting Installation (Pipes + Fittings + Valves + Cabinets) | 4d | 2026-04-25 A | 2026-09-10 A | HFR1-05-2670, HFR1-05-9890, HFR1-05-3390 | 100% |  | 2026-09-22 | 2026-09-27 | LABOR [48.47 h]; Fire Pump system, Local code & UL/FM approved, meeting all NFPA requirements [0.14]; Labor [80 h]; Skilled Labor [40 h]; Electrician [80 h] | 50,400 | 40,320 | 72 | HA-10-1250 |
| HFR1-05-2880 |  | Fire Alarm system Devices installations | 13d | 2026-05-02 A | 2026-08-31 A | HFR1-05-2870 | 100% |  | 2026-11-21 | 2026-12-05 | LABOR [48.47 h]; electrical tection [48.47 h]; Wall mounted Addressable Fire Alarm Control Panel Complete [0.97]; Labor [80 h]; Skilled Labor [80 h]; Electrician [160 h] | 52,147.2 | 36,503.04 | 74 | HA-10-1510 |
| HFR1-05-2910 |  | Fire Fighting Testing (Hydrostatic Test) & Final Inspection | 8d | 2026-05-02 A | 2026-11-28 | HFR1-05-2900, HFR1-05-9540, HFR1-05-2780 | 85% | 8d | 2026-12-15 | 2026-12-23 | LABOR [48.47 h]; install fire rated 45 min. (D5) 1000*2200mm single leaf steel door with door construction type C [20.68]; Labor [40 h]; Skilled Labor [40 h]; Electrician [80 h] | 52,113.6 | 36,479.52 | 74 | HA-10-1590 |
| HFR1-05-2900 |  | Testing plumping system & Final Inspection | 9d | 2026-05-04 A | 2026-11-18 | HFR1-05-2890 | 95% | 9d | 2026-12-06 | 2026-12-15 | LABOR [48.47 h]; plumber [48.47 h]; Supply, install, test and commission Flexible ducts (Low Pressure), for connection to square exhaust diffuser and as per drawings and specification. [534.69]; Labor [30 h]; Skilled Labor [30 h]; Electrician [60 h] | 25,665.12 | 17,965.58 | 74 | HA-10-1570 |
| HFR1-05-2760 |  | Fire house cabinet works | 6d | 2026-05-12 A | 2026-08-18 A | HFR1-05-2740, HFR1-05-2820 | 100% |  | 2026-10-24 | 2026-10-29 | LABOR [48.47 h]; Fire Pump system, Local code & UL/FM approved, meeting all NFPA requirements [0.14]; Labor [60 h]; Skilled Labor [120 h]; Electrician [240 h] | 50,400 | 25,200 | 72 | HA-10-1350 |
| HFR1-05-2870 |  | OS Y GAte valves ,installations and testing | 7d | 2026-05-14 A | 2026-08-09 A | HFR1-05-2860 | 100% |  | 2026-11-24 | 2026-12-02 | LABOR [48.47 h]; AC tecntion [48.47 h]; Supply, install, testing and commission Fire Alarm Check Valve (ACV) assembly with OS&Y gate valve 6" Ø, complete with accessories.as per drawing and specifications [0.33]; Labor [70 h]; Skilled Labor [70 h]; Electrician [140 h] | 2,376 | 2,019.6 | 74 | HA-10-1500 |
| HFR1-05-2590 |  | Roof drains | 4d | 2026-06-06 A | 2026-07-01 A | HFR1-05-2580, HFR1-05-9370, HFR1-05-8910 | 100% |  | 2026-10-20 | 2026-10-24 | LABOR [48.47 h]; plumber [48.47 h]; Supply, installation , testing & commissioning of condensate drain piping, complete as per drawings, specifications and method of measurement. [142.58]; Labor [80 h]; Plumber [80 h] | 25,664.4 | 20,531.52 | 72 | HA-10-1160 |
| HFR1-05-2700 |  | Water sprinkles | 4d | 2026-07-05 A | 2026-09-26 | HFR1-05-2680 | 95% | 4d | 2026-12-01 | 2026-12-05 | LABOR [48.47 h]; 200 mm Ø [92.99]; Labor [40 h]; Plumber [40 h] | 25,665.24 |  | 72 | HA-10-1290 |
| HFR1-05-2860 |  | Mini split units indoor | 7d | 2026-07-12 A | 2026-07-16 A | HFR1-05-2850, HFR1-05-5760, HFR1-05-5550, HFR1-05-9420 | 100% |  | 2026-12-14 | 2026-12-21 | LABOR [48.47 h]; AC tecntion [48.47 h]; Complete road crossing duct bank for street lighting cables including pipes [8.96]; Labor [70 h]; Skilled Labor [70 h]; Electrician [140 h] | 2,365.44 | 2,365.44 | 74 | HA-10-1490 |
| HFR1-05-2740 |  | Internal ducts (duct sealent+hangers+supports | 6d | 2026-07-14 A | 2026-08-06 A | HFR1-05-2710 | 100% |  | 2026-12-07 | 2026-12-13 | LABOR [48.47 h]; AC tecntion [48.47 h]; Supply, install, test and commission indoor ductwork as per SMACNA Standards, complete, VD, duct tape, adhesive, duct sealant, hangers, supports and all other accessories, (Flanged TDC Type) and as per drawings and specification. [65.74]; Labor [60 h]; Skilled Labor [120 h]; Electrician [240 h] | 2,366.64 | 2,366.64 | 72 | HA-10-1330 |
| HFR1-05-2810 |  | Exhaust diffusers and grills | 5d | 2026-07-14 A | 2026-08-01 A | HFR1-05-2800, HFR1-05-9650 SS | 100% |  | 2026-11-28 | 2026-12-02 | LABOR [48.47 h]; AC tecntion [48.47 h]; Exhaust fan 2351 CFM ex. Static 32 Pa for Factory area [0.5]; Labor [50 h]; Skilled Labor [100 h]; Electrician [200 h] | 2,400 | 1,200 | 74 | HA-10-1420 |
| HFR1-05-2830 |  | Flexiable duct | 7d | 2026-07-14 A | 2026-08-01 A | HFR1-05-2810 | 100% |  | 2026-12-03 | 2026-12-10 | LABOR [48.47 h]; Flexiable duct [0.02]; AC tecntion [48.47 h]; Labor [70 h]; Skilled Labor [140 h]; Electrician [280 h] | 2,366.5 | 2,366.5 | 74 | HA-10-1440 |
| HFR1-05-2800 |  | Exasut fans works | 6d | 2026-07-18 A | 2026-09-01 A | HFR1-05-2580 | 100% |  | 2026-07-20 | 2026-07-26 | LABOR [48.47 h]; Exhaust fan 2351 CFM ex. Static 32 Pa for Factory area [0.5]; Labor [60 h]; Skilled Labor [120 h]; Electrician [240 h] | 2,400 | 1,200 | 16 | HA-10-1410 |

| ID | WBS | Activity | Duration | Start | Finish | Predecessors | Complete | Remaining | Planned start | Planned finish | Resources | Cost | Actual cost | Delay Activties | Old Activity ID-Alhasa |
| --- | --- | --- | --- | --- | --- | --- | --- | --- | --- | --- | --- | --- | --- | --- | --- |
|  | 2 | **Electrical Works** |  | 2026-03-24 | 2026-11-07 |  |  |  |  |  |  |  |  |  |  |
| HFR1-05-1980 |  | Grounding system (conductors) | 4d | 2026-03-24 A | 2026-09-06 A | HFR1-05-1970 | 100% |  | 2026-05-24 | 2026-05-31 | Grounding System for each block [0.2]; Labor [40 h]; Skilled Labor [80 h]; Electrician [160 h] | 7,578.4 | 6,062.72 | 16 | A1010 |
| HFR1-05-2010 |  | Grounding system (cable from electrical & telecom systems | 5d | 2026-03-25 A | 2026-08-12 A | HFR1-05-2000, HFR1-05-9010 | 100% |  | 2026-07-26 | 2026-07-30 | Grounding System for each block [0.2]; Labor [50 h]; Skilled Labor [100 h]; Electrician [200 h] | 7,578.4 | 5,304.88 | 72 | A1040 |
| HFR1-05-2070 |  | Power System and lighting and lightcurrent Testing (Continuity + Insulation) & Final Inspection | 6d | 2026-04-01 A | 2026-10-27 | HFR1-05-2060, HFR1-05-9930, HFR1-05-9440, HFR1-05-2780 | 95% | 6d | 2026-10-22 | 2026-10-28 | LP: Lighting Power Panel [8]; Labor [60 h]; Skilled Labor [120 h]; Electrician [240 h] | 34,560 | 17,280 | 70 | A1110 |
| HFR1-05-2090 |  | Low voltage cables | 4d | 2026-04-04 A | 2026-08-26 A | HFR1-05-2080, HFR1-05-9840 | 100% |  | 2026-10-19 | 2026-10-22 | Supply, install, test and commission Flexible ducts (Low Pressure), for connection to square exhaust diffuser and as per drawings and specification. [785]; Labor [40 h]; Skilled Labor [80 h]; Electrician [160 h] | 37,680 | 18,840 | 70 | A1130 |
| HFR1-05-2040 |  | Fire Alarm system Testing works | 6d | 2026-04-08 A | 2026-09-30 | HFR1-05-2030 | 85% | 6d | 2026-10-01 | 2026-10-07 | Wall mounted Addressable Fire Alarm Control Panel Complete [0.14]; Labor [60 h]; Skilled Labor [120 h]; Electrician [240 h] | 7,580.16 | 3,790.08 | 70 | A1070 |
| HFR1-05-2030 |  | Fire Alarm system ( pipes-wires -conduits | 6d | 2026-04-12 A | 2026-08-01 A | HFR1-05-2020, HFR1-05-9880 | 100% |  | 2026-09-24 | 2026-09-30 | Wall mounted Addressable Fire Alarm Control Panel Complete [0.14]; Labor [60 h]; Skilled Labor [120 h]; Electrician [240 h] | 7,580.16 | 4,548.1 | 70 | A1060 |
| HFR1-05-2050 |  | Power System and lighting and lightcurrent Preparation (Marking + Conduits + Boxes) | 6d | 2026-04-15 A | 2026-08-23 A | HFR1-05-2040, HFR1-05-9000, HFR1-05-9250, HFR1-05-9260, HFR1-05-9400, HFR1-05-10010, HFR1-05-2360, HFR1-05-2270 | 100% |  | 2026-10-08 | 2026-10-14 | LP: Lighting Power Panel [1.76]; Labor [60 h]; Skilled Labor [120 h]; Electrician [240 h] | 7,603.2 | 6,842.88 | 70 | A1080 |
| HFR1-05-1990 |  | Light current devices installations & Final Inspection | 4d | 2026-04-18 A | 2026-09-20 | HFR1-05-1980 | 95% | 4d | 2026-05-23 | 2026-05-30 | LP: Lighting Power Panel [2.18]; Labor [40 h]; Skilled Labor [80 h]; Electrician [160 h] | 9,417.6 | 4,708.8 | 16 | A1020 |
| HFR1-05-1970 |  | Socket and Outlets accessiors &Disconnect Switches Installations | 4d | 2026-04-19 A | 2026-09-09 A | HFR1-05-2560 | 100% |  | 2026-05-13 | 2026-05-17 | Wall mounted Duplex Socket [24.8]; Labor [40 h]; Skilled Labor [80 h]; Electrician [160 h] | 9,126.4 | 4,563.2 | 16 | A1000 |
| HFR1-05-2020 |  | Wiring Devices Sockets and outlets installations /all decices | 6d | 2026-05-12 A | 2026-09-07 A | HFR1-05-2010, HFR1-05-9340 | 100% |  | 2026-08-25 | 2026-08-31 | Grounding System for each block [0.24]; Labor [60 h]; Skilled Labor [120 h]; Electrician [240 h] | 9,131.97 | 5,479.18 | 72 | A1050 |
| HFR1-05-2080 |  | Comission of Panel boards ( cables and testing) | 5d | 2026-06-14 A | 2026-11-02 | HFR1-05-2070, HFR1-05-9420, HFR1-05-9290 | 95% | 5d | 2026-12-14 | 2026-12-19 | LP: Lighting Power Panel [8]; Labor [50 h]; Skilled Labor [100 h]; Electrician [200 h] | 34,560 | 13,824 | 70 | A1120 |
| HFR1-05-2000 |  | Solar Power Plant (cable-inverter +panels | 4d | 2026-06-28 A | 2026-08-27 A | HFR1-05-1990, HFR1-05-9330, HFR1-05-2720 | 100% |  | 2026-09-24 | 2026-09-28 | Solar Power Plant [0.15]; Labor [40 h]; Skilled Labor [80 h]; Electrician [160 h] | 8,761.2 | 8,761.2 | 72 | A1030 |
| HFR1-05-2100 |  | Comission of Lighting Fixtures Installations /LED lighting | 4d | 2026-06-29 A | 2026-11-07 | HFR1-05-2090, HFR1-05-9360 | 95% | 4d | 2027-01-09 | 2027-01-12 | Outdoor wall mounted LED lighting [76]; Labor [40 h]; Skilled Labor [80 h]; Electrician [160 h] | 39,368 |  | 70 | A1140 |
| HFR1-05-2060 |  | Cable tray works (supports | 6d | 2026-07-01 A | 2026-08-12 A | HFR1-05-2050, HFR1-05-9460 | 100% |  | 2026-11-02 | 2026-11-08 | Perforated Cable Tray [52.7]; Labor [60 h]; Skilled Labor [120 h]; Electrician [240 h] | 7,588.8 | 7,588.8 | 70 | A1090 |
|  | 3 | **Hunger -2** |  | 2026-02-03 | 2026-12-02 |  |  |  |  |  |  |  |  |  |  |
|  | 7 | **Concrete works** |  | 2026-04-12 | 2026-05-06 |  |  |  |  |  |  |  |  |  |  |
| HFR1-05-1320 |  | SOG (Whole Factory) Form work | 5d | 2026-04-12 A | 2026-05-02 A | HFR1-05-3050 | 100% |  | 2026-05-05 | 2026-05-10 | LABOR [4.52 h]; Mobilization [2.91 h]; Carpenter [4.52 h]; Provide and cast 150 mm thk concrete floor slab on grade [24.36]; Labor [200 h]; Skilled Labor [100 h]; Carpenter [200 h] | 22,411.2 | 22,411.2 | 56 | 301 |
| HFR1-05-1330 |  | SOG (Whole Factory) Inspection | 2d | 2026-04-25 A | 2026-05-06 A | HFR1-05-1310 | 100% |  | 2026-05-20 | 2026-05-21 | LABOR [2 h]; Provide and cast 150 mm thk concrete floor slab on grade [144.02]; Skilled Labor [40 h] | 132,498.4 | 132,498.4 | 56 | 302 |
| HFR1-05-1310 |  | SOG (Whole Factory) Rebar Mesh & MEP Sleeves | 4d | 2026-04-26 A | 2026-05-03 A | HFR1-05-3050 | 100% |  | 2026-05-17 | 2026-05-20 | LABOR [63.02 h]; Steel Fixer [15.06 h]; Lean concrete under foundation and grade beams. [455]; Labor [160 h]; Skilled Labor [80 h]; Steel Fixer [160 h] | 20,930 | 20,930 | 56 | 300 |
| HFR1-05-1360 |  | SOG (Whole Factory) Vapor Barrier & Insulation | 2d | 2026-05-03 A | 2026-05-03 A | HFR1-05-1350 SS, HFR1-05-1320 | 100% |  | 2026-05-17 | 2026-05-18 | LABOR [5.27 h]; Provide and cast 150 mm thk concrete floor slab on grade [24.5] | 22,540 | 22,540 | 56 | 305 |
| HFR1-05-1340 |  | SOG (Whole Factory) Concrete Pouring | 3d | 2026-05-04 A | 2026-05-05 A | HFR1-05-1330, HFR1-05-2440 | 100% |  | 2026-05-13 | 2026-05-16 | CONCRETE MIixer [15.75 h]; LABOR [4.52 h]; Provide and cast 150 mm thk concrete floor slab on grade [70]; Labor [120 h]; Skilled Labor [90 h]; Mason [120 h] | 64,400 | 64,400 | 56 | 303 |
| HFR1-05-1350 |  | SOG (Whole Factory) Curing | 3d | 2026-05-04 A | 2026-05-06 A | HFR1-05-1340 | 100% |  | 2026-05-17 | 2026-05-19 | LABOR [6.78 h]; Provide and cast 150 mm thk concrete floor slab on grade [36.13]; Labor [30 h]; Skilled Labor [60 h] | 33,239.6 | 33,239.6 | 56 | 304 |
|  | 1 | **Steelstructure works** |  | 2026-02-12 | 2026-07-26 |  |  |  |  |  |  |  |  |  |  |
| HFR1-05-1370 |  | Rated Steel Bollards Concrete Base Casting | 2d | 2026-02-12 A | 2026-07-01 A | HFR1-05-1360, HFR1-05-1580, HFR1-05-1350, HFR1-05-1990, HFR1-05-2800, HFR1-05-2970 | 100% |  | 2026-04-14 | 2026-04-15 | install steel bollards 1135mm height [500]; Labor; Skilled Labor; Plumber | 510,000 | 510,000 | 42 | 306 |
| HFR1-05-1390 |  | Install beam Rafter | 6d | 2026-03-17 A | 2026-05-02 A | HFR1-05-1380 | 100% |  | 2026-06-03 | 2026-06-09 | LABOR [96.95 h]; Metal Works tech [96.95 h]; Size 400mm wide*4000mm long [240]; Skilled Labor [160 h]; Steel Fixer [240 h] | 207,360 | 207,360 | 42 | 308 |
| HFR1-05-1410 |  | Fire rating required | 12d | 2026-03-17 A | 2026-06-15 A | HFR1-05-1400 | 100% |  | 2026-06-09 | 2026-06-22 | LABOR [9.94 h]; Metal Works tech [96.95 h]; Size 400mm wide*4000mm long [400]; Skilled Labor [140 h] | 345,600 | 345,600 | 42 | 310 |
| HFR1-05-1380 |  | Installation column steel & Steel Ladder | 6d | 2026-03-18 A | 2026-04-28 A | HFR1-05-1370 | 100% |  | 2026-05-24 | 2026-06-02 | LABOR [96.95 h]; Metal Works tech [96.95 h]; install steel ladder with safety cage [100]; Labor [160 h]; Skilled Labor [160 h]; Steel Fixer [320 h] | 648,000 | 648,000 | 42 | 307 |
| HFR1-05-1400 |  | Installation Purlin & bracing | 5d | 2026-03-19 A | 2026-05-03 A | HFR1-05-1390 SS | 100% |  | 2026-06-03 | 2026-06-08 | LABOR [96.95 h]; Metal Works tech [96.95 h]; Size 400mm wide*4000mm long [167.91]; Skilled Labor [160 h]; Steel Fixer [160 h] | 145,074.24 | 145,074.24 | 42 | 309 |
| HFR1-05-1420 |  | Installation sandwich panel | 6d | 2026-03-24 A | 2026-07-26 A | HFR1-05-1410, HFR1-05-2480 | 100% |  | 2026-06-23 | 2026-06-29 | LABOR [96.95 h]; Metal Works tech [96.95 h]; Size 400mm wide*4000mm long [2.7]; Skilled Labor [120 h] | 2,332.8 | 1,166.4 | 42 | 311 |

| ID | WBS | Activity | Duration | Start | Finish | Predecessors | Complete | Remaining | Planned start | Planned finish | Resources | Cost | Actual cost | Delay Activties | Old Activity ID-Alhasa |
| --- | --- | --- | --- | --- | --- | --- | --- | --- | --- | --- | --- | --- | --- | --- | --- |
|  | 4 | **Architectural** |  | 2026-04-13 | 2026-10-25 |  |  |  |  |  |  |  |  |  |  |
| HFR1-05-1430 |  | Block work | 10d | 2026-04-13 A | 2026-06-01 A | HFR1-05-2560 FS+1d | 100% |  | 2026-06-02 | 2026-06-13 | LABOR [53.32 h]; at external walls (200mm thick insulated) [1576.41]; at electrical room (200mm thick, 2 hr fire rated) [2115.18]; Labor [400 h]; Skilled Labor [200 h]; Mason [600 h] | 334,198.68 | 334,198.68 | 16 | 312 |
| HFR1-05-1440 |  | Plaster | 10d | 2026-06-14 A | 2026-07-02 A | HFR1-05-1430, HFR1-05-1350, HFR1-05-1320, HFR1-05-1360 | 100% |  | 2026-07-16 | 2026-07-27 | LABOR [33.93 h]; Metal Works tech [33.93 h]; Supply and install 2 coats of acrylic paint at external walls and parapet including one coat of primer and two coats of putty to give smooth Surface as a base for paint including fiberglass tape to joints and all other accessories as per Modon specificati [410.56]; Labor [300 h]; Skilled Labor [200 h]; Mason [400 h] | 14,780.16 | 10,346.11 | 50 | 313 |
| HFR1-05-1540 |  | Doors Installation | 7d | 2026-06-25 A | 2026-08-03 A | HFR1-05-1530 | 100% |  | 2026-09-05 | 2026-09-12 | LABOR [33.93 h]; Doors installer [12.05 h]; install (D6) 3000*3500mm galvanized steel heavy duty industrial isolated type roll up shutter door [9.99]; Labor [140 h]; Skilled Labor [140 h]; Carpenter [140 h] | 156,443.4 | 15,644.34 | 70 | 323 |
| HFR1-05-1460 |  | Marble chips on external walls and grooves | 7d | 2026-07-02 A | 2026-07-07 A | HFR1-05-1450 SS | 100% |  | 2026-07-25 | 2026-08-01 | LABOR [33.93 h]; FINSHING Techtion [42.42 h]; Supply and install layer of marble chips on external walls and grooves to conform with specification requirements to complete the works as per drawing. Color and material is subject for Client approval. [75]; Labor [70 h]; Skilled Labor [140 h] | 3,600 | 3,600 | 50 | 315 |
| HFR1-05-1550 |  | Metal works | 5d | 2026-07-04 A | 2026-09-13 A | HFR1-05-1540, HFR1-05-1540 FF | 100% |  | 2026-09-21 | 2026-09-27 | ALHSA FACTORY [0.15 h]; LABOR [33.93 h]; FINSHING Techtion [42.42 h]; install steel ladder with safety cage [8.04]; Labor [100 h]; Skilled Labor [50 h]; Steel Fixer [100 h] | 52,099.2 | 52,099.2 | 70 | 324 |
| HFR1-05-1470 |  | GRC panels with the mechanical fixat | 15d | 2026-07-08 A | 2026-07-14 A | HFR1-05-1490 SS | 100% |  | 2026-08-02 | 2026-08-18 | LABOR [33.93 h]; Painter [42.42 h]; Supply and install GRC panels with the mechanical fixations and whatever needed to do a perfect work, as shown in the drawings and specification [11]; Skilled Labor [300 h] | 4,620 | 4,620 | 50 | 316 |
| HFR1-05-1520 |  | Finishes floor Installation | 6d | 2026-07-09 A | 2026-09-22 | HFR1-05-1470 | 95% | 6d | 2026-09-05 | 2026-09-10 | LABOR [33.93 h]; Doors installer [42.42 h]; Supply and apply epoxy paint to concrete surface in the factory area as shown in the drawings and specifications [2218.6] | 133,116 |  | 50 | 321 |
| HFR1-05-1530 |  | External Paint Touch-up & Inspection | 7d | 2026-08-06 A | 2026-10-10 | HFR1-05-1520 SS, HFR1-05-1510 | 85% | 7d | 2026-09-02 | 2026-09-09 | LABOR [33.93 h]; Painter [42.42 h]; Supply and install 300*300mm ceramic tiles with approved quality on 30 mm mortar including sand fill material as approved by the Client for toilets [71.47]; Labor [70 h]; Skilled Labor [70 h]; Carpenter [140 h] | 7,289.94 |  | 70 | 322 |
| HFR1-05-1480 |  | External Paint Primer + Final Coat | 7d | 2026-08-08 A | 2026-09-24 | HFR1-05-1460 | 85% | 7d | 2026-08-11 | 2026-08-18 | LABOR [33.93 h]; Supply and install 2 coats of acrylic paint at external walls and parapet including one coat of primer and two coats of putty to give smooth Surface as a base for paint including fiberglass tape to joints and all other accessories as per Modon specificati [202.5]; Skilled Labor [140 h] | 7,290 |  | 50 | 317 |
| HFR1-05-1500 |  | Windows Glass Installation | 7d | 2026-08-08 A | 2026-09-01 A | HFR1-05-1480, HFR1-05-9480 | 100% |  | 2026-08-18 | 2026-08-25 | LABOR [6.03 h]; Window W1 (size 1000*1300) [10.32]; Carpenter [140 h] | 10,464.48 | 10,464.48 | 70 | 319 |
| HFR1-05-1510 |  | Cladding | 6d | 2026-08-09 A | 2026-10-01 | HFR1-05-1500, HFR1-05-1420 | 95% | 6d | 2026-08-29 | 2026-09-03 | LABOR [33.93 h]; Doors installer [42.42 h]; Supply and install aluminium cladding where material is approved by the Client, including sub-frames, all accessories and fittings, and whatever needed to do perfect work all as per drawing and specification. [29.53]; Labor [60 h]; Skilled Labor [60 h]; Carpenter [60 h] | 11,280.46 |  | 70 | 320 |
| HFR1-05-1490 |  | Epoxy Paint | 15d | 2026-08-16 A | 2026-10-04 | HFR1-05-1460 | 85% | 15d | 2026-08-18 | 2026-09-03 | LABOR [33.93 h]; FINSHING Techtion [42.42 h]; Supply and apply epoxy paint to concrete surface in the factory area as shown in the drawings and specifications [183.33]; Skilled Labor [300 h] | 10,999.8 |  | 50 | 318 |
| HFR1-05-1450 |  | Paint Primer + Putty + Final Coat INSIDE | 8d | 2026-08-23 A | 2026-09-26 | HFR1-05-1440 FS+15d | 70% | 8d | 2026-08-29 | 2026-09-06 | LABOR [33.93 h]; Tlles Fitter [33.93 h]; Supply and install 2 coats of acrylic paint at external walls and parapet including one coat of primer and two coats of putty to give smooth Surface as a base for paint including fiberglass tape to joints and all other accessories as per Modon specificati [410.56]; Labor [80 h]; Skilled Labor [160 h]; Mason [240 h] | 14,780.16 |  | 50 | 314 |
| HFR1-05-1570 |  | Specialites Fittings | 8d | 2026-09-01 A | 2026-10-25 | HFR1-05-1550, HFR1-05-1560, HFR1-05-1420 | 95% | 8d | 2027-01-20 | 2027-01-28 | LABOR [53.32 h]; FINSHING Techtion [66.65 h]; Provide and install grab bars, surface mounted, satin finish stainless steel as per approved sample including accessories to complete as shown in the drawings and specification [187.5]; Labor [160 h]; Skilled Labor [160 h] | 22,500 |  | 72 | 326 |
| HFR1-05-1560 |  | Signage Layout & Marking Locations | 5d | 2026-09-03 A | 2026-10-15 | HFR1-05-1550, HFR1-05-9380 | 45% | 5d | 2027-01-02 | 2027-01-06 | LABOR [38.78 h]; Doors installer [3.31 h]; Identification sign for toilets & prayer room [43]; Labor [100 h] | 33,540 |  | 72 | 325 |
|  | 5 | **MEP WORKS** |  | 2026-02-03 | 2026-12-02 |  |  |  |  |  |  |  |  |  |  |
|  | 1 | **Plumping-FIRE-HVAC** |  | 2026-02-03 | 2026-12-02 |  |  |  |  |  |  |  |  |  |  |
| HFR1-05-1590 |  | Drainage Preparation (Marking + Sleeves + Supports) | 6d | 2026-02-03 A | 2026-03-05 A | HFR1-05-1430 SS | 100% |  | 2026-05-11 | 2026-05-17 | LABOR [48.47 h]; plumber [48.47 h]; Supply, installation , testing & commissioning of condensate drain piping, complete as per drawings, specifications and method of measurement. [142.58]; Labor [240 h]; Plumber [120 h]; Pipe-Laying Worker [120 h] | 25,664.4 | 25,664.4 | 16 | 400 |
| HFR1-05-1620 |  | Drainage Installation (Pipes + Traps + Connections) | 4d | 2026-02-12 A | 2026-04-25 A | HFR1-05-1610 | 100% |  | 2026-04-13 | 2026-04-16 | LABOR [48.47 h]; plumber [48.47 h]; 160 mm Pipe in trench not exceeding 2.00 m depth to invert [53.47]; Labor [80 h]; Plumber [80 h]; Pipe-Laying Worker [80 h] | 25,665.6 | 25,665.6 | 16 | 404 |
| HFR1-05-1730 |  | WATER SUPPLY SYSTEM | 13d | 2026-03-03 A | 2026-05-14 A | HFR1-05-1720 | 100% |  | 2026-05-14 | 2026-06-01 | LABOR [48.47 h]; AC tecntion [48.47 h]; 63 mm Ø (2 1/2" Ø )Cold water [749.13]; Labor [80 h]; Skilled Labor [160 h]; Plumber [160 h]; Pipe-Laying Worker [160 h] | 89,895.6 | 89,895.6 | 16 | 415 |
| HFR1-05-1670 |  | Internal ducts (duct sealent+hangers+supports | 18d | 2026-03-10 A | 2026-08-04 A | HFR1-05-1660 | 100% |  | 2026-07-29 | 2026-08-18 | LABOR [48.47 h]; AC tecntion [48.47 h]; Supply, install, test and commission indoor ductwork as per SMACNA Standards, complete, VD, duct tape, adhesive, duct sealant, hangers, supports and all other accessories, (Flanged TDC Type) and as per drawings and specification. [65.74]; Labor [60 h]; Skilled Labor [120 h]; Electrician [240 h] | 2,366.64 | 1,656.65 | 16 | 409 |
| HFR1-05-1660 |  | Floor drains installations | 16d | 2026-03-17 A | 2026-04-01 A | HFR1-05-1650 | 100% |  | 2026-07-09 | 2026-07-27 | LABOR [48.47 h]; plumber [48.47 h]; Supply, installation , testing & commissioning of condensate drain piping, complete as per drawings, specifications and method of measurement. [142.58]; Labor [40 h]; Plumber [80 h] | 25,664.4 | 25,664.4 | 16 | 408 |
| HFR1-05-1600 |  | HVAC Ducting Preparation (Marking + Supports + Hangers) | 7d | 2026-04-01 A | 2026-04-04 A | HFR1-05-1590 | 100% |  | 2026-05-25 | 2026-06-04 | LABOR [48.47 h]; AC tecntion [48.47 h]; Supply, install, test and commission indoor ductwork as per SMACNA Standards, complete, VD, duct tape, adhesive, duct sealant, hangers, supports and all other accessories, (Flanged TDC Type) and as per drawings and specification. [422.22]; Labor [140 h]; Electrician [280 h] | 15,199.92 | 15,199.92 | 16 | 401 |
| HFR1-05-1740 |  | HVAC DuctingInstallation (Ducts + Fittings + Accessories) | 16d | 2026-04-08 A | 2026-04-14 A | HFR1-05-1730 | 100% |  | 2026-07-16 | 2026-08-03 | LABOR [48.47 h]; AC tecntion [48.47 h]; Supply, install, test and commission indoor ductwork as per SMACNA Standards, complete, VD, duct tape, adhesive, duct sealant, hangers, supports and all other accessories, (Flanged TDC Type) and as per drawings and specification. [1692.56]; Labor [70 h]; Skilled Labor [70 h]; Electrician [140 h] | 60,932.16 | 60,932.16 | 16 | 416 |
| HFR1-05-1780 |  | HVAC Ducting Testing (Leak Test) & Final Inspection | 16d | 2026-04-11 A | 2026-04-19 A | HFR1-05-1770, HFR1-05-1570 | 100% |  | 2026-09-29 | 2026-10-17 | LABOR [48.47 h]; AC tecntion [48.47 h]; Supply, install, test and commission Flexible ducts (Low Pressure), for connection to square exhaust diffuser and as per drawings and specification. [1269.42]; Labor [70 h]; Skilled Labor [70 h]; Electrician [140 h] | 60,932.16 | 60,932.16 | 56 | 417-1-2 |
| HFR1-05-1630 |  | Gully trap works +Heavy duty covers | 4d | 2026-04-14 A | 2026-07-27 A | HFR1-05-1620 | 100% |  | 2026-06-13 | 2026-06-16 | LABOR [48.47 h]; plumber [48.47 h]; Supply, install, test and commission Gully Traps with heavy duty cover and all other accessories as per drawings and specification. [38.89]; Labor [40 h]; Plumber [80 h] | 25,667.4 | 23,100.66 | 16 | 405 |
| HFR1-05-1690 |  | Inspection chambers with heavu duty covers | 16d | 2026-04-15 A | 2026-08-16 A | HFR1-05-1680 | 100% |  | 2026-08-25 | 2026-09-12 | LABOR [48.47 h]; Supply, install, test and commission Gully Traps with heavy duty cover and all other accessories as per drawings and specification. [38.89]; Labor [80 h]; Skilled Labor [160 h]; Plumber [160 h] | 25,667.4 | 23,100.66 | 16 | 411 |
| HFR1-05-1640 |  | Fire Fighting Installation (Pipes + Fittings + Valves + Cabinets) | 12d | 2026-04-16 A | 2026-09-10 A | HFR1-05-1630 | 100% |  | 2026-06-18 | 2026-07-01 | LABOR [48.47 h]; Fire Pump system, Local code & UL/FM approved, meeting all NFPA requirements [0.14]; Labor [80 h]; Skilled Labor [40 h]; Electrician [80 h] | 50,400 | 40,320 | 16 | 406 |
| HFR1-05-1770 |  | Fire Alarm system Devices installations | 15d | 2026-05-02 A | 2026-08-31 A | HFR1-05-1760 | 100% |  | 2026-08-12 | 2026-08-29 | LABOR [48.47 h]; electrical tection [48.47 h]; Wall mounted Addressable Fire Alarm Control Panel Complete [0.97]; Labor [150 h]; Skilled Labor [150 h]; Electrician [300 h] | 52,147.2 | 36,503.04 | 16 | 417-1-1 |
| HFR1-05-1790 |  | Testing plumping system & Final Inspection | 16d | 2026-05-04 A | 2026-11-12 | HFR1-05-1780 | 95% | 16d | 2026-10-07 | 2026-10-25 | LABOR [48.47 h]; plumber [48.47 h]; Supply, install, test and commission Flexible ducts (Low Pressure), for connection to square exhaust diffuser and as per drawings and specification. [534.69]; Labor [20 h]; Skilled Labor [20 h]; Electrician [40 h] | 25,665.12 | 15,399.07 | 56 | 417-1-3 |
| HFR1-05-1800 |  | Fire Fighting Testing (Hydrostatic Test) & Final Inspection | 17d | 2026-05-04 A | 2026-12-02 | HFR1-05-1790, HFR1-05-1570, HFR1-05-1690 | 90% | 17d | 2026-10-25 | 2026-11-12 | LABOR [48.47 h]; install fire rated 45 min. (D5) 1000*2200mm single leaf steel door with door construction type C [20.68]; Labor [50 h]; Skilled Labor [50 h]; Electrician [100 h] | 52,113.6 | 31,268.16 | 56 | 418 |
| HFR1-05-1760 |  | OS Y GAte valves ,installations and testing | 13d | 2026-05-05 A | 2026-08-02 A | HFR1-05-1750 | 100% |  | 2026-07-25 | 2026-08-09 | LABOR [48.47 h]; AC tecntion [48.47 h]; Supply, install, testing and commission Fire Alarm Check Valve (ACV) assembly with OS&Y gate valve 6" Ø, complete with accessories.as per drawing and specifications [0.33]; Labor [70 h]; Skilled Labor [70 h]; Electrician [140 h] | 2,376 | 2,138.4 | 16 | 417-1 |
| HFR1-05-1680 |  | Fire house cabinet works | 19d | 2026-05-11 A | 2026-08-16 A | HFR1-05-1670 | 100% |  | 2026-08-01 | 2026-08-22 | LABOR [48.47 h]; Fire Pump system, Local code & UL/FM approved, meeting all NFPA requirements [0.14]; Labor [80 h]; Skilled Labor [160 h]; Electrician [320 h] | 50,400 | 25,200 | 16 | 410 |
| HFR1-05-1650 |  | Water sprinkles | 10d | 2026-06-07 A | 2026-09-28 | HFR1-05-1640 | 90% | 10d | 2026-07-21 | 2026-08-01 | LABOR [48.47 h]; 200 mm Ø [92.99]; Labor [40 h]; Plumber [40 h] | 25,665.24 | 10,266.1 | 16 | 407 |
| HFR1-05-1610 |  | Roof drains | 4d | 2026-06-14 A | 2026-06-30 A | HFR1-05-1600 | 100% |  | 2026-06-18 | 2026-06-22 | LABOR [48.47 h]; plumber [48.47 h]; Supply, installation , testing & commissioning of condensate drain piping, complete as per drawings, specifications and method of measurement. [142.58]; Labor [80 h]; Plumber [80 h] | 25,664.4 | 15,398.64 | 16 | 403 |
| HFR1-05-1750 |  | Mini split units indoor | 16d | 2026-07-12 A | 2026-07-16 A | HFR1-05-1740 | 100% |  | 2026-08-13 | 2026-08-31 | LABOR [48.47 h]; AC tecntion [48.47 h]; Complete road crossing duct bank for street lighting cables including pipes [8.96]; Labor [70 h]; Skilled Labor [70 h]; Electrician [140 h] | 2,365.44 | 2,365.44 | 16 | 417 |
| HFR1-05-1720 |  | Flexiable duct | 7d | 2026-07-13 A | 2026-08-03 A | HFR1-05-1710 | 100% |  | 2026-08-03 | 2026-08-10 | LABOR [48.47 h]; Flexiable duct [0.02]; AC tecntion [48.47 h]; Labor [70 h]; Skilled Labor [140 h]; Electrician [280 h] | 2,366.5 | 2,366.5 | 16 | 414 |
| HFR1-05-1710 |  | Exhaust diffusers and grills | 6d | 2026-07-14 A | 2026-08-01 A | HFR1-05-1700 | 100% |  | 2026-07-27 | 2026-08-02 | LABOR [48.47 h]; AC tecntion [48.47 h]; Exhaust fan 2351 CFM ex. Static 32 Pa for Factory area [0.5]; Labor [60 h]; Skilled Labor [120 h]; Electrician [240 h] | 2,400 | 1,200 | 16 | 413 |
| HFR1-05-1700 |  | Exasut fans works | 8d | 2026-07-20 A | 2026-09-05 A | HFR1-05-1600 | 100% |  | 2026-07-23 | 2026-08-01 | LABOR [48.47 h]; Exhaust fan 2351 CFM ex. Static 32 Pa for Factory area [0.5]; Labor [80 h]; Skilled Labor [160 h]; Electrician [320 h] | 2,400 | 1,200 | 16 | 412 |

| ID | WBS | Activity | Duration | Start | Finish | Predecessors | Complete | Remaining | Planned start | Planned finish | Resources | Cost | Actual cost | Delay Activties | Old Activity ID-Alhasa |
| --- | --- | --- | --- | --- | --- | --- | --- | --- | --- | --- | --- | --- | --- | --- | --- |
|  | 2 | **Electrical Works** |  | 2026-04-01 | 2026-10-20 |  |  |  |  |  |  |  |  |  |  |
| HFR1-05-2120 |  | Grounding system (conductors) | 5d | 2026-04-01 A | 2026-09-06 A | HFR1-05-2110 | 100% |  | 2026-06-21 | 2026-06-25 | Grounding System for each block [0.2]; Labor [50 h]; Skilled Labor [100 h]; Electrician [200 h] | 7,578.4 | 5,304.88 | 16 | A1160 |
| HFR1-05-2230 |  | Low voltage cables | 6d | 2026-04-01 A | 2026-08-27 A | HFR1-05-2220 | 100% |  | 2026-08-22 | 2026-08-27 | Supply, install, test and commission Flexible ducts (Low Pressure), for connection to square exhaust diffuser and as per drawings and specification. [785]; Labor [60 h]; Skilled Labor [120 h]; Electrician [240 h] | 37,680 | 18,840 | 16 | A1270 |
| HFR1-05-2190 |  | Power System and lighting and lightcurrent Preparation (Marking + Conduits + Boxes) | 6d | 2026-04-05 A | 2026-08-22 A | HFR1-05-2180 | 100% |  | 2026-07-19 | 2026-07-25 | LP: Lighting Power Panel [1.76]; Labor [60 h]; Skilled Labor [120 h]; Electrician [240 h] | 7,590.24 | 6,072.19 | 16 | A1230 |
| HFR1-05-2210 |  | Power System and lighting and lightcurrent Testing (Continuity + Insulation) & Final Inspection | 6d | 2026-04-07 A | 2026-10-06 | HFR1-05-2200 | 95% | 6d | 2026-08-02 | 2026-08-08 | LP: Lighting Power Panel [8]; Labor [60 h]; Skilled Labor [120 h]; Electrician [240 h] | 34,560 | 24,192 | 16 | A1250 |
| HFR1-05-2150 |  | Grounding system (cable from electrical & telecom systems | 5d | 2026-04-09 A | 2026-08-12 A | HFR1-05-2140 | 100% |  | 2026-06-22 | 2026-06-27 | Grounding System for each block [0.2]; Labor [50 h]; Skilled Labor [100 h]; Electrician [200 h] | 7,578.4 | 5,304.88 | 16 | A1190 |
| HFR1-05-2170 |  | Fire Alarm system ( pipes-wires -conduits | 6d | 2026-04-11 A | 2026-08-01 A | HFR1-05-2160 | 100% |  | 2026-07-05 | 2026-07-11 | Wall mounted Addressable Fire Alarm Control Panel Complete [0.14]; Labor [60 h]; Skilled Labor [120 h]; Electrician [240 h] | 7,580.16 | 5,306.11 | 16 | A1210 |
| HFR1-05-2180 |  | Fire Alarm system Testing works | 6d | 2026-04-14 A | 2026-09-29 | HFR1-05-2170 | 90% | 6d | 2026-07-12 | 2026-07-18 | Wall mounted Addressable Fire Alarm Control Panel Complete [0.14]; Labor [60 h]; Skilled Labor [120 h]; Electrician [240 h] | 7,580.16 | 3,790.08 | 16 | A1220 |
| HFR1-05-2130 |  | Light current devices installations & Final Inspection | 5d | 2026-04-27 A | 2026-09-21 | HFR1-05-2120 | 95% | 5d | 2026-06-16 | 2026-06-21 | LP: Lighting Power Panel [2.18]; Labor [50 h]; Skilled Labor [100 h]; Electrician [200 h] | 9,417.6 | 3,767.04 | 16 | A1170 |
| HFR1-05-2110 |  | Socket and Outlets accessiors &Disconnect Switches Installations | 5d | 2026-04-28 A | 2026-09-08 A | HFR1-05-1430 | 100% |  | 2026-06-04 | 2026-06-09 | Wall mounted Duplex Socket [24.8]; Labor [50 h]; Skilled Labor [100 h]; Electrician [200 h] | 9,126.4 | 3,650.56 | 16 | A1150 |
| HFR1-05-2160 |  | Wiring Devices Sockets and outlets installations /all decices | 6d | 2026-05-11 A | 2026-09-06 A | HFR1-05-2150 | 100% |  | 2026-07-18 | 2026-07-23 | Grounding System for each block [0.24]; Labor [60 h]; Skilled Labor [120 h]; Electrician [240 h] | 9,131.97 | 4,565.99 | 16 | A1200 |
| HFR1-05-2200 |  | Cable tray works (supports | 6d | 2026-06-14 A | 2026-08-10 A | HFR1-05-2190 | 100% |  | 2026-09-13 | 2026-09-19 | Perforated Cable Tray [52.7]; Labor [60 h]; Skilled Labor [120 h]; Electrician [240 h] | 7,588.8 | 1,517.76 | 16 | A1240 |
| HFR1-05-2220 |  | Comission of Panel boards ( cables and testing) | 6d | 2026-06-14 A | 2026-10-13 | HFR1-05-2210 | 95% | 6d | 2026-09-28 | 2026-10-04 | LP: Lighting Power Panel [8]; Labor [60 h]; Skilled Labor [120 h]; Electrician [240 h] | 34,560 | 13,834 | 16 | A1260 |
| HFR1-05-2140 |  | Solar Power Plant (cable-inverter +panels | 5d | 2026-06-25 A | 2026-08-15 A | HFR1-05-2130 | 100% |  | 2026-07-15 | 2026-07-20 | Solar Power Plant [0.15]; Labor [50 h]; Skilled Labor [100 h]; Electrician [200 h] | 8,761.2 | 3,504.48 | 16 | A1180 |
| HFR1-05-2240 |  | Comission of Lighting Fixtures Installations /LED lighting | 6d | 2026-07-02 A | 2026-10-20 | HFR1-05-2230 | 95% | 6d | 2026-09-29 | 2026-10-05 | Outdoor wall mounted LED lighting [76]; Labor [60 h]; Skilled Labor [120 h]; Electrician [240 h] | 39,368 |  | 16 | A1280 |
|  | 1 | **Septic Tank** |  | 2026-02-14 | 2026-05-13 |  |  |  |  |  |  |  |  |  |  |
|  | 1 | **Concrete Works** |  | 2026-02-14 | 2026-03-25 |  |  |  |  |  |  |  |  |  |  |
| HFR1-05-1110 |  | Tank Foundation Formwork | 5d | 2026-02-14 A | 2026-03-25 A | HFR1-05-1100, HFR1-05-8630 | 100% |  | 2026-03-17 | 2026-03-25 | LABOR [12.12 h]; Carpenter [12.12 h]; Tank Footing [5]; Labor [200 h]; Skilled Labor [100 h]; Carpenter [200 h] | 5,400 | 5,400 | -1 | 121 |
| HFR1-05-1130 |  | Tank Foundation Concrete Pouring | 3d | 2026-03-01 A | 2026-03-04 A | HFR1-05-1120 | 100% |  | 2026-03-30 | 2026-04-01 | CONCRETE MIixer [6.06 h]; LABOR [12.12 h]; Tank Footing [9]; Labor [120 h]; Skilled Labor [90 h]; Mason [120 h] | 9,720 | 9,720 | -28 | 123 |
| HFR1-05-1100 |  | Tank FoundationRebar Fixing | 6d | 2026-03-03 A | 2026-03-05 A | HFR1-05-2430 SS, HFR1-05-8620, HFR1-05-8640, HFR1-05-8650 | 100% |  | 2026-03-10 | 2026-03-16 | LABOR [12.12 h]; Steel Fixer [30.3 h]; Tank Footing [3]; Labor [240 h]; Skilled Labor [120 h]; Steel Fixer [240 h] | 3,240 | 3,240 | -12 | 120 |
| HFR1-05-1120 |  | Tank Foundation Inspection | 3d | 2026-03-04 A | 2026-03-05 A | HFR1-05-1110 | 100% |  | 2026-03-26 | 2026-03-29 | LABOR [12.12 h]; Tank Footing [6.23]; Skilled Labor [60 h] | 6,728.4 | 6,728.4 | -22 | 122 |
| HFR1-05-1140 |  | Tank Foundation Curing | 3d | 2026-03-05 A | 2026-03-07 A | HFR1-05-1130 | 100% |  | 2026-05-23 | 2026-05-25 | LABOR [0.75 h]; Tank Footing [8]; Labor [60 h] | 8,640 | 8,640 | -29 | 124 |
| HFR1-05-1150 |  | Tank Walls Rebar Fixing | 5d | 2026-03-05 A | 2026-03-10 A | HFR1-05-1140 | 100% |  | 2026-05-30 | 2026-06-03 | LABOR [0.9 h]; Steel Fixer [30.3 h]; Tank Walls [6]; Labor [200 h]; Skilled Labor [100 h]; Steel Fixer [200 h] | 7,920 | 7,920 | 31 | 125 |
| HFR1-05-1160 |  | Tank Walls Formwork | 6d | 2026-03-08 A | 2026-03-10 A | HFR1-05-1150 | 100% |  | 2026-06-04 | 2026-06-10 | LABOR [0.9 h]; Carpenter [0.9 h]; Tank Walls [4.11]; Labor [240 h]; Skilled Labor [120 h]; Carpenter [240 h] | 5,425.2 | 5,425.2 | 31 | 126 |
| HFR1-05-1170 |  | Tank Walls Inspection | 4d | 2026-03-09 A | 2026-03-11 A | HFR1-05-1160 | 100% |  | 2026-06-11 | 2026-06-15 | LABOR [0.9 h]; Tank Walls [4.48]; Skilled Labor [80 h] | 5,913.6 | 5,913.6 | 31 | 127 |
| HFR1-05-1180 |  | Tank Walls Concrete Pouring | 3d | 2026-03-09 A | 2026-03-12 A | HFR1-05-1170 | 100% |  | 2026-06-16 | 2026-06-18 | CONCRETE MIixer [0.3 h]; LABOR [0.9 h]; Tank Walls [6]; Labor [120 h]; Skilled Labor [90 h]; Mason [120 h] | 7,920 | 7,920 | 31 | 128 |
| HFR1-05-1200 |  | Tank Slab Formwork | 3d | 2026-03-13 A | 2026-03-15 A | HFR1-05-1190 | 100% |  | 2026-05-25 | 2026-05-31 | LABOR [12.12 h]; Carpenter [12.12 h]; Tank Slab [2]; Labor [120 h]; Skilled Labor [60 h]; Carpenter [120 h] | 2,568 | 2,568 | 31 | 130 |
| HFR1-05-1190 |  | Tank Slab Rebar Fixing | 3d | 2026-03-14 A | 2026-03-16 A | HFR1-05-1180 | 100% |  | 2026-05-21 | 2026-05-24 | LABOR [0.9 h]; Steel Fixer [0.9 h]; Tank Slab [1.99]; Labor [60 h] | 2,555.16 | 2,555.16 | 31 | 129 |
| HFR1-05-1210 |  | Tank Slab Inspection | 2d | 2026-03-16 A | 2026-03-17 A | HFR1-05-1200 | 100% |  | 2026-06-01 | 2026-06-02 | LABOR [12.12 h]; Tank Slab [2]; Skilled Labor [40 h] | 2,568 | 2,568 | 31 | 131 |
| HFR1-05-1220 |  | Tank Slab Concrete Pouring | 3d | 2026-03-17 A | 2026-03-18 A | HFR1-05-1210 | 100% |  | 2026-06-03 | 2026-06-06 | CONCRETE MIixer [6.06 h]; LABOR [12.12 h]; Tank Slab [2]; Labor [120 h]; Skilled Labor [90 h]; Mason [120 h] | 2,568 | 2,568 | 31 | 132 |
| HFR1-05-1230 |  | Tank Slab Curing | 3d | 2026-03-18 A | 2026-03-19 A | HFR1-05-1220 | 100% |  | 2026-06-07 | 2026-06-09 | LABOR [12.12 h]; Tank Slab [2]; Skilled Labor [60 h] | 2,568 | 2,568 | 31 | 133 |

| ID | WBS | Activity | Duration | Start | Finish | Predecessors | Complete | Remaining | Planned start | Planned finish | Resources | Cost | Actual cost | Delay Activties | Old Activity ID-Alhasa |
| --- | --- | --- | --- | --- | --- | --- | --- | --- | --- | --- | --- | --- | --- | --- | --- |
|  | 2 | **Insulation works** |  | 2026-03-01 | 2026-05-13 |  |  |  |  |  |  |  |  |  |  |
| HFR1-05-2280 |  | Polyurethane Waterproof Coating internal insulation | 2d | 2026-03-01 A | 2026-03-05 A | HFR1-05-1230 | 100% |  | 2026-06-15 | 2026-06-16 | LABOR [7.27 h]; Insulation Tection [7.23 h]; Insulation Tection [7.27 h]; Supply and install polyurethane waterpoof coating to internal surfaces of concrete trench [17.08]; Labor [80 h]; Skilled Labor [40 h]; Carpenter [20 h]; Steel Fixer [20 h]; Mason [20 h] | 1,229.76 | 1,229.76 | -69 | B1 |
| HFR1-05-2300 |  | Extruded polystyrene External insulation | 5d | 2026-03-04 A | 2026-03-07 A | HFR1-05-2290 | 100% |  | 2026-06-13 | 2026-06-17 | LABOR [12.12 h]; Insulation Tection [7.23 h]; Insulation Tection [12.12 h]; Supply and install 50mm thk rigid insulation (extruded polystyrene) [142.67]; Labor [200 h]; Skilled Labor [100 h]; Carpenter [50 h]; Steel Fixer [50 h]; Mason [50 h] | 6,848.16 | 6,848.16 | 29 | B2-1 |
| HFR1-05-2320 |  | Protection board / insulation | 6d | 2026-03-05 A | 2026-03-08 A | HFR1-05-2310 | 100% |  | 2026-06-25 | 2026-07-01 | LABOR [7.23 h]; LABOR [7.27 h]; Insulation Tection [7.27 h]; Supply and install geotextile sheet [949.2]; Labor [240 h]; Skilled Labor [120 h]; Carpenter [60 h]; Steel Fixer [60 h]; Mason [60 h] | 9,492 | 9,492 | 29 | B4 |
| HFR1-05-2310 |  | Geotextile sheet External insulation | 6d | 2026-03-08 A | 2026-03-09 A | HFR1-05-2300 | 100% |  | 2026-06-18 | 2026-06-24 | LABOR [12.12 h]; Insulation Tection [7.23 h]; Insulation Tection [12.12 h]; Supply and install geotextile sheet [226]; Labor [240 h]; Skilled Labor [120 h]; Carpenter [60 h]; Steel Fixer [60 h]; Mason [60 h] | 2,260 | 2,260 | 29 | B3 |
| HFR1-05-2290 |  | APP membrane 4mm External insulation | 2d | 2026-03-09 A | 2026-03-10 A | HFR1-05-2280 | 100% |  | 2026-06-10 | 2026-06-11 | LABOR [9.69 h]; Insulation Tection [9.69 h]; Supply and install 4mm thick APP modified bituminous membrane - single layer [226]; Labor [80 h]; Skilled Labor [40 h]; Carpenter [20 h]; Steel Fixer [20 h]; Mason [20 h] | 7,684 | 7,684 | 29 | B2 |
| HFR1-05-9590 |  | Sewage tank | 5d | 2026-03-09 A | 2026-03-10 A | HFR1-05-2320 | 100% |  | 2026-07-02 | 2026-07-07 | LABOR [12.12 h]; Insulation Tection [12.12 h]; Sewage tank with dimensions (8x4x3m) [0.13]; Labor [150 h]; Skilled Labor [100 h]; Plumber [100 h]; Pipe-Laying Worker [200 h] | 11,700 | 11,700 | 29 | L6 |
| HFR1-05-9610 |  | Backfilling | 7d | 2026-03-15 A | 2026-03-21 A | HFR1-05-9600 | 100% |  | 2026-07-13 | 2026-07-20 | LABOR [12.12 h]; Insulation Tection [12.12 h]; Backfilling [478.06]; Excavator [70 h]; Water Tanker [70 h]; Truck [350 h]; Bobcat [280 h]; Labor [210 h]; Eq. Operator [770 h] | 15,775.98 | 15,775.98 | 29 | L9 |
| HFR1-05-9600 |  | Heavy duty cover installations | 4d | 2026-04-18 A | 2026-05-13 A | HFR1-05-9590 | 100% |  | 2026-05-12 | 2026-05-16 | LABOR [12.12 h]; Insulation Tection [12.12 h]; install (D6) 3000*3500mm galvanized steel heavy duty industrial isolated type roll up shutter door [1.33]; Labor [40 h]; Skilled Labor [80 h]; Carpenter [40 h] | 20,827.8 | 18,745.02 | 29 | L8 |
|  | 9 | **Mosque -elec room-Toilets Works** |  | 2026-03-22 | 2026-11-14 |  |  |  |  |  |  |  |  |  |  |
|  | 12 | **Concrete works** |  | 2026-03-22 | 2026-05-31 |  |  |  |  |  |  |  |  |  |  |
| HFR1-05-9670 |  | Beam-from work | 4d | 2026-03-22 A | 2026-03-26 A | HFR1-05-9660 | 100% |  | 2026-05-11 | 2026-05-14 | LABOR [12.12 h]; Carpenter [12.12 h]; Grade beams [3.35]; Labor [160 h]; Skilled Labor [80 h]; Carpenter [160 h] | 3,467.25 | 3,467.25 | 56 | N2 |
| HFR1-05-9660 |  | Beam--steel rebar | 4d | 2026-03-25 A | 2026-04-01 A | HFR1-05-1310, HFR1-05-1340, HFR1-05-8660, HFR1-05-8670, HFR1-05-8680, HFR1-05-8690 | 100% |  | 2026-05-06 | 2026-05-10 | CONCRETE MIixer [6.06 h]; LABOR [12.12 h]; Carpenter [12.12 h]; Grade beams [3.35]; Labor [160 h]; Skilled Labor [80 h]; Steel Fixer [160 h] | 3,467.25 | 3,467.25 | 56 | N1 |
| HFR1-05-9690 |  | Beam Concrete Pouring | 3d | 2026-04-01 A | 2026-04-04 A | HFR1-05-9680 | 100% |  | 2026-05-17 | 2026-05-19 | CONCRETE MIixer [6.06 h]; LABOR [12.12 h]; Grade beams [3]; Labor [120 h]; Skilled Labor [90 h]; Mason [120 h] | 3,105 | 3,105 | 56 | N4 |
| HFR1-05-9680 |  | Beam-Inspection | 1d | 2026-04-02 A | 2026-04-05 A | HFR1-05-9670 | 100% |  | 2026-05-16 | 2026-05-16 | LABOR [12.12 h]; Grade beams [5.64]; Skilled Labor [20 h] | 5,837.4 | 5,837.4 | 56 | N3 |
| HFR1-05-9700 |  | Beam-Curing | 3d | 2026-04-04 A | 2026-04-05 A | HFR1-05-9690 | 100% |  | 2026-05-20 | 2026-05-23 | LABOR [12.12 h]; Grade beams [4]; Labor [60 h] | 4,140 | 4,140 | 56 | N5 |
| HFR1-05-9720 |  | Concrete works for slab -from work | 4d | 2026-04-15 A | 2026-05-25 A | HFR1-05-9710 | 100% |  | 2026-06-01 | 2026-06-04 | LABOR [12.12 h]; Carpenter [12.12 h]; Roof Slab [3]; Labor [160 h]; Skilled Labor [80 h]; Carpenter [160 h] | 3,465 | 3,465 | 56 | N7 |
| HFR1-05-9710 |  | Concrete works for slab -steel rebar | 5d | 2026-04-16 A | 2026-05-25 A | HFR1-05-9700 | 100% |  | 2026-05-23 | 2026-05-31 | LABOR [12.12 h]; Steel Fixer [30.3 h]; Roof Slab [3]; Labor [200 h]; Skilled Labor [100 h]; Steel Fixer [200 h] | 3,465 | 3,465 | 56 | N6 |
| HFR1-05-9730 |  | Slabs Inspection | 2d | 2026-04-18 A | 2026-05-25 A | HFR1-05-9720 | 100% |  | 2026-06-06 | 2026-06-07 | LABOR [12.12 h]; Roof Slab [3]; Skilled Labor [40 h] | 3,465 | 3,465 | 56 | N8 |
| HFR1-05-9750 |  | Slabs Curing | 3d | 2026-05-21 A | 2026-05-25 A | HFR1-05-9740 | 100% |  | 2026-06-14 | 2026-06-16 | LABOR [12.12 h]; Roof Slab [3]; Labor [60 h] | 3,465 | 3,465 | 56 | N9-1 |
| HFR1-05-9740 |  | Slabs Concrete Pouring | 2d | 2026-05-23 A | 2026-05-25 A | HFR1-05-9730 | 100% |  | 2026-06-11 | 2026-06-13 | LABOR [12.12 h]; Roof Slab [3]; Labor [80 h]; Skilled Labor [60 h]; Mason [80 h] | 3,465 | 3,465 | 56 | N9 |
| HFR1-05-9760 |  | SLab removal of form works | 4d | 2026-05-24 A | 2026-05-31 A | HFR1-05-9750 | 100% |  | 2026-06-18 | 2026-06-22 | LABOR [14.54 h]; Carpenter [14.54 h]; Roof Slab [3]; Labor [280 h] | 3,465 | 3,465 | 56 | N9-2 |
|  | 4 | **Architectural** |  | 2026-04-21 | 2026-11-14 |  |  |  |  |  |  |  |  |  |  |
|  | 1 | **Finishes** |  | 2026-04-21 | 2026-10-15 |  |  |  |  |  |  |  |  |  |  |
| HFR1-05-3370 |  | Block works -internal | 7d | 2026-04-21 A | 2026-05-25 A | HFR1-05-3380 SS | 100% |  | 2026-06-15 | 2026-06-22 | LABOR [7.27 h]; Mason [18.18 h]; at internal walls (100mm thick) [104.44]; Labor [140 h]; Skilled Labor [70 h]; Mason [280 h] | 7,519.68 | 7,519.68 | 56 | HAS3-13050 |
| HFR1-05-3380 |  | Fire rated blocks for elec rooms | 7d | 2026-04-30 A | 2026-05-23 A | HFR1-05-9750 | 100% |  | 2026-06-04 | 2026-06-11 | LABOR [12.12 h]; Mason [30.3 h]; at electrical room (200mm thick, 2 hr fire rated) [42.53]; Labor [140 h]; Skilled Labor [140 h] | 3,359.87 | 3,359.87 | 56 | HAS3-13060 |
| HFR1-05-3640 |  | Block works -External | 5d | 2026-05-02 A | 2026-05-24 A | HFR1-05-3520 | 100% |  | 2026-07-04 | 2026-07-08 | LABOR [12.12 h]; Mason [30.3 h]; at internal walls (100mm thick) [64.13]; Labor [100 h]; Skilled Labor [50 h]; Mason [200 h] | 4,617.36 | 4,617.36 | 56 | HAS3-13800 |
| HFR1-05-4080 |  | Roof drains | 5d | 2026-06-01 A | 2026-06-22 A | HFR1-05-3950 | 100% |  | 2026-08-06 | 2026-08-11 | LABOR [12.12 h]; plumber [12.12 h]; Supply, installation , testing & commissioning of condensate drain piping, complete as per drawings, specifications and method of measurement. [18.67]; Labor [100 h]; Skilled Labor [100 h]; Plumber [100 h] | 3,360.6 | 3,360.6 | 56 | HAS3-14570 |
| HFR1-05-3440 |  | External plaster | 7d | 2026-06-09 A | 2026-06-29 A | HFR1-05-9760, HFR1-05-3380 | 100% |  | 2026-06-14 | 2026-06-21 | LABOR [12.12 h]; mason plaster [12.12 h]; Supply and install internal plastering to walls and columns min. 15mm thick with cement mortar of specified grade including galvanized mesh, corner beads, angle beads, CE bonds to rough and smooth plaster complete the work as per drawing & specification. [290]; Labor [140 h]; Skilled Labor [70 h]; Mason [280 h] | 9,860 | 3,944 | 56 | HAS3-13280 |
| HFR1-05-3760 |  | Plaster Application (Scratch + Brown + Final) | 5d | 2026-06-21 A | 2026-06-30 A | HFR1-05-3640, HFR1-05-3720 | 100% |  | 2026-07-22 | 2026-07-27 | LABOR [4.85 h]; Supply and install external plastering to external walls min. 15mm thick with cement mortar of specified grade including galvanized mesh, corner beads, angle beads, CE bonds to rough and smooth plaster complete the work as per drawing & specification. [93.33]; Labor [100 h]; Skilled Labor [100 h]; Mason [200 h] | 3,359.88 | 3,359.88 | 56 | HAS3-14100 |
| HFR1-05-3710 |  | Plaster FIRST Fix -dotted and spalsh coats | 5d | 2026-06-28 A | 2026-07-02 A | HFR1-05-3640 | 100% |  | 2026-07-18 | 2026-07-22 | LABOR [12.12 h]; Supply and install internal plastering to walls and columns min. 15mm thick with cement mortar of specified grade including galvanized mesh, corner beads, angle beads, CE bonds to rough and smooth plaster complete the work as per drawing & specification. [56]; Labor [100 h]; Electrician [250 h] | 1,904 | 1,904 | 56 | HAS3-14020 |
| HFR1-05-3520 |  | foam concrete screed 50mm | 5d | 2026-07-01 A | 2026-07-07 A | HFR1-05-3490 | 100% |  | 2026-07-12 | 2026-07-16 | LABOR [12.12 h]; FINSHING Techtion [30.3 h]; Supply and cast in place foam concrete screed 50mm thk minimum laid to fall and cross fall [317.16]; Labor [100 h]; Skilled Labor [100 h]; Mason [200 h] | 10,783.44 |  | 56 | HAS3-13410 |
| HFR1-05-4000 |  | Paint Primer + Putty + Final Coat INSIDE | 5d | 2026-07-08 A | 2026-10-04 | HFR1-05-3760, HFR1-05-3710, HFR1-05-3860, HFR1-05-3900 | 95% | 5d | 2026-08-04 | 2026-08-09 | LABOR [12.12 h]; Provide and apply 2 coats of bitumen waterproofing paint on concrete surface in contact with soil. [105.23]; Labor [100 h]; Skilled Labor [100 h]; Mason [100 h] | 2,315.06 |  | 56 | HAS3-14430 |
| HFR1-05-4010 |  | Internal Paint Touch-up & Inspection INSIDE | 5d | 2026-07-08 A | 2026-10-04 | HFR1-05-3760, HFR1-05-3710, HFR1-05-3980 SS | 95% | 5d | 2026-08-04 | 2026-08-09 | LABOR [4.85 h]; Supply and install 2 coats of acrylic paint at external walls and parapet including one coat of primer and two coats of putty to give smooth Surface as a base for paint including fiberglass tape to joints and all other accessories as per Modon specificati [93.33]; Labor [100 h]; Skilled Labor [100 h]; Mason [100 h] | 3,359.88 |  | 56 | HAS3-14440 |
| HFR1-05-3890 |  | APP modified bituminous membrane | 5d | 2026-07-09 A | 2026-09-01 A | HFR1-05-3760, HFR1-05-3710 | 100% |  | 2026-07-29 | 2026-08-03 | LABOR [12.12 h]; Insulation Tection [12.12 h]; Supply and install 4mm thick APP modified bituminous membrane - single layer [1050]; Labor [100 h] | 35,700 | 35,700 | 56 | HAS3-14230 |
| HFR1-05-3900 |  | External Paint Surface Preparation | 5d | 2026-07-09 A | 2026-09-28 | HFR1-05-3760 | 95% | 5d | 2026-07-29 | 2026-08-03 | LABOR [9.69 h]; Supply and apply epoxy paint to concrete surface in the factory area as shown in the drawings and specifications [67.2]; Labor [100 h]; Skilled Labor [100 h]; Mason [100 h] | 4,032 |  | 56 | HAS3-14240 |
| HFR1-05-4120 |  | External Paint Primer + Final Coat | 5d | 2026-07-09 A | 2026-10-10 | HFR1-05-4010 | 90% | 5d | 2026-08-10 | 2026-08-15 | Labor [100 h]; Skilled Labor [100 h]; LABOR [12.12 h]; Painter [24.24 h]; Supply and apply epoxy paint to concrete surface in the factory area as shown in the drawings and specifications [33.6] | 2,016 |  | 56 | HAS3-14610 |
| HFR1-05-4230 |  | External Paint Touch-up & Inspection | 5d | 2026-07-11 A | 2026-10-15 | HFR1-05-4120 | 90% | 5d | 2026-08-13 | 2026-08-18 | Labor [100 h]; Skilled Labor [50 h]; Mason [150 h]; LABOR [12.12 h]; Painter [24.24 h]; Supply and install 2 coats of acrylic paint at internal walls and roof including one coat of primer and two coats of putty to give smooth Surface as a base for paint including fiberglass tape to joints and all other accessories as per Modon specification [41.17] | 1,235.1 |  | 56 | HAS3-14740 |
| HFR1-05-3880 |  | Waterproofing for wet areas | 8d | 2026-07-19 A | 2026-08-12 A | HFR1-05-3760, HFR1-05-3710 | 100% |  | 2026-08-04 | 2026-08-12 | LABOR [4.85 h]; Insulation Tection [4.85 h]; liquid applied waterproofing membrane [39.49]; Labor [160 h] | 3,080.22 |  | 56 | HAS3-14220 |
| HFR1-05-4070 |  | Ceramic walls for toilets | 5d | 2026-07-19 A | 2026-08-09 A | HFR1-05-3930 | 100% |  | 2026-08-15 | 2026-08-19 | LABOR [12.12 h]; Supply and install 300*300mm glazed ceramic wall tiles on cement mortar and including rough and smooth plaster, galvanized mesh, corner beads, angle beads, CE bonds (For Toilets) [58.85]; Labor [100 h]; Skilled Labor [100 h]; Mason [100 h]; Plumber [100 h] | 7,650.5 | 7,650.5 | 56 | HAS3-14550 |
| HFR1-05-4160 |  | Ceramic tiles for toilets | 5d | 2026-07-20 A | 2026-08-13 A | HFR1-05-4070 | 100% |  | 2026-08-20 | 2026-08-25 | Labor [100 h]; Skilled Labor [100 h]; Carpenter [50 h]; Mason [100 h]; LABOR [12.12 h]; Supply and install 300*300mm glazed ceramic wall tiles on cement mortar and including rough and smooth plaster, galvanized mesh, corner beads, angle beads, CE bonds (For Toilets) [58.85] | 7,650.5 | 7,650.5 | 56 | HAS3-14660 |
| HFR1-05-4180 |  | geotextile sheets | 5d | 2026-07-26 A | 2026-09-08 A | HFR1-05-4070 | 100% |  | 2026-08-26 | 2026-08-31 | Labor [100 h]; Skilled Labor [100 h]; Mason [100 h]; LABOR [6.03 h]; LABOR [12.12 h]; Insulation Tection [12.12 h]; Supply and install geotextile sheet [124.5] | 1,245 | 1,245 | 56 | HAS3-14680 |
| HFR1-05-3860 |  | external Paint Surface Preparation INSIDE | 5d | 2026-07-28 A | 2026-09-28 | HFR1-05-3760, HFR1-05-3710 | 95% | 5d | 2026-08-13 | 2026-08-18 | LABOR [12.12 h]; Painter [24.24 h]; Supply and apply epoxy paint to concrete surface in the factory area as shown in the drawings and specifications [79.2]; Labor [100 h]; Skilled Labor [100 h]; Mason [200 h] | 4,752 |  | 56 | HAS3-14200 |
| HFR1-05-3870 |  | Gypsum Sanding & Final Inspection | 8d | 2026-08-05 A | 2026-08-23 A | HFR1-05-3760 | 100% |  | 2026-08-20 | 2026-08-29 | LABOR [12.12 h]; FINSHING Techtion [30.3 h]; Supply and install 12.5mm thk, moisture resistant gypsum board suspended ceiling including suspension system, paints as required specification and material as approved by the Client including frames supports, access openings and all other accessories to [12.39]; Labor [160 h]; Skilled Labor [160 h] | 1,486.8 | 1,486.8 | 56 | HAS3-14210 |
| HFR1-05-4130 |  | Gypsum Framing Installation For mospue and toilets | 5d | 2026-08-05 A | 2026-08-17 A | HFR1-05-4010 | 100% |  | 2026-09-01 | 2026-09-06 | Labor [50 h]; Skilled Labor [50 h]; Carpenter [100 h]; Steel Fixer [100 h]; LABOR [12.12 h]; FINSHING Techtion [30.3 h]; Supply and install 12.5mm thk, gypsum board suspended ceiling including suspension system, paints as required specification and material as approved by the Client including frames supports, access openings and all other accessories to complete as shown i [14.51] | 1,654.14 | 1,654.14 | 56 | HAS3-14620 |
| HFR1-05-3980 |  | aluminum framed double glazed windows | 5d | 2026-08-08 A | 2026-08-24 A | HFR1-05-3900 | 100% |  | 2026-08-30 | 2026-09-03 | LABOR [12.12 h]; Doors installer [30.3 h]; Supply and install aluminium cladding where material is approved by the Client, including sub-frames, all accessories and fittings, and whatever needed to do perfect work all as per drawing and specification. [26.54]; Labor [100 h]; Skilled Labor [100 h] | 10,138.28 | 10,138.28 | 56 | HAS3-14410 |
| HFR1-05-3950 |  | 300 micron polyethylene sheet | 4d | 2026-08-09 A | 2026-08-24 A | HFR1-05-3880 | 100% |  | 2026-09-02 | 2026-09-06 | LABOR [12.12 h]; Insulation Tection [12.12 h]; Polyisocynurate sandwich panel (100 mm) for external walls and roof and rock wool for internal wall fire rated for 1 Hour [0.01]; Labor [80 h]; Skilled Labor [80 h]; Mason [160 h] | 4,835.7 | 4,835.7 | 56 | HAS3-14390 |
| HFR1-05-4240 |  | Gypsum Boards Fixing + Joint Treatment | 5d | 2026-08-10 A | 2026-08-20 A | HFR1-05-4130 | 100% |  | 2026-09-12 | 2026-09-16 | Skilled Labor [100 h]; LABOR [12.12 h]; FINSHING Techtion [30.3 h]; Supply and install 12.5mm thk, gypsum board suspended ceiling including suspension system, paints as required specification and material as approved by the Client including frames supports, access openings and all other accessories to complete as shown i [64.15] | 7,313.1 | 7,313.1 | 56 | HAS3-14750 |
| HFR1-05-3490 |  | granite Insulation (extruded polystyrene) | 5d | 2026-08-15 A | 2026-09-21 | HFR1-05-3440, HFR1-05-3370 | 90% | 5d | 2026-08-18 | 2026-08-23 | LABOR [12.12 h]; Insulation Tection [12.12 h]; Supply and install granite tiles including mortar and sand fill and all the required accessories to complete the works as per drawings and specifications with approved quality by the Client [4.88]; Labor [100 h]; Skilled Labor [100 h] | 1,229.76 |  | 56 | HAS3-13350 |
| HFR1-05-4220 |  | install fire rated door+ with hardware set type HW2 paint finish | 5d | 2026-08-23 A | 2026-08-26 A | HFR1-05-4130 | 100% |  | 2026-09-17 | 2026-09-22 | Labor [100 h]; Electrician [200 h]; LABOR [12.12 h]; Doors installer [30.3 h]; install fire rated 45 min. (D5) 1000*2200mm single leaf steel door with door construction type C [0.74] | 1,864.8 | 1,864.8 | 56 | HAS3-14730 |
| HFR1-05-3970 |  | polyisocynurate cover board | 5d | 2026-08-25 A | 2026-09-28 | HFR1-05-3880 | 90% | 5d | 2026-09-03 | 2026-09-08 | LABOR [12.12 h]; Insulation Tection [12.12 h]; Polyisocynurate sandwich panel (100 mm) for external walls and roof and rock wool for internal wall fire rated for 1 Hour [0.01]; Labor [100 h]; Skilled Labor [100 h] | 9,671.4 |  | 56 | HAS3-14400 |
| HFR1-05-4090 |  | 50mm thk loose gravel toppings | 4d | 2026-09-10 A | 2026-09-27 | HFR1-05-3950 | 40% | 4d | 2026-09-19 | 2026-09-22 | Labor [80 h]; Skilled Labor [80 h]; Eq. Operator [320 h]; LABOR [12.12 h]; Insulation Tection [12.12 h]; Supply and install 50mm thk loose gravel toppings [66.67]; Excavator [40 h]; Loader [40 h]; Water Tanker [40 h]; Grider [40 h]; Truck [160 h] | 1,200.06 |  | 56 | HAS3-14580 |
| HFR1-05-4020 |  | Supply and install carpet rolls | 5d | 2026-09-22 | 2026-09-28 | HFR1-05-3890 |  |  |  |  | LABOR [12.12 h]; Insulation Tection [12.12 h]; Supply and install carpet rolls to prayer room including all the accessories to complete the work with approved quality by the Client as shown in the drawings and specifications [68.84]; Labor [100 h]; Skilled Labor [100 h]; Mason [100 h] | 9,499.92 |  | 56 | HAS3-14450 |

| ID | WBS | Activity | Duration | Start | Finish | Predecessors | Complete | Remaining | Planned start | Planned finish | Resources | Cost | Actual cost | Delay Activties | Old Activity ID-Alhasa |
| --- | --- | --- | --- | --- | --- | --- | --- | --- | --- | --- | --- | --- | --- | --- | --- |
|  | 2 | **Final installation works** |  | 2026-07-08 | 2026-11-14 |  |  |  |  |  |  |  |  |  |  |
| HFR1-05-3720 |  | AAC panels for internal wall including alignment and joint filling | 5d | 2026-07-08 A | 2026-08-01 A | HFR1-05-3640 | 100% |  | 2026-07-22 | 2026-07-27 | Skilled Labor [100 h]; LABOR [12.12 h]; Metal Works tech [12.12 h]; LP: Lighting Power Panel [10] | 43,200 | 43,200 | 56 | HAS3-14030 |
| HFR1-05-4170 |  | AAC panels for roof parapet including alignment and joint filling | 5d | 2026-07-12 A | 2026-08-12 A | HFR1-05-4080 | 100% |  | 2026-08-10 | 2026-08-15 | Skilled Labor [100 h]; LABOR [12.12 h]; Metal Works tech [12.12 h]; LP: Lighting Power Panel [0.29] | 1,252.8 | 1,252.8 | 56 | HAS3-14670 |
| HFR1-05-4340 |  | aluminum framed double glazed windows | 5d | 2026-08-06 A | 2026-08-27 A | HFR1-05-4290 | 100% |  | 2026-09-17 | 2026-09-22 | Labor [100 h]; Carpenter [50 h]; LABOR [12.12 h]; Window W1 (size 1800*2800) [3] | 12,156 | 12,156 | 56 | HAS3-14930 |
| HFR1-05-4270 |  | extruded aluminum flashing | 5d | 2026-08-09 A | 2026-08-27 A | HFR1-05-3720, HFR1-05-4170, HFR1-05-4180, HFR1-05-4090, HFR1-05-3970, HFR1-05-4020, HFR1-05-4000, HFR1-05-3890, HFR1-05-3860 | 100% |  | 2026-09-15 | 2026-09-20 | Labor [100 h]; Skilled Labor [100 h]; Steel Fixer [100 h]; LABOR [12.12 h]; Supplying and fixing 3mm thk extruded aluminum flashing 40mm with sealent and 50*50mm cant strip. [726.67] | 21,800.1 | 21,800.1 | 56 | HAS3-14810 |
| HFR1-05-4350 |  | phenolic partitions with doors for toilets | 5d | 2026-08-19 A | 2026-08-29 A | HFR1-05-4280 | 100% |  | 2026-09-21 | 2026-09-27 | Labor [100 h]; Carpenter [50 h]; LABOR [12.12 h]; FINSHING Techtion [30.3 h]; Window W1 (size 1000*1300) [12.61] | 12,786.54 | 12,786.54 | 56 | HAS3-14940 |
| HFR1-05-4290 |  | DOOrs installations with hardware set type HW1 paint finish | 4d | 2026-08-20 A | 2026-08-29 A | HFR1-05-4220 | 100% |  | 2026-09-16 | 2026-09-20 | Labor [80 h]; Carpenter [80 h]; LABOR [12.12 h]; Doors installer [4.82 h]; install (D1) 1890*2800mm double leaf glass and aluminum door with CNC decorative stainless steel shapes [1] | 6,384 | 6,384 | 56 | HAS3-14840 |
| HFR1-05-4360 |  | Wood skirting works | 8d | 2026-08-20 A | 2026-10-29 | HFR1-05-4300, HFR1-05-2240 | 95% | 8d | 2026-10-31 | 2026-11-08 | Labor [160 h]; Carpenter [80 h]; LABOR [12.12 h]; Window W2 (size 1600*1200) [20] | 29,960 |  | 56 | HAS3-14950 |
| HFR1-05-4280 |  | Toilet accessiors installations | 5d | 2026-09-01 A | 2026-09-08 A | HFR1-05-4160 | 100% |  | 2026-09-30 | 2026-10-05 | Labor [100 h]; Carpenter [100 h]; LABOR [12.12 h]; Supply and install phenolic partitions with doors for toilets including accessories, fixations, fittings, and all the required works as shown in the drawings and specification with approved quality by the Client [13.59] | 9,784.8 | 9,784.8 | 56 | HAS3-14820 |
| HFR1-05-3770 |  | External Metal stairs | 3d | 2026-09-02 A | 2026-09-07 A | HFR1-05-3710 | 100% |  | 2026-09-15 | 2026-09-17 | Labor [60 h]; Skilled Labor [60 h]; LABOR [6.03 h]; LABOR [12.12 h]; Metal Works tech [12.12 h]; Size 400mm wide*4000mm long [2.92] | 2,522.88 | 2,522.88 | 56 | HAS3-14110 |
| HFR1-05-4250 |  | signs for toilets & prayer room | 5d | 2026-09-12 A | 2026-11-14 | HFR1-05-9390, HFR1-05-3870, HFR1-05-4120 | 50% | 5d | 2026-11-07 | 2026-11-11 | Labor [100 h]; LABOR [12.12 h]; FINSHING Techtion [30.3 h]; Identification sign for toilets & prayer room [20.23] | 15,779.4 |  | 65 | HAS3-14760 |
| HFR1-05-4300 |  | Mosque Arch Carpet | 5d | 2026-10-05 | 2026-10-10 | HFR1-05-4240 |  |  |  |  | Labor [100 h]; LABOR [12.12 h]; Supply and install carpet rolls to prayer room including all the accessories to complete the work with approved quality by the Client as shown in the drawings and specifications [17.39] | 2,399.82 |  | 56 | HAS3-14850 |
|  | 1 | **Electromecanic** |  | 2026-05-09 | 2026-10-05 |  |  |  |  |  |  |  |  |  |  |
| HFR1-05-3830 |  | Exasut fans | 6d | 2026-05-09 A | 2026-09-29 | HFR1-05-3770 | 80% | 6d | 2026-07-15 | 2026-07-21 | Labor [120 h]; Electrician [240 h]; LABOR [21.81 h]; AC tecntion [21.81 h]; Exhaust fan 425 CFM ex. Static 100 Pascal for toilets [21.04] | 25,248 | 12,624 | 56 | HAS3-14170 |
| HFR1-05-3930 |  | Plumping fixtures | 5d | 2026-05-09 A | 2026-10-05 | HFR1-05-3830 | 80% | 5d | 2026-07-22 | 2026-07-27 | Labor [100 h]; Plumber [200 h]; LABOR [21.81 h]; plumber [29.08 h]; Supply and install phenolic partitions with doors for toilets including accessories, fixations, fittings, and all the required works as shown in the drawings and specification with approved quality by the Client [7.78] | 5,601.6 | 2,240.64 | 56 | HAS3-14370 |
|  | 2 | **GRB Tank** |  | 2026-03-26 | 2026-06-15 |  |  |  |  |  |  |  |  |  |  |
| HFR1-05-1810 |  | Tank Foundation Rebar Fixing | 8d | 2026-03-26 A | 2026-03-31 A | HFR1-05-1100, HFR1-05-8570, HFR1-05-8560, HFR1-05-8550, HFR1-05-8540 | 100% |  | 2026-04-16 | 2026-04-25 | Labor [480 h]; Skilled Labor [240 h]; Steel Fixer [480 h]; LABOR [438.81 h]; Steel Fixer [54.53 h]; Tank Footing [40] | 43,200 | 43,200 | 49 | 50 |
| HFR1-05-1820 |  | Tank Foundation Formwork | 8d | 2026-03-26 A | 2026-03-31 A | HFR1-05-1810 | 100% |  | 2026-04-26 | 2026-05-04 | Labor [480 h]; Skilled Labor [240 h]; Carpenter [480 h]; LABOR [39.99 h]; Carpenter [39.99 h]; Tank Footing [7.75] | 8,370 | 8,370 | 49 | 51 |
| HFR1-05-1830 |  | Tank Foundation Inspection | 4d | 2026-03-28 A | 2026-03-31 A | HFR1-05-1820 | 100% |  | 2026-05-09 | 2026-05-12 | Skilled Labor [80 h]; LABOR [32.72 h]; Tank Footing [8.01] | 8,650.8 | 8,650.8 | 49 | 52 |
| HFR1-05-1920 |  | Tank Slab Inspection | 4d | 2026-03-28 A | 2026-04-04 A | HFR1-05-1910 | 100% |  | 2026-08-12 | 2026-08-16 | Skilled Labor [80 h]; LABOR [32.72 h]; Tank Slab [2] | 2,568 | 2,568 | 56 | 61 |
| HFR1-05-1840 |  | Tank Foundation Concrete Pouring | 10d | 2026-03-31 A | 2026-03-31 A | HFR1-05-1830 | 100% |  | 2026-05-14 | 2026-05-25 | Labor [400 h]; Skilled Labor [300 h]; Mason [400 h]; CONCRETE MIixer [10.91 h]; LABOR [32.72 h]; Tank Footing [9.13] | 9,860.4 | 9,860.4 | 49 | 53 |
| HFR1-05-1870 |  | Tank Walls Formwork | 10d | 2026-03-31 A | 2026-04-01 A | HFR1-05-1860 | 100% |  | 2026-05-17 | 2026-05-31 | Labor [400 h]; Skilled Labor [200 h]; Carpenter [400 h]; LABOR [47.26 h]; Carpenter [47.26 h]; Tank Walls [4.17] | 5,504.4 | 5,504.4 | 49 | 56 |
| HFR1-05-1850 |  | Tank Foundation Curing | 10d | 2026-04-01 A | 2026-04-01 A | HFR1-05-1840 | 100% |  | 2026-05-30 | 2026-06-09 | Labor [200 h]; LABOR [32.72 h]; Tank Footing [8.11] | 8,758.8 | 8,758.8 | 49 | 54 |
| HFR1-05-1880 |  | Tank Walls Inspection | 4d | 2026-04-01 A | 2026-04-02 A | HFR1-05-1870 | 100% |  | 2026-06-01 | 2026-06-04 | Skilled Labor [80 h]; LABOR [18.18 h]; Tank Walls [4.17] | 5,504.4 | 5,504.4 | 49 | 57 |
| HFR1-05-1860 |  | Tank Walls Rebar Fixing | 10d | 2026-04-02 A | 2026-04-04 A | HFR1-05-1850 | 100% |  | 2026-05-05 | 2026-05-16 | Labor [400 h]; Skilled Labor [200 h]; Steel Fixer [400 h]; LABOR [18.18 h]; Steel Fixer [30.3 h]; Tank Walls [4.17] | 5,504.4 | 5,504.4 | 49 | 55 |
| HFR1-05-1890 |  | Tank Walls Concrete Pouring | 7d | 2026-04-02 A | 2026-04-04 A | HFR1-05-1880 | 100% |  | 2026-06-06 | 2026-06-13 | Labor [280 h]; Skilled Labor [210 h]; Mason [280 h]; CONCRETE MIixer [6.06 h]; LABOR [18.18 h]; Tank Walls [4.17] | 5,504.4 | 5,504.4 | 49 | 58 |
| HFR1-05-1910 |  | Tank Slab Formwork | 5d | 2026-04-02 A | 2026-04-04 A | HFR1-05-1900 | 100% |  | 2026-08-15 | 2026-08-19 | Labor [200 h]; Skilled Labor [100 h]; Carpenter [200 h]; LABOR [36.36 h]; Carpenter [36.36 h]; Tank Slab [2] | 2,568 | 2,568 | 56 | 60 |
| HFR1-05-1930 |  | Tank Slab Concrete Pouring | 7d | 2026-04-02 A | 2026-04-07 A | HFR1-05-1920, HFR1-05-4350 | 100% |  | 2026-09-01 | 2026-09-08 | Labor [280 h]; Skilled Labor [210 h]; Mason [280 h]; CONCRETE MIixer [10.91 h]; LABOR [32.72 h]; Tank Slab [2] | 2,568 | 2,568 | 56 | 62 |
| HFR1-05-1940 |  | Tank Slab Curing | 7d | 2026-04-02 A | 2026-04-08 A | HFR1-05-1930, HFR1-05-4360 | 100% |  | 2026-09-13 | 2026-09-20 | Skilled Labor [140 h]; LABOR [32.72 h]; Tank Slab [2] | 2,568 | 2,568 | 56 | 63 |
| HFR1-05-1900 |  | Tank Slab Rebar Fixing | 5d | 2026-04-04 A | 2026-04-06 A | HFR1-05-1890, HFR1-05-3930 | 100% |  | 2026-08-09 | 2026-08-13 | Labor [200 h]; Skilled Labor [100 h]; Steel Fixer [200 h]; LABOR [32.72 h]; Steel Fixer [54.53 h]; Tank Slab [2] | 2,568 | 2,568 | 56 | 59 |
| HFR1-05-1950 |  | Tank Installations with Connection | 4d | 2026-04-28 A | 2026-06-15 A | HFR1-05-1940 | 100% |  | 2026-09-14 | 2026-09-17 | Labor [80 h]; Skilled Labor [80 h]; LABOR [32.72 h]; Indoor Disconnect Switch for Exhaust Fans [86] | 50,052 | 50,052 | 56 | 64 |

| ID | WBS | Activity | Duration | Start | Finish | Predecessors | Complete | Remaining | Planned start | Planned finish | Resources | Cost | Actual cost | Old Activity ID-Alhasa | Delay Activties |
| --- | --- | --- | --- | --- | --- | --- | --- | --- | --- | --- | --- | --- | --- | --- | --- |
|  | 4 | **Pump room** |  | 2026-03-11 | 2026-09-27 |  |  |  |  |  |  |  |  |  |  |
|  | 1 | **Civil works** |  | 2026-03-11 | 2026-09-27 |  |  |  |  |  |  |  |  |  |  |
| HFR1-05-3120 |  | Structural steel members and plates | 6d | 2026-03-11 A | 2026-05-26 A | HFR1-05-3090 | 100% |  | 2026-06-10 | 2026-06-16 | Labor [420 h]; Steel Fixer [420 h]; LABOR [21.81 h]; install steel ladder with safety cage [1.74] | 11,275.2 | 9,020.16 | HAS3-10700 | 49 |
| HFR1-05-3000 |  | SOG (Pump Rooms) Formwork / Edge Shuttering | 6d | 2026-03-14 A | 2026-04-12 A | HFR1-05-1820 | 100% |  | 2026-05-19 | 2026-05-25 | Labor [240 h]; Skilled Labor [180 h]; Mason [240 h]; LABOR [58.17 h]; Carpenter [58.17 h]; Provide and cast 150 mm thk concrete floor slab on grade [12] | 11,040 | 11,040 | HAS3-10340 | 49 |
| HFR1-05-3190 |  | Concrete works for steel fence | 6d | 2026-04-01 A | 2026-04-06 A | HFR1-05-3160 | 100% |  | 2026-06-03 | 2026-06-09 | Labor [60 h]; Skilled Labor [60 h]; Mason [60 h]; LABOR [21.81 h]; Concrete Pad [1.41] | 1,319.76 | 1,319.76 | HAS3-11880 | 49 |
| HFR1-05-3040 |  | SOG (Pump Rooms) Rebar Mesh & MEP Sleeves | 6d | 2026-04-12 A | 2026-04-14 A | HFR1-05-3000 | 100% |  | 2026-05-03 | 2026-05-09 | Labor [240 h]; Skilled Labor [180 h]; Mason [240 h]; LABOR [21.81 h]; plumber [21.81 h]; Provide and cast 150 mm thk concrete floor slab on grade [2.12] | 1,950.4 | 1,950.4 | HAS3-10490 | 49 |
| HFR1-05-3080 |  | SOG (Pump Rooms) Inspection | 1d | 2026-04-12 A | 2026-04-15 A | HFR1-05-3040 | 100% |  | 2026-05-18 | 2026-05-18 | Labor [40 h]; Skilled Labor [30 h]; Mason [40 h]; LABOR [21.81 h]; Provide and cast 150 mm thk concrete floor slab on grade [2.14] | 1,968.8 | 1,968.8 | HAS3-10600 | 49 |
| HFR1-05-3090 |  | SOG (Pump Rooms) Concrete Pouring & Finishing | 3d | 2026-04-12 A | 2026-04-15 A | HFR1-05-3080 | 100% |  | 2026-05-18 | 2026-05-20 | Labor [120 h]; Skilled Labor [90 h]; Mason [120 h]; CONCRETE MIixer [7.27 h]; LABOR [21.81 h]; Provide and cast 150 mm thk concrete floor slab on grade [1.66] | 1,527.2 | 1,527.2 | HAS3-10640 | 49 |
| HFR1-05-3100 |  | SOG (Pump Rooms) Curing | 3d | 2026-04-12 A | 2026-04-15 A | HFR1-05-3090 | 100% |  | 2026-05-23 | 2026-05-25 | Labor [120 h]; Skilled Labor [90 h]; Mason [120 h]; LABOR [21.81 h]; Provide and cast 150 mm thk concrete floor slab on grade [1.8] | 1,656 | 1,656 | HAS3-10680 | 49 |
| HFR1-05-3270 |  | install galvanized steel fence | 3d | 2026-04-14 A | 2026-09-27 | HFR1-05-9190, HFR1-05-3190, HFR1-05-3240 | 40% | 3d | 2026-08-29 | 2026-08-31 | Labor [30 h]; Skilled Labor [30 h]; Steel Fixer [120 h]; LABOR [21.81 h]; Metal Works tech [21.81 h]; install galvanized steel fence [1.23] | 1,992.6 | 797.04 | HAS3-12320 | 72 |
| HFR1-05-3200 |  | Structural steel members and plates Pump Shed | 6d | 2026-05-05 A | 2026-06-01 A | HFR1-05-3160 | 100% |  | 2026-06-04 | 2026-06-10 | Labor [60 h]; Skilled Labor [60 h]; Steel Fixer [60 h]; LABOR [21.81 h]; Metal Works tech [21.81 h]; install (D6) 3000*3500mm galvanized steel heavy duty industrial isolated type roll up shutter door [0.09] | 1,409.4 | 563.76 | HAS3-11890 | 49 |
| HFR1-05-3160 |  | Corrugated glavanized steel roofing sheet 0.7mm thick for pump shed | 6d | 2026-06-02 A | 2026-06-06 A | HFR1-05-3120, HFR1-05-3130 | 100% |  | 2026-06-23 | 2026-06-29 | Labor [60 h]; Skilled Labor [120 h]; LABOR [21.81 h]; Supply and install 300 micron polyethylene sheet [35.5] | 142 | 142 | HAS3-10900 | 49 |
| HFR1-05-3130 |  | Cold formed steel secondary members | 2d | 2026-06-14 A | 2026-06-17 A | HFR1-05-3100, HFR1-05-3120 | 100% |  | 2026-06-23 | 2026-06-24 | Labor [40 h]; Skilled Labor [20 h]; LABOR [21.81 h]; supply and installation of Cold formed steel secondary members [0.02] | 1,248 | 499.2 | HAS3-10820 | 49 |
| HFR1-05-3240 |  | steel fence gate | 6d | 2026-09-16 | 2026-09-22 | HFR1-05-9310 SS, HFR1-05-3190, HFR1-05-3200, HFR1-05-3160, HFR1-05-3090 |  |  |  |  | Labor [60 h]; Skilled Labor [60 h]; Steel Fixer [240 h]; LABOR [21.81 h]; Doors installer [36.36 h]; Swing gate for fence with similar design with opening of 3m. [0.21] | 1,237.32 |  | HAS3-12130 | 72 |
|  | 2 | **Electromecanic** |  | 2026-03-31 | 2026-09-20 |  |  |  |  |  |  |  |  |  |  |
| HFR1-05-3560 |  | Install HDPE PE100 PN16 Pipes & Gate valve | 5d | 2026-03-31 A | 2026-05-04 A | HFR1-05-3130 | 100% |  | 2026-05-30 | 2026-06-03 | Labor [200 h]; Skilled Labor [50 h]; Pipe-Laying Worker [200 h]; LABOR [32.72 h]; electrical tection [32.72 h]; 100 mm Ø [120] | 21,600 | 19,440 | HAS3-13580 | 49 |
| HFR1-05-3650 |  | concrete wall for KWHM for pump room with foundations | 5d | 2026-04-08 A | 2026-05-12 A | HFR1-05-3560 | 100% |  | 2026-06-07 | 2026-06-11 | Labor [50 h]; Electrician [200 h]; LABOR [5.42 h]; electrical tection [4.97 h]; Complete concrete wall for KWHM for street lighting feeder pillar with foundations as per SEC latest standards & specifications [15] | 45,000 | 45,000 | HAS3-13810 | 49 |
| HFR1-05-3730 |  | pipework within pump shade | 5d | 2026-04-27 A | 2026-08-30 A | HFR1-05-3660, HFR1-05-9200 SS | 100% |  | 2026-06-06 | 2026-06-10 | Labor [50 h]; Pipe-Laying Worker [200 h]; LABOR [32.72 h]; electrical tection [32.72 h]; Fire Pump system, Local code & UL/FM approved, meeting all NFPA requirements [0.09] | 32,400 | 12,960 | HAS3-14040 | 65 |
| HFR1-05-3790 |  | Power and lighting first fix works -Conduit works | 5d | 2026-04-29 A | 2026-08-29 A | HFR1-05-3780 | 100% |  | 2026-06-13 | 2026-06-17 | Labor [50 h]; Electrician [200 h]; LABOR [32.72 h]; electrical tection [32.72 h]; LP: Lighting Power Panel [7.64] | 33,004.8 | 16,502.4 | HAS3-14130 | 65 |
| HFR1-05-4050 |  | Power panel ( all works | 5d | 2026-04-30 A | 2026-09-14 A | HFR1-05-4040 | 100% |  | 2026-10-08 | 2026-10-13 | Electrician [100 h]; LABOR [47.26 h]; electrical tection [47.26 h]; LP: Lighting Power Panel [6] | 25,920 | 10,368 | HAS3-14480 | 72 |
| HFR1-05-3780 |  | Testing firefighting | 4d | 2026-05-18 A | 2026-09-20 | HFR1-05-3730 | 90% | 4d | 2026-07-02 | 2026-07-06 | Labor [40 h]; Electrician [160 h]; LABOR [32.72 h]; electrical tection [32.72 h]; Fire Pump system, Local code & UL/FM approved, meeting all NFPA requirements [0.06] | 21,600 | 8,640 | HAS3-14120 | 65 |
| HFR1-05-4040 |  | Motor circuit protector | 5d | 2026-06-03 A | 2026-09-02 A | HFR1-05-4030 | 100% |  | 2026-11-08 | 2026-11-12 | Electrician [100 h]; LABOR [32.72 h]; electrical tection [32.72 h]; Motor Circuit Protector for pumps complete with conduits & cables [7.87] | 15,110.4 | 6,044.16 | HAS3-14470 | 72 |
| HFR1-05-3660 |  | Fire Pump installations | 5d | 2026-06-18 A | 2026-08-13 A | HFR1-05-3650 | 100% |  | 2026-07-07 | 2026-07-12 | Labor [50 h]; Skilled Labor [50 h]; Electrician [200 h]; LABOR [10.85 h]; LABOR [32.72 h]; electrical tection [32.72 h]; Fire Pump system, Local code & UL/FM approved, meeting all NFPA requirements [0.2] | 72,000 | 36,000 | HAS3-13840 | 49 |
| HFR1-05-3910 |  | Wiring works | 5d | 2026-06-29 A | 2026-09-12 A | HFR1-05-3840 | 100% |  | 2026-09-09 | 2026-09-14 | Labor [50 h]; Electrician [100 h]; LABOR [32.72 h]; electrical tection [32.72 h]; Pump room power panel complete with conduits, cables, circuit breakers,pipes, wires and busbars [2.75] | 33,000 | 33,000 | HAS3-14260 | 72 |
| HFR1-05-3840 |  | Cable Tray | 5d | 2026-06-30 A | 2026-08-25 A | HFR1-05-3790, HFR1-05-3270, HFR1-05-4200 | 100% |  | 2026-09-05 | 2026-09-09 | Labor [50 h]; Electrician [100 h]; LABOR [32.72 h]; electrical tection [32.72 h]; Perforated Cable Tray [229.34] | 33,024.96 | 33,024.96 | HAS3-14190 | 72 |
| HFR1-05-4310 |  | switches installations | 5d | 2026-08-29 A | 2026-09-10 A | HFR1-05-4050, HFR1-05-9300, HFR1-05-9610 | 100% |  | 2026-10-27 | 2026-11-01 | Electrician [100 h]; LABOR [32.72 h]; electrical tection [32.72 h]; Indoor Disconnect Switch for Package Units & AC Split Units [33] | 19,206 | 19,206 | HAS3-14860 | 72 |
| HFR1-05-4030 |  | Install lighting fixtures | 5d | 2026-08-31 A | 2026-09-01 A | HFR1-05-3910 | 100% |  | 2026-10-14 | 2026-10-19 | Electrician [100 h]; LABOR [32.72 h]; electrical tection [32.72 h]; LP: Lighting Power Panel [0.25] | 1,080 | 1,080 | HAS3-14460 | 72 |

| ID | WBS | Activity | Duration | Start | Finish | Predecessors | Complete | Remaining | Planned start | Planned finish | Resources | Cost | Actual cost | Delay Activties | Old Activity ID-Alhasa |
| --- | --- | --- | --- | --- | --- | --- | --- | --- | --- | --- | --- | --- | --- | --- | --- |
|  | 7 | **External WORKS-MEP** |  | 2026-02-24 | 2026-10-03 |  |  |  |  |  |  |  |  |  |  |
|  | 8 | **Plumping-FIRE-HVAC** |  | 2026-02-24 | 2026-06-02 |  |  |  |  |  |  |  |  |  |  |
| HFR1-05-3070 |  | Water SupplyPreparation (Excxavation-Pipes-backfilling | 6d | 2026-02-24 A | 2026-03-05 A | HFR1-05-3060 | 100% |  | 2026-04-28 | 2026-05-04 | Labor [60 h]; Skilled Labor [120 h]; Plumber [120 h]; Pipe-Laying Worker [240 h]; LABOR [32.72 h]; 20 mm Ø ( 3/4" Ø) Cold water [1100] | 52,800 | 52,800 | 56 | HAS3-10570 |
| HFR1-05-3320 |  | Drainage Installation (Excxavation +Pipes + backfilling +House Connections) | 6d | 2026-02-26 A | 2026-04-13 A | HFR1-05-3150, HFR1-05-8870, HFR1-05-8880 | 100% |  | 2026-05-19 | 2026-05-25 | Labor [60 h]; Skilled Labor [120 h]; Plumber [240 h]; Pipe-Laying Worker [240 h]; LABOR [32.72 h]; 50 mm Ø (2" Ø )Cold water [85.46] | 9,229.68 | 9,229.68 | 56 | HAS3-12730 |
| HFR1-05-3060 |  | External FF Network Preparation (Excavation +Pipes + Valves + Hydrants | 6d | 2026-02-28 A | 2026-03-04 A | HFR1-05-1080 | 100% |  | 2026-04-21 | 2026-04-27 | Labor [60 h]; Skilled Labor [120 h]; LABOR [10.85 h]; LABOR [32.72 h]; Fire Pump system, Local code & UL/FM approved, meeting all NFPA requirements [0.02] | 7,200 | 7,200 | 56 | HAS3-10560 |
| HFR1-05-3330 |  | Manholes works for Drainage works Excxavation -pipes-backfilling | 4d | 2026-03-04 A | 2026-04-15 A | HFR1-05-3320 | 100% |  | 2026-05-30 | 2026-06-02 | Labor [40 h]; Plumber [40 h]; LABOR [32.72 h]; Complete Branch Electrical Manhole with pipes [2] | 7,104 | 7,104 | 56 | HAS3-12740 |
| HFR1-05-3140 |  | External FF Network Testing & Final Inspection | 6d | 2026-04-01 A | 2026-06-01 A | HFR1-05-3070 | 100% |  | 2026-05-04 | 2026-05-10 | Labor [60 h]; Electrician [120 h]; LABOR [32.72 h]; pipes for all electrical network at site [46.34] | 4,680.34 | 4,212.31 | 56 | HAS3-10880 |
| HFR1-05-3410 |  | Drainage Testing (Air/Water Test) & Final Inspection | 4d | 2026-04-01 A | 2026-05-23 A | HFR1-05-3330 | 100% |  | 2026-05-30 | 2026-06-02 | Labor [40 h]; Plumber [40 h]; LABOR [32.72 h]; Supply, install, test and commission Floor drain (FD-1) with stainless steel 316 cover as per drawings and specification. [26] | 4,680 | 4,680 | 56 | HAS3-13100 |
| HFR1-05-3150 |  | Water Supply Testing (Pressure Test) & Final Inspection | 6d | 2026-04-12 A | 2026-06-02 A | HFR1-05-3140 | 100% |  | 2026-05-12 | 2026-05-18 | Labor [60 h]; Mason [240 h]; Plumber [120 h]; Pipe-Laying Worker [60 h]; LABOR [32.72 h]; 63 mm Ø (2 1/2" Ø )Cold water [39] | 4,680 | 4,212 | 56 | HAS3-10890 |
| HFR1-05-3450 |  | GRP pipe service inspection chamber (Excavation+installation +backfilling ) | 4d | 2026-04-13 A | 2026-05-31 A | HFR1-05-3410 | 100% |  | 2026-06-08 | 2026-06-11 | Labor [40 h]; Plumber [40 h]; Pipe-Laying Worker [160 h]; LABOR [32.72 h]; equpment [0.15 h]; 63 mm Ø (2 1/2" Ø )Cold water [44] | 11,480 | 11,480 | 56 | HAS3-13290 |
|  | 1 | **Electric** |  | 2026-02-24 | 2026-10-03 |  |  |  |  |  |  |  |  |  |  |
| HFR1-05-3620 |  | Grounding System Preparation (Survey + Marking + Excavation) | 3d | 2026-02-24 A | 2026-03-01 A | HFR1-05-3600 | 100% |  | 2026-06-06 | 2026-06-08 | Plumber [90 h]; LABOR [47.26 h]; electrical tection [47.26 h]; Grounding System for each block [0.8] | 30,313.6 | 30,313.6 | 56 | HAS3-13790 |
| HFR1-05-3800 |  | Grounding SystemInstallation (Earth Rods + Cables + Earth Pits) | 3d | 2026-02-24 A | 2026-09-01 A | HFR1-05-3740, HFR1-05-3450 | 100% |  | 2026-06-23 | 2026-06-25 | Plumber [90 h]; LABOR [47.26 h]; electrical tection [47.26 h]; Grounding System for each block [0.13] | 4,925.96 | 3,940.77 | 56 | HAS3-14140 |
| HFR1-05-3740 |  | Grounding SystemTesting (Earth Resistance Test) & Final Inspection | 11d | 2026-03-02 A | 2026-08-09 A | HFR1-05-3680, HFR1-05-4600 | 100% |  | 2026-06-11 | 2026-06-23 | Plumber [180 h]; LABOR [47.26 h]; electrical tection [47.26 h]; Grounding System for each block [0.6] | 22,735.2 | 20,461.68 | 56 | HAS3-14060 |
| HFR1-05-3530 |  | Manholes works for electric works with pipes -Excxavation -pipes-backfilling | 3d | 2026-03-19 A | 2026-05-24 A | HFR1-05-3510 | 100% |  | 2026-05-23 | 2026-05-25 | Plumber [90 h]; LABOR [47.26 h]; electrical tection [47.26 h]; Complete Main Electrical Manhole with pipes [2.55] | 30,332.25 | 30,332.25 | 56 | HAS3-13420 |
| HFR1-05-3940 |  | GROUNDING SYSTEM AT SITE (Pump Room | 4d | 2026-04-01 A | 2026-04-05 A | HFR1-05-3820, HFR1-05-3450 | 100% |  | 2026-06-24 | 2026-06-28 | Plumber [120 h]; LABOR [47.26 h]; Grounding System for each block [0.41] | 15,611.13 | 15,611.13 | 56 | HAS3-14380 |
| HFR1-05-3600 |  | Street Lighting Installation (Cables + Poles + Fixtures) | 3d | 2026-04-12 A | 2026-09-05 A | HFR1-05-3590 | 100% |  | 2026-06-09 | 2026-06-11 | Plumber [90 h]; LABOR [47.26 h]; electrical tection [47.26 h]; Complete Street Lighting Manhole with pipes [24.15] | 47,478.9 | 37,983.12 | 56 | HAS3-13740 |
| HFR1-05-3510 |  | Street Lighting Preparation (Trenches + Marking + Ducts) | 5d | 2026-04-14 A | 2026-05-17 A | HFR1-05-3470 | 100% |  | 2026-05-17 | 2026-05-21 | Plumber [150 h]; LABOR [47.26 h]; electrical tection [47.26 h]; Complete Street Lighting Manhole with pipes [20] | 39,320 | 39,320 | 56 | HAS3-13400 |
| HFR1-05-3590 |  | Road crossing duct bank for street lighting cables (pipes | 3d | 2026-04-20 A | 2026-06-20 A | HFR1-05-3530 | 100% |  | 2026-06-06 | 2026-06-08 | Plumber [90 h]; LABOR [47.26 h]; electrical tection [47.26 h]; Complete road crossing duct bank for street lighting cables including pipes [172] | 45,408 | 45,408 | 56 | HAS3-13680 |
| HFR1-05-4190 |  | GROUNDING SYSTEM AT SITE (Street lighting Poles | 3d | 2026-04-21 A | 2026-07-01 A | HFR1-05-4150 | 100% |  | 2026-07-14 | 2026-07-16 | Plumber [90 h]; LABOR [47.26 h]; electrical tection [47.26 h]; Grounding System for each block [0.3] | 11,367.6 | 9,094.08 | 56 | HAS3-14690 |
| HFR1-05-3680 |  | KWHM for street lighting feeder pillar (foundations+KWH Meter & Electrical Works | 4d | 2026-04-25 A | 2026-06-25 A | HFR1-05-3620 SS | 100% |  | 2026-06-15 | 2026-06-18 | Plumber [120 h]; LABOR [47.26 h]; electrical tection [47.26 h]; Grounding for all KWHM's [42.17] | 75,906 | 72,110.7 | 56 | HAS3-13970 |
| HFR1-05-4150 |  | Street Lighting Testing (Megger + Lighting Test) & Final Inspection | 2d | 2026-04-27 A | 2026-10-03 | HFR1-05-4110 | 90% | 2d | 2026-06-30 | 2026-07-01 | Plumber [60 h]; LABOR [47.26 h]; electrical tection [47.26 h]; Complete street lighting poles with LED lighting fixtures [17.33] | 75,905.4 | 53,133.78 | 56 | HAS3-14650 |
| HFR1-05-3470 |  | Security Fence for elec substation | 5d | 2026-05-06 A | 2026-06-03 A | HFR1-05-3420 | 100% |  | 2026-05-16 | 2026-05-20 | Plumber [150 h]; LABOR [47.26 h]; electrical tection [47.26 h]; Swing gate for fence with similar deswign with opening of 1.5m. [11] | 35,706 | 24,994.2 | 56 | HAS3-13320 |
| HFR1-05-3420 |  | Concrete foundation for electrical substation | 5d | 2026-05-11 A | 2026-06-11 A | HFR1-05-3070 | 100% |  | 2026-05-14 | 2026-05-19 | Plumber [150 h]; LABOR [47.26 h]; electrical tection [47.26 h]; Isolated Footings [29] | 26,274 | 26,274 | 56 | HAS3-13110 |
| HFR1-05-3820 |  | GROUNDING SYSTEM AT SITE (Feeder pillars | 4d | 2026-05-12 A | 2026-07-21 A | HFR1-05-3800 | 100% |  | 2026-07-12 | 2026-07-15 | Plumber [120 h]; LABOR [47.26 h]; electrical tection [47.26 h]; Grounding System for each block [0.15] | 5,683.8 | 3,978.66 | 56 | HAS3-14160 |
| HFR1-05-4110 |  | GROUNDING SYSTEM AT SITE (KWHM's | 3d | 2026-05-14 A | 2026-07-23 A | HFR1-05-3940 | 100% |  | 2026-07-15 | 2026-07-18 | Plumber [90 h]; LABOR [47.26 h]; electrical tection [47.26 h]; Grounding System for each block [0.15] | 5,683.8 | 3,978.66 | 56 | HAS3-14600 |
| HFR1-05-4200 |  | Skylight fixtures installations | 5d | 2026-07-21 A | 2026-08-10 A | HFR1-05-9500 SS, HFR1-05-4190 | 100% |  | 2026-09-06 | 2026-09-10 | Plumber [150 h]; LABOR [47.26 h]; electrical tection [47.26 h]; Skylight fixtures [2] | 7,200 | 7,200 | 56 | HAS3-14690-1 |

| ID | WBS | Activity | Duration | Start | Finish | Predecessors | Complete | Remaining | Planned start | Planned finish | Resources | Cost | Actual cost | Delay Activties | Old Activity ID-Alhasa |
| --- | --- | --- | --- | --- | --- | --- | --- | --- | --- | --- | --- | --- | --- | --- | --- |
|  | 5 | **External Works landscape** |  | 2026-03-04 | 2026-12-15 |  |  |  |  |  |  |  |  |  |  |
| HFR1-05-3480 |  | ROAD Excavation and casting lean concrete base for Precast Concrete Curbstone | 6d | 2026-03-04 A | 2026-08-09 A | HFR1-05-1520 SS, HFR1-05-9060, HFR1-05-9060 FF, HFR1-05-8500, HFR1-05-8510, HFR1-05-8520, HFR1-05-8530, HFR1-05-8490, HFR1-05-8850, HFR1-05-8840, HFR1-05-7880, HFR1-05-8830, HFR1-05-6160, HFR1-05-7540, HFR1-05-7550, HFR1-05-7560, HFR1-05-7570, HFR1-05-7580, HFR1-05-7590, HFR1-05-7600, HFR1-05-7610, HFR1-05-7870, HFR1-05-8820 | 100% |  | 2026-07-16 | 2026-07-22 | Excavator [120 h]; Loader [120 h]; Bulldozer [120 h]; Water Tanker [120 h]; Grider [120 h]; Truck [420 h]; Road Roller [120 h]; Labor [300 h]; Eq. Operator [1140 h]; LABOR [58.17 h]; Excavation [600] | 26,745 | 26,745 | 18 | HAS3-13340 |
| HFR1-05-3580 |  | ROAD Backfilling, compaction, and acceptance for precast curbstone | 6d | 2026-03-11 A | 2026-07-01 A | HFR1-05-3540 | 100% |  | 2026-07-30 | 2026-08-05 | Excavator [60 h]; Loader [120 h]; Bulldozer [120 h]; Water Tanker [60 h]; Grider [60 h]; Truck [60 h]; Road Roller [60 h]; Labor [300 h]; Eq. Operator [540 h]; LABOR [8.44 h]; LABOR [25.45 h]; Backfilling [56.18] | 1,853.94 | 370.79 | 18 | HAS3-13660 |
| HFR1-05-3810 |  | ROAD Watering and compaction for Base Course Layer | 6d | 2026-05-31 A | 2026-08-01 A | HFR1-05-5550, HFR1-05-3690 | 100% |  | 2026-11-24 | 2026-11-30 | Water Tanker [60 h]; Road Roller [60 h]; Eq. Operator [120 h]; LABOR [18.08 h]; LABOR [25.45 h]; execute bituminous base course asphalt layer class (A) in two layers [62.5] | 43,500 | 26,100 | 62 | HAS3-14150 |
| HFR1-05-3690 |  | ROAD execute base course layer -Leveling and shaping | 6d | 2026-06-01 A | 2026-08-15 A | HFR1-05-3610, HFR1-05-4310 | 100% |  | 2026-10-29 | 2026-11-04 | Loader [60 h]; Water Tanker [60 h]; Grider [60 h]; Truck [120 h]; Road Roller [60 h]; Asphalt Paver [60 h]; Eq. Operator [420 h]; LABOR [18.08 h]; LABOR [25.45 h]; execute bituminous base course asphalt layer class (A) in two layers [11.71] | 8,150.16 | 3,260.06 | 62 | HAS3-13980 |
| HFR1-05-3610 |  | ROAD execute subgrade layer including Watering and compaction | 6d | 2026-06-13 A | 2026-11-09 | HFR1-05-5570, HFR1-05-9130, HFR1-05-3580 | 95% | 6d | 2026-10-20 | 2026-10-26 | Loader [60 h]; Grider [120 h]; Road Roller [60 h]; Labor [300 h]; Eq. Operator [240 h]; LABOR [18.08 h]; LABOR; subgrade [44] | 3,036 | 607.2 | 18 | HAS3-13770 |
| HFR1-05-3540 |  | ROAD subgrade material up to the full width of the road | 6d | 2026-07-07 A | 2026-08-30 A | HFR1-05-4200, HFR1-05-3480 | 100% |  | 2026-11-02 | 2026-11-08 | Loader [120 h]; Bulldozer [60 h]; Water Tanker [60 h]; Grider [60 h]; Truck [240 h]; Road Roller [60 h]; Labor [300 h]; Eq. Operator [600 h]; ALHSA FACTORY [8.44 h]; LABOR; subgrade [173.03] | 11,939.07 | 11,939.07 | 18 | HAS3-13460 |
| HFR1-05-4560 |  | Concrete Works external steps | 6d | 2026-07-21 A | 2026-12-14 | HFR1-05-8860, HFR1-05-4530 FF | 90% | 6d | 2027-01-09 | 2027-01-14 | Labor [240 h]; Skilled Labor [120 h]; LABOR [18.08 h]; LABOR [21.81 h]; To walkway interlocking block pavers, 200*100*60mm [22] | 1,430 |  | 62 | HAS3-15360 |
| HFR1-05-4470 |  | ROAD Subbase install precast concrete curbstone | 5d | 2026-07-26 A | 2026-08-29 A | HFR1-05-9110, HFR1-05-4460 FF | 100% |  | 2027-01-07 | 2027-01-12 | Truck [200 h]; Labor [200 h]; Skilled Labor [100 h]; Eq. Operator [200 h]; LABOR [18.08 h]; LABOR; Kerb type K1A [1321.38] | 76,640.04 | 76,640.04 | 62 | HAS3-15210 |
| HFR1-05-4460 |  | ROAD lean concrete base For concrete curbstone | 5d | 2026-07-28 A | 2026-08-12 A | HFR1-05-5700, HFR1-05-8990, HFR1-05-4440 SS | 100% |  | 2027-01-11 | 2027-01-16 | Labor [200 h]; Skilled Labor [100 h]; Mason [250 h]; LABOR; bituminous wearing course asphalt layer class (A) including tack coat (RC2) [1.87] | 1,346.4 | 1,346.4 | 62 | HAS3-15200 |
| HFR1-05-4550 |  | ROAD subgrade laye Interlocking Paving Blocks | 6d | 2026-08-06 A | 2026-12-15 | HFR1-05-4470 | 90% | 6d | 2027-01-26 | 2027-02-01 | Labor [240 h]; Skilled Labor [120 h]; LABOR [0.15 h]; To walkway interlocking block pavers, 200*100*60mm [23.78] | 1,545.7 |  | 62 | HAS3-15350 |
| HFR1-05-4500 |  | ROAD InterlockWalkway -pedestrian interlocking block pavers | 11d | 2026-08-12 A | 2026-12-15 | HFR1-05-4550 FF | 90% | 11d | 2027-01-25 | 2027-02-06 | Labor [200 h]; Skilled Labor [100 h]; LABOR; To walkway interlocking block pavers, 200*100*60mm [343.69] | 22,339.85 |  | 62 | HAS3-15300 |
| HFR1-05-4480 |  | ROAD interlocking block pavers | 9d | 2026-08-25 A | 2026-12-15 | HFR1-05-9060, HFR1-05-4500 FF | 95% | 9d | 2027-02-03 | 2027-02-13 | Labor [200 h]; Skilled Labor [100 h]; LABOR [25.45 h]; To walkway interlocking block pavers, 200*100*60mm [40] | 2,600 |  | 62 | HAS3-15290 |
| HFR1-05-4510 |  | ROAD Interlock install concrete parking bumpers | 5d | 2026-08-25 A | 2026-12-14 | HFR1-05-4460 | 90% | 5d | 2027-02-07 | 2027-02-11 | Labor [200 h]; Skilled Labor [100 h]; LABOR [8.44 h]; LABOR [0.15 h]; To walkway interlocking block pavers, 200*100*60mm [128.49] | 8,351.85 |  | 62 | HAS3-15310 |
| HFR1-05-4570 |  | Outdoor Granite works | 6d | 2026-09-01 A | 2026-12-14 | HFR1-05-4560 FF | 70% | 6d | 2027-02-13 | 2027-02-18 | Labor [240 h]; Skilled Labor [120 h]; LABOR [18.08 h]; LABOR [21.81 h]; To walkway interlocking block pavers, 200*100*60mm [206.5] | 13,422.5 |  | 62 | HAS3-15370 |
| HFR1-05-3990 |  | ROAD Application of prime coat | 6d | 2026-09-06 A | 2026-11-21 | HFR1-05-9390, HFR1-05-9380, HFR1-05-3810 SS, HFR1-05-4400, HFR1-05-4620 | 60% | 6d | 2026-11-22 | 2026-11-28 | Water Tanker [60 h]; Grider [60 h]; Asphalt Paver [60 h]; Eq. Operator [180 h]; LABOR [18.08 h]; LABOR [25.45 h]; execute bituminous base course asphalt layer class (A) in two layers [30.89] | 21,499.44 |  | 62 | HAS3-14420 |
| HFR1-05-4140 |  | ROAD execute bituminous base course asphalt layer | 5d | 2026-09-07 A | 2026-11-26 | HFR1-05-3990 | 80% | 5d | 2026-11-29 | 2026-12-03 | Water Tanker [50 h]; Grider [50 h]; Asphalt Paver [50 h]; Eq. Operator [150 h]; LABOR; execute bituminous base course asphalt layer class (A) in two layers [51.18] | 35,621.28 |  | 62 | HAS3-14640 |
| HFR1-05-4440 |  | ROAD Bituminous Wearing Course Asphalt | 5d | 2026-09-07 A | 2026-12-14 | HFR1-05-4390 | 80% | 5d | 2026-12-16 | 2026-12-21 | Water Tanker [50 h]; Grider [50 h]; Asphalt Paver [50 h]; Eq. Operator [150 h]; LABOR [18.08 h]; LABOR [32.72 h]; bituminous wearing course asphalt layer class (A) including tack coat (RC2) [67] | 48,240 |  | 62 | HAS3-15130 |
| HFR1-05-4320 |  | ROAD Laying bituminous second asphalt base layer | 5d | 2026-09-10 A | 2026-12-02 | HFR1-05-4140, HFR1-05-1950, HFR1-05-1950 FF, HFR1-05-4340, HFR1-05-4270, HFR1-05-4250, HFR1-05-4230 | 40% | 5d | 2026-12-08 | 2026-12-13 | Water Tanker [50 h]; Grider [50 h]; Asphalt Paver [50 h]; Eq. Operator [150 h]; LABOR; base course layer [17.93] | 1,344.75 |  | 62 | HAS3-14880 |
| HFR1-05-4530 |  | ROAD single I.P.E. post Road signs-Asphalt install traffic signs | 6d | 2026-09-10 A | 2026-12-14 | HFR1-05-5760, HFR1-05-4520 FF | 50% | 6d | 2026-12-19 | 2026-12-24 | Labor [240 h]; Skilled Labor [120 h]; LABOR [8.44 h]; LABOR [10.91 h]; Traffic signs aluminum sheet, (breakaway) Single post I.P.E. [4.28] |  |  | 62 | HAS3-15330 |
| HFR1-05-4390 |  | ROADTack Coat (RC2) | 5d | 2026-12-03 | 2026-12-08 | HFR1-05-4320 |  |  |  |  | Water Tanker [50 h]; Grider [50 h]; Asphalt Paver [50 h]; Eq. Operator [150 h]; LABOR [6.03 h]; LABOR [32.72 h]; bituminous wearing course asphalt layer class (A) including tack coat (RC2) [2.39] | 1,720.8 |  | 62 | HAS3-15010 |
| HFR1-05-4540 |  | ROAD Road Marking thermoplastic traffic lines | 6d | 2026-12-08 | 2026-12-14 | HFR1-05-9130, HFR1-05-4530 FF |  |  |  |  | Labor [240 h]; Skilled Labor [120 h]; LABOR [8.44 h]; LABOR [14.54 h]; Retroreflective Thermoplastic White Traffic lines [0.49] | 11,760 |  | 62 | HAS3-15340 |
| HFR1-05-4520 |  | ROAD Asphalt Reflective Road Markings | 5d | 2026-12-09 | 2026-12-14 | HFR1-05-4510 FF |  |  |  |  | Labor [200 h]; Skilled Labor [100 h]; LABOR [8.44 h]; LABOR [14.54 h]; Retroreflective Thermoplastic White Traffic lines [0.88] | 21,120 |  | 62 | HAS3-15320 |
|  | 10 | **Testing and comissiong** |  | 2026-04-26 | 2026-12-28 |  |  |  |  |  |  |  |  |  |  |
|  | 1 | **Testing and comissiong** |  | 2026-04-26 | 2026-12-28 |  |  |  |  |  |  |  |  |  |  |
| HFR1-05-4600 |  | Test For Water Utilities | 12d | 2026-04-26 A | 2026-09-30 | HFR1-05-3150 | 95% | 12d | 2026-06-02 | 2026-06-15 | Skilled Labor [1830 h]; Eng+Pro+Tc [1]; Testing and comissiong [1] | 412,421 | 329,936.8 | 56 | HAS3-15460 |
| HFR1-05-4430 |  | Test For Pump Room | 12d | 2026-06-14 A | 2026-11-03 | HFR1-05-4310, HFR1-05-4600, HFR1-05-2240, HFR1-05-2820 | 85% | 12d | 2026-11-09 | 2026-11-22 | Skilled Labor [1830 h]; Eng+Pro+Tc [1]; Testing and comissiong [1] | 412,421 | 144,347.35 | 72 | HAS3-15120 |
| HFR1-05-4630 |  | Test For Electrical Works | 12d | 2026-06-22 A | 2026-11-21 | HFR1-05-4190, HFR1-05-4310, HFR1-05-3930, HFR1-05-2240, HFR1-05-2100, HFR1-05-4430 | 75% | 12d | 2027-01-13 | 2027-01-26 | Skilled Labor [1830 h]; Eng+Pro+Tc [1]; Testing and comissiong [1] | 412,421 |  | 70 | HAS3-15550 |
| HFR1-05-4420 |  | Test For Roads | 11d | 2026-06-23 A | 2026-12-28 | HFR1-05-4550 | 80% | 11d | 2026-12-24 | 2027-01-05 | Skilled Labor [1830 h]; Eng+Pro+Tc [1]; Testing and comissiong [1] | 412,421 | 20,621.05 | 62 | HAS3-15110 |

| ID | WBS | Activity | Duration | Start | Finish | Predecessors | Delay Activties | Old Activity ID-Alhasa |
| --- | --- | --- | --- | --- | --- | --- | --- | --- |
|  | 11 | **Close Out** |  | 2026-11-22 | 2026-11-29 |  |  |  |
| HFR1-05-4680 |  | As-Built Documentation Final Submission | 6d | 2026-11-22 | 2026-11-28 | HFR1-05-4430, HFR1-05-4600, HFR1-05-4630 | 70 | HAS3-15670 |
| HFR1-05-4690 |  | O&M Manuals and Warranties Final Submission | 5d | 2026-11-22 | 2026-11-26 | HFR1-05-4680 SS | 70 | HAS3-15680 |
| HFR1-05-4700 |  | Final Handover MODON Inspection & Approval | 7d | 2026-11-22 | 2026-11-29 | HFR1-05-4690 SS | 70 | HAS3-15690 |

## Activity codes

| Code | Value | Meaning |
| --- | --- | --- |
| LOCATION | MLST | MILESTONES |
| Responsibilities | EN | Engineering Department |
